# Finish Line

Schedule from MS Project, 2005-01-24 to 2005-03-28, A marks actual dates.
GSC GameWorld

## Calendars

- Стандартный: Mon-Fri 10:00-13:00, 14:00-19:00; Sat 11:00-13:00, 14:00-20:00; Sun off.

## Resources

| Resource |
| --- |
| Руслан, Рома |
| Руслан, Коан |
| Чугай, Рома |
| Змей, Рома |
| Джим, Угрюмый |
| Сидорович, Маст Дай |
| Чугай, Лестат |
| Rainbow, |
| Rainbow, Ефимов Владимир |
| Веня |
| Rainbow |
| Рома |
| Рома, Змей |
| Коан, Руслан |
| Маст Дай, Сидорович |
| Лестат, Чугай |
| Dima |
| Partizan |
| Sidorovich |
| Mustdie |
| Змей |
| Сидорович |

## Schedule

| ID | WBS | Task | Duration | Start | Finish | Predecessors | Total slack | Free slack | Resources | Work |
| --- | --- | --- | --- | --- | --- | --- | --- | --- | --- | --- |
| 2 | 1 | **01_Escape** | 9d? | 2005-01-24 | 2005-02-02 |  | 46d |  | Руслан, Рома | 112h |
| 3 | 1.1 | **LevelDesign** | 9d? | 2005-01-24 | 2005-02-02 |  | 46d |  |  |  |
| 4 | 1.1.1 | **Stage 1** | 9d? | 2005-01-24 | 2005-02-02 |  | 46d |  |  |  |
| 5 | 1.1.1.1 | List of Changes | 2d | 2005-01-24 | 2005-01-25 |  | 46d | 0d |  |  |
| 6 | 1.1.1.2 | Changed Geometry | 1d? | 2005-01-26 | 2005-01-26 | 5 | 46d | 0d |  |  |
| 7 | 1.1.1.3 | Check List 1 | 1d? | 2005-01-27 | 2005-01-27 | 6 | 46d | 0d |  |  |
| 8 | 1.1.1.4 | Check List 2 | 1d? | 2005-01-28 | 2005-01-28 | 7 | 46d | 0d |  |  |
| 9 | 1.1.1.5 | Check List 3 | 1d? | 2005-01-29 | 2005-01-29 | 8 | 46d | 0d |  |  |
| 10 | 1.1.1.6 | Check List 4 | 1d? | 2005-01-31 | 2005-01-31 | 9 | 46d | 0d |  |  |
| 11 | 1.1.1.7 | Render Geometry | 1d? | 2005-02-01 | 2005-02-01 | 10 | 46d | 0d |  |  |
| 12 | 1.1.1.8 | Grass | 1d? | 2005-02-02 | 2005-02-02 | 11 | 46d |  |  |  |
| 14 | 1.2 | **GameDesign** | 3d? | 2005-01-24 | 2005-01-26 |  | 52d |  |  |  |
| 15 | 1.2.1 | AI Maps/Graphs | 1d? | 2005-01-24 | 2005-01-24 |  | 54d |  |  |  |
| 16 | 1.2.2 | **Secrets** | 3d? | 2005-01-24 | 2005-01-26 |  | 52d |  |  |  |
| 17 | 1.2.2.1 | **Stage 1** | 3d? | 2005-01-24 | 2005-01-26 |  | 52d |  |  |  |
| 18 | 1.2.2.1.1 | Design | 1d? | 2005-01-24 | 2005-01-24 |  | 52d | 0d |  |  |
| 19 | 1.2.2.1.2 | Implementation | 1d? | 2005-01-25 | 2005-01-25 | 18 | 52d | 0d |  |  |
| 20 | 1.2.2.1.3 | Tuning | 1d? | 2005-01-26 | 2005-01-26 | 19 | 52d |  |  |  |
| 21 | 1.2.3 | **Smartterrains** | 3d? | 2005-01-24 | 2005-01-26 |  | 52d |  |  |  |
| 22 | 1.2.3.1 | **Stage 1** | 3d? | 2005-01-24 | 2005-01-26 |  | 52d |  |  |  |
| 23 | 1.2.3.1.1 | Design | 1d? | 2005-01-24 | 2005-01-24 |  | 52d | 0d |  |  |
| 24 | 1.2.3.1.2 | Implementation | 1d? | 2005-01-25 | 2005-01-25 | 23 | 52d | 0d |  |  |
| 25 | 1.2.3.1.3 | Tuning | 1d? | 2005-01-26 | 2005-01-26 | 24 | 52d |  |  |  |
| 26 | 1.2.4 | **Monsters/Spawns** | 3d? | 2005-01-24 | 2005-01-26 |  | 52d |  |  |  |
| 27 | 1.2.4.1 | **Stage 1** | 3d? | 2005-01-24 | 2005-01-26 |  | 52d |  |  |  |
| 28 | 1.2.4.1.1 | Design | 1d? | 2005-01-24 | 2005-01-24 |  | 52d | 0d |  |  |
| 29 | 1.2.4.1.2 | Implementation | 1d? | 2005-01-25 | 2005-01-25 | 28 | 52d | 0d |  |  |
| 30 | 1.2.4.1.3 | Tuning | 1d? | 2005-01-26 | 2005-01-26 | 29 | 52d |  |  |  |

| ID | WBS | Task | Duration | Start | Finish | Predecessors | Total slack | Free slack | Resources | Work |
| --- | --- | --- | --- | --- | --- | --- | --- | --- | --- | --- |
| 31 | 1.2.5 | **Stalkers/Spawns** | 3d? | 2005-01-24 | 2005-01-26 |  | 52d |  |  |  |
| 32 | 1.2.5.1 | **Stage 1** | 3d? | 2005-01-24 | 2005-01-26 |  | 52d |  |  |  |
| 33 | 1.2.5.1.1 | Design | 1d? | 2005-01-24 | 2005-01-24 |  | 52d | 0d |  |  |
| 34 | 1.2.5.1.2 | Implementation | 1d? | 2005-01-25 | 2005-01-25 | 33 | 52d | 0d |  |  |
| 35 | 1.2.5.1.3 | Tuning | 1d? | 2005-01-26 | 2005-01-26 | 34 | 52d |  |  |  |
| 36 | 1.2.6 | **Anomalies/Spawns** | 3d? | 2005-01-24 | 2005-01-26 |  | 52d |  |  |  |
| 37 | 1.2.6.1 | **Stage 1** | 3d? | 2005-01-24 | 2005-01-26 |  | 52d |  |  |  |
| 38 | 1.2.6.1.1 | Design | 1d? | 2005-01-24 | 2005-01-24 |  | 52d | 0d |  |  |
| 39 | 1.2.6.1.2 | Implementation | 1d? | 2005-01-25 | 2005-01-25 | 38 | 52d | 0d |  |  |
| 40 | 1.2.6.1.3 | Tuning | 1d? | 2005-01-26 | 2005-01-26 | 39 | 52d |  |  |  |
| 41 | 1.2.7 | **Physicks** | 3d? | 2005-01-24 | 2005-01-26 |  | 52d |  |  |  |
| 42 | 1.2.7.1 | **Stage 1** | 3d? | 2005-01-24 | 2005-01-26 |  | 52d |  |  |  |
| 43 | 1.2.7.1.1 | Design | 1d? | 2005-01-24 | 2005-01-24 |  | 52d | 0d |  |  |
| 44 | 1.2.7.1.2 | Implementation | 1d? | 2005-01-25 | 2005-01-25 | 43 | 52d | 0d |  |  |
| 45 | 1.2.7.1.3 | Tuning | 1d? | 2005-01-26 | 2005-01-26 | 44 | 52d |  |  |  |
| 47 | 1.3 | **Scripts** | 3d? | 2005-01-24 | 2005-01-26 |  | 52d |  |  | 40h |
| 48 | 1.3.1 | Сценарий (текст) | 1d? | 2005-01-24 | 2005-01-24 |  | 54d |  |  |  |
| 49 | 1.3.2 | **Сцена 1 - Плоть рядом с аномалией** | 3d? | 2005-01-24 | 2005-01-26 |  | 52d |  |  | 16h |
| 50 | 1.3.2.1 | Постановка задач | 1d? | 2005-01-24 | 2005-01-24 |  | 52d | 0d |  |  |
| 51 | 1.3.2.2 | **Реализация** | 1d? | 2005-01-25 | 2005-01-25 | 50 | 52d |  |  | 8h |
| 52 | 1.3.2.2.1 | Доработка X в движке | 1d? | 2005-01-25 | 2005-01-25 |  | 52d | 0d | Dima | 8h |
| 53 | 1.3.2.3 | **Тестирование** | 1d? | 2005-01-26 | 2005-01-26 | 52 | 52d |  |  | 8h |
| 54 | 1.3.2.3.1 | Проверить расстановку AI нод вокруг дерева | 1d? | 2005-01-26 | 2005-01-26 |  | 52d |  | Partizan | 8h |
| 55 | 1.3.3 | **Сцена 2 - Кабаны играют в футбол** | 3d? | 2005-01-24 | 2005-01-26 |  | 52d |  |  | 24h |
| 56 | 1.3.3.1 | Постановка задач | 1d? | 2005-01-24 | 2005-01-24 |  | 52d | 0d |  |  |

Notes:
- 56: Два кабана по очереди пинают труп, стараясь не выходить далеко за пределы указанной на уровне зоны. При появлении игрока атакуют его.

| ID | WBS | Task | Duration | Start | Finish | Predecessors | Total slack | Free slack | Resources | Work |
| --- | --- | --- | --- | --- | --- | --- | --- | --- | --- | --- |
| 57 | 1.3.3.2 | **Реализация** | 1d? | 2005-01-25 | 2005-01-25 | 56 | 52d |  |  | 16h |
| 58 | 1.3.3.2.1 | Написать схему mob_kicker | 1d? | 2005-01-25 | 2005-01-25 |  | 52d | 0d | Сидорович | 8h |
| 59 | 1.3.3.2.2 | Установить и настроить схему на Escape | 1d? | 2005-01-25 | 2005-01-25 |  | 53d |  | Mustdie | 8h |
| 60 | 1.3.3.3 | **Тестирование** | 1d? | 2005-01-26 | 2005-01-26 | 58 | 52d |  |  | 8h |
| 61 | 1.3.3.3.1 | Отсутствие визуальных дефектов | 1d? | 2005-01-26 | 2005-01-26 |  | 52d |  | Partizan | 8h |
| 63 | 2 | **02_Garbage** | 11d? | 2005-01-24 | 2005-02-04 |  | 44d |  | Руслан, Коан | 88h |
| 64 | 2.1 | **LevelDesign** | 11d? | 2005-01-24 | 2005-02-04 |  | 44d |  |  |  |
| 65 | 2.1.1 | **Stage 1** | 11d? | 2005-01-24 | 2005-02-04 |  | 44d |  |  |  |
| 66 | 2.1.1.1 | List of Changes | 2d | 2005-01-24 | 2005-01-25 |  | 44d | 0d |  |  |
| 67 | 2.1.1.2 | Changed Geometry | 1d? | 2005-01-26 | 2005-01-26 | 66 | 44d | 0d |  |  |
| 68 | 2.1.1.3 | Check List 1 | 1d? | 2005-01-27 | 2005-01-27 | 67 | 44d | 0d |  |  |
| 69 | 2.1.1.4 | Check List 2 | 1d? | 2005-01-28 | 2005-01-28 | 68 | 44d | 0d |  |  |
| 70 | 2.1.1.5 | Check List 3 | 1d? | 2005-01-29 | 2005-01-29 | 69 | 44d | 0d |  |  |
| 71 | 2.1.1.6 | Check List 4 | 1d? | 2005-01-31 | 2005-01-31 | 70 | 44d | 0d |  |  |
| 72 | 2.1.1.7 | Render Geometry | 1d? | 2005-02-01 | 2005-02-01 | 71 | 44d | 0d |  |  |
| 73 | 2.1.1.8 | Grass | 1d? | 2005-02-02 | 2005-02-02 | 72 | 44d | 0d |  |  |
| 74 | 2.1.1.9 | AI Maps | 1d? | 2005-02-03 | 2005-02-03 | 73 | 44d | 0d |  |  |
| 75 | 2.1.1.10 | Graphs | 1d? | 2005-02-04 | 2005-02-04 | 74 | 44d |  |  |  |
| 77 | 2.2 | **GameDesign** | 3d? | 2005-01-24 | 2005-01-26 |  | 52d |  |  |  |
| 78 | 2.2.1 | **Secrets** | 3d? | 2005-01-24 | 2005-01-26 |  | 52d |  |  |  |
| 79 | 2.2.1.1 | **Stage 1** | 3d? | 2005-01-24 | 2005-01-26 |  | 52d |  |  |  |
| 80 | 2.2.1.1.1 | Design | 1d? | 2005-01-24 | 2005-01-24 |  | 52d | 0d |  |  |
| 81 | 2.2.1.1.2 | Implementation | 1d? | 2005-01-25 | 2005-01-25 | 80 | 52d | 0d |  |  |
| 82 | 2.2.1.1.3 | Tuning | 1d? | 2005-01-26 | 2005-01-26 | 81 | 52d |  |  |  |

| ID | WBS | Task | Duration | Start | Finish | Predecessors | Total slack | Free slack |
| --- | --- | --- | --- | --- | --- | --- | --- | --- |
| 83 | 2.2.2 | **Smartterrains** | 3d? | 2005-01-24 | 2005-01-26 |  | 52d |  |
| 84 | 2.2.2.1 | **Stage 1** | 3d? | 2005-01-24 | 2005-01-26 |  | 52d |  |
| 85 | 2.2.2.1.1 | Design | 1d? | 2005-01-24 | 2005-01-24 |  | 52d | 0d |
| 86 | 2.2.2.1.2 | Implementation | 1d? | 2005-01-25 | 2005-01-25 | 85 | 52d | 0d |
| 87 | 2.2.2.1.3 | Tuning | 1d? | 2005-01-26 | 2005-01-26 | 86 | 52d |  |
| 88 | 2.2.3 | **Monsters/Spawns** | 3d? | 2005-01-24 | 2005-01-26 |  | 52d |  |
| 89 | 2.2.3.1 | **Stage 1** | 3d? | 2005-01-24 | 2005-01-26 |  | 52d |  |
| 90 | 2.2.3.1.1 | Design | 1d? | 2005-01-24 | 2005-01-24 |  | 52d | 0d |
| 91 | 2.2.3.1.2 | Implementation | 1d? | 2005-01-25 | 2005-01-25 | 90 | 52d | 0d |
| 92 | 2.2.3.1.3 | Tuning | 1d? | 2005-01-26 | 2005-01-26 | 91 | 52d |  |
| 93 | 2.2.4 | **Stalkers/Spawns** | 3d? | 2005-01-24 | 2005-01-26 |  | 52d |  |
| 94 | 2.2.4.1 | **Stage 1** | 3d? | 2005-01-24 | 2005-01-26 |  | 52d |  |
| 95 | 2.2.4.1.1 | Design | 1d? | 2005-01-24 | 2005-01-24 |  | 52d | 0d |
| 96 | 2.2.4.1.2 | Implementation | 1d? | 2005-01-25 | 2005-01-25 | 95 | 52d | 0d |
| 97 | 2.2.4.1.3 | Tuning | 1d? | 2005-01-26 | 2005-01-26 | 96 | 52d |  |
| 98 | 2.2.5 | **Anomalies/Spawns** | 3d? | 2005-01-24 | 2005-01-26 |  | 52d |  |
| 99 | 2.2.5.1 | **Stage 1** | 3d? | 2005-01-24 | 2005-01-26 |  | 52d |  |
| 100 | 2.2.5.1.1 | Design | 1d? | 2005-01-24 | 2005-01-24 |  | 52d | 0d |
| 101 | 2.2.5.1.2 | Implementation | 1d? | 2005-01-25 | 2005-01-25 | 100 | 52d | 0d |
| 102 | 2.2.5.1.3 | Tuning | 1d? | 2005-01-26 | 2005-01-26 | 101 | 52d |  |
| 103 | 2.2.6 | **Physicks** | 3d? | 2005-01-24 | 2005-01-26 |  | 52d |  |
| 104 | 2.2.6.1 | **Stage 1** | 3d? | 2005-01-24 | 2005-01-26 |  | 52d |  |
| 105 | 2.2.6.1.1 | Design | 1d? | 2005-01-24 | 2005-01-24 |  | 52d | 0d |
| 106 | 2.2.6.1.2 | Implementation | 1d? | 2005-01-25 | 2005-01-25 | 105 | 52d | 0d |
| 107 | 2.2.6.1.3 | Tuning | 1d? | 2005-01-26 | 2005-01-26 | 106 | 52d |  |

| ID | WBS | Task | Duration | Start | Finish | Predecessors | Total slack | Free slack |
| --- | --- | --- | --- | --- | --- | --- | --- | --- |
| 109 | 2.3 | **Scripts** | 5d? | 2005-01-24 | 2005-01-28 |  | 50d |  |
| 110 | 2.3.1 | **Script 1** | 5d? | 2005-01-24 | 2005-01-28 |  | 50d |  |
| 111 | 2.3.1.1 | Scenario(text) | 1d? | 2005-01-24 | 2005-01-24 |  | 50d | 0d |
| 112 | 2.3.1.2 | Постановка задач | 1d? | 2005-01-25 | 2005-01-25 | 111 | 50d | 0d |
| 113 | 2.3.1.3 | Implimentation | 1d? | 2005-01-26 | 2005-01-26 | 112 | 50d | 0d |
| 114 | 2.3.1.4 | Dilogs/VO/Icons/Objects/Animations | 1d? | 2005-01-27 | 2005-01-27 | 113 | 50d | 0d |
| 115 | 2.3.1.5 | Настройка | 1d? | 2005-01-28 | 2005-01-28 | 114 | 50d |  |
| 116 | 2.3.2 | **Script 2** | 5d? | 2005-01-24 | 2005-01-28 |  | 50d |  |
| 117 | 2.3.2.1 | Scenario(text) | 1d? | 2005-01-24 | 2005-01-24 |  | 50d | 0d |
| 118 | 2.3.2.2 | Постановка задач | 1d? | 2005-01-25 | 2005-01-25 | 117 | 50d | 0d |
| 119 | 2.3.2.3 | Implimentation | 1d? | 2005-01-26 | 2005-01-26 | 118 | 50d | 0d |
| 120 | 2.3.2.4 | Dilogs/VO/Icons/Objects/Animations | 1d? | 2005-01-27 | 2005-01-27 | 119 | 50d | 0d |
| 121 | 2.3.2.5 | Настройка | 1d? | 2005-01-28 | 2005-01-28 | 120 | 50d |  |
| 122 | 2.3.3 | **Script 3** | 5d? | 2005-01-24 | 2005-01-28 |  | 50d |  |
| 123 | 2.3.3.1 | Scenario(text) | 1d? | 2005-01-24 | 2005-01-24 |  | 50d | 0d |
| 124 | 2.3.3.2 | Постановка задач | 1d? | 2005-01-25 | 2005-01-25 | 123 | 50d | 0d |
| 125 | 2.3.3.3 | Implimentation | 1d? | 2005-01-26 | 2005-01-26 | 124 | 50d | 0d |
| 126 | 2.3.3.4 | Dilogs/VO/Icons/Objects/Animations | 1d? | 2005-01-27 | 2005-01-27 | 125 | 50d | 0d |
| 127 | 2.3.3.5 | Настройка | 1d? | 2005-01-28 | 2005-01-28 | 126 | 50d |  |
| 128 | 2.3.4 | **Script 4** | 5d? | 2005-01-24 | 2005-01-28 |  | 50d |  |
| 129 | 2.3.4.1 | Scenario(text) | 1d? | 2005-01-24 | 2005-01-24 |  | 50d | 0d |
| 130 | 2.3.4.2 | Постановка задач | 1d? | 2005-01-25 | 2005-01-25 | 129 | 50d | 0d |
| 131 | 2.3.4.3 | Implimentation | 1d? | 2005-01-26 | 2005-01-26 | 130 | 50d | 0d |
| 132 | 2.3.4.4 | Dilogs/VO/Icons/Objects/Animations | 1d? | 2005-01-27 | 2005-01-27 | 131 | 50d | 0d |
| 133 | 2.3.4.5 | Настройка | 1d? | 2005-01-28 | 2005-01-28 | 132 | 50d |  |

| ID | WBS | Task | Duration | Start | Finish | Predecessors | Total slack | Free slack | Resources | Work |
| --- | --- | --- | --- | --- | --- | --- | --- | --- | --- | --- |
| 134 | 2.3.5 | **Script 5** | 5d? | 2005-01-24 | 2005-01-28 |  | 50d |  |  |  |
| 135 | 2.3.5.1 | Scenario(text) | 1d? | 2005-01-24 | 2005-01-24 |  | 50d | 0d |  |  |
| 136 | 2.3.5.2 | Постановка задач | 1d? | 2005-01-25 | 2005-01-25 | 135 | 50d | 0d |  |  |
| 137 | 2.3.5.3 | Implimentation | 1d? | 2005-01-26 | 2005-01-26 | 136 | 50d | 0d |  |  |
| 138 | 2.3.5.4 | Dilogs/VO/Icons/Objects/Animations | 1d? | 2005-01-27 | 2005-01-27 | 137 | 50d | 0d |  |  |
| 139 | 2.3.5.5 | Настройка | 1d? | 2005-01-28 | 2005-01-28 | 138 | 50d |  |  |  |
| 141 | 3 | **03_Agroprom** | 11d? | 2005-01-24 | 2005-02-04 |  | 44d |  | Чугай, Рома | 88h |
| 142 | 3.1 | **LevelDesign** | 11d? | 2005-01-24 | 2005-02-04 |  | 44d |  |  |  |
| 143 | 3.1.1 | **Stage 1** | 11d? | 2005-01-24 | 2005-02-04 |  | 44d |  |  |  |
| 144 | 3.1.1.1 | List of Changes | 2d | 2005-01-24 | 2005-01-25 |  | 44d | 0d |  |  |
| 145 | 3.1.1.2 | Changed Geometry | 1d? | 2005-01-26 | 2005-01-26 | 144 | 44d | 0d |  |  |
| 146 | 3.1.1.3 | Check List 1 | 1d? | 2005-01-27 | 2005-01-27 | 145 | 44d | 0d |  |  |
| 147 | 3.1.1.4 | Check List 2 | 1d? | 2005-01-28 | 2005-01-28 | 146 | 44d | 0d |  |  |
| 148 | 3.1.1.5 | Check List 3 | 1d? | 2005-01-29 | 2005-01-29 | 147 | 44d | 0d |  |  |
| 149 | 3.1.1.6 | Check List 4 | 1d? | 2005-01-31 | 2005-01-31 | 148 | 44d | 0d |  |  |
| 150 | 3.1.1.7 | Render Geometry | 1d? | 2005-02-01 | 2005-02-01 | 149 | 44d | 0d |  |  |
| 151 | 3.1.1.8 | Grass | 1d? | 2005-02-02 | 2005-02-02 | 150 | 44d | 0d |  |  |
| 152 | 3.1.1.9 | AI Maps | 1d? | 2005-02-03 | 2005-02-03 | 151 | 44d | 0d |  |  |
| 153 | 3.1.1.10 | Graphs | 1d? | 2005-02-04 | 2005-02-04 | 152 | 44d |  |  |  |
| 155 | 3.2 | **GameDesign** | 3d? | 2005-01-24 | 2005-01-26 |  | 52d |  |  |  |
| 156 | 3.2.1 | **Secrets** | 3d? | 2005-01-24 | 2005-01-26 |  | 52d |  |  |  |
| 157 | 3.2.1.1 | **Stage 1** | 3d? | 2005-01-24 | 2005-01-26 |  | 52d |  |  |  |
| 158 | 3.2.1.1.1 | Design | 1d? | 2005-01-24 | 2005-01-24 |  | 52d | 0d |  |  |
| 159 | 3.2.1.1.2 | Implementation | 1d? | 2005-01-25 | 2005-01-25 | 158 | 52d | 0d |  |  |
| 160 | 3.2.1.1.3 | Tuning | 1d? | 2005-01-26 | 2005-01-26 | 159 | 52d |  |  |  |

| ID | WBS | Task | Duration | Start | Finish | Predecessors | Total slack | Free slack |
| --- | --- | --- | --- | --- | --- | --- | --- | --- |
| 161 | 3.2.2 | **Smartterrains** | 3d? | 2005-01-24 | 2005-01-26 |  | 52d |  |
| 162 | 3.2.2.1 | **Stage 1** | 3d? | 2005-01-24 | 2005-01-26 |  | 52d |  |
| 163 | 3.2.2.1.1 | Design | 1d? | 2005-01-24 | 2005-01-24 |  | 52d | 0d |
| 164 | 3.2.2.1.2 | Implementation | 1d? | 2005-01-25 | 2005-01-25 | 163 | 52d | 0d |
| 165 | 3.2.2.1.3 | Tuning | 1d? | 2005-01-26 | 2005-01-26 | 164 | 52d |  |
| 166 | 3.2.3 | **Monsters/Spawns** | 3d? | 2005-01-24 | 2005-01-26 |  | 52d |  |
| 167 | 3.2.3.1 | **Stage 1** | 3d? | 2005-01-24 | 2005-01-26 |  | 52d |  |
| 168 | 3.2.3.1.1 | Design | 1d? | 2005-01-24 | 2005-01-24 |  | 52d | 0d |
| 169 | 3.2.3.1.2 | Implementation | 1d? | 2005-01-25 | 2005-01-25 | 168 | 52d | 0d |
| 170 | 3.2.3.1.3 | Tuning | 1d? | 2005-01-26 | 2005-01-26 | 169 | 52d |  |
| 171 | 3.2.4 | **Stalkers/Spawns** | 3d? | 2005-01-24 | 2005-01-26 |  | 52d |  |
| 172 | 3.2.4.1 | **Stage 1** | 3d? | 2005-01-24 | 2005-01-26 |  | 52d |  |
| 173 | 3.2.4.1.1 | Design | 1d? | 2005-01-24 | 2005-01-24 |  | 52d | 0d |
| 174 | 3.2.4.1.2 | Implementation | 1d? | 2005-01-25 | 2005-01-25 | 173 | 52d | 0d |
| 175 | 3.2.4.1.3 | Tuning | 1d? | 2005-01-26 | 2005-01-26 | 174 | 52d |  |
| 176 | 3.2.5 | **Anomalies/Spawns** | 3d? | 2005-01-24 | 2005-01-26 |  | 52d |  |
| 177 | 3.2.5.1 | **Stage 1** | 3d? | 2005-01-24 | 2005-01-26 |  | 52d |  |
| 178 | 3.2.5.1.1 | Design | 1d? | 2005-01-24 | 2005-01-24 |  | 52d | 0d |
| 179 | 3.2.5.1.2 | Implementation | 1d? | 2005-01-25 | 2005-01-25 | 178 | 52d | 0d |
| 180 | 3.2.5.1.3 | Tuning | 1d? | 2005-01-26 | 2005-01-26 | 179 | 52d |  |
| 181 | 3.2.6 | **Physicks** | 3d? | 2005-01-24 | 2005-01-26 |  | 52d |  |
| 182 | 3.2.6.1 | **Stage 1** | 3d? | 2005-01-24 | 2005-01-26 |  | 52d |  |
| 183 | 3.2.6.1.1 | Design | 1d? | 2005-01-24 | 2005-01-24 |  | 52d | 0d |
| 184 | 3.2.6.1.2 | Implementation | 1d? | 2005-01-25 | 2005-01-25 | 183 | 52d | 0d |
| 185 | 3.2.6.1.3 | Tuning | 1d? | 2005-01-26 | 2005-01-26 | 184 | 52d |  |

| ID | WBS | Task | Duration | Start | Finish | Predecessors | Total slack | Free slack |
| --- | --- | --- | --- | --- | --- | --- | --- | --- |
| 187 | 3.3 | **Scripts** | 5d? | 2005-01-24 | 2005-01-28 |  | 50d |  |
| 188 | 3.3.1 | **Script 1** | 5d? | 2005-01-24 | 2005-01-28 |  | 50d |  |
| 189 | 3.3.1.1 | Scenario(text) | 1d? | 2005-01-24 | 2005-01-24 |  | 50d | 0d |
| 190 | 3.3.1.2 | Постановка задач | 1d? | 2005-01-25 | 2005-01-25 | 189 | 50d | 0d |
| 191 | 3.3.1.3 | Implimentation | 1d? | 2005-01-26 | 2005-01-26 | 190 | 50d | 0d |
| 192 | 3.3.1.4 | Dilogs/VO/Icons/Objects/Animations | 1d? | 2005-01-27 | 2005-01-27 | 191 | 50d | 0d |
| 193 | 3.3.1.5 | Настройка | 1d? | 2005-01-28 | 2005-01-28 | 192 | 50d |  |
| 194 | 3.3.2 | **Script 2** | 5d? | 2005-01-24 | 2005-01-28 |  | 50d |  |
| 195 | 3.3.2.1 | Scenario(text) | 1d? | 2005-01-24 | 2005-01-24 |  | 50d | 0d |
| 196 | 3.3.2.2 | Постановка задач | 1d? | 2005-01-25 | 2005-01-25 | 195 | 50d | 0d |
| 197 | 3.3.2.3 | Implimentation | 1d? | 2005-01-26 | 2005-01-26 | 196 | 50d | 0d |
| 198 | 3.3.2.4 | Dilogs/VO/Icons/Objects/Animations | 1d? | 2005-01-27 | 2005-01-27 | 197 | 50d | 0d |
| 199 | 3.3.2.5 | Настройка | 1d? | 2005-01-28 | 2005-01-28 | 198 | 50d |  |
| 200 | 3.3.3 | **Script 3** | 5d? | 2005-01-24 | 2005-01-28 |  | 50d |  |
| 201 | 3.3.3.1 | Scenario(text) | 1d? | 2005-01-24 | 2005-01-24 |  | 50d | 0d |
| 202 | 3.3.3.2 | Постановка задач | 1d? | 2005-01-25 | 2005-01-25 | 201 | 50d | 0d |
| 203 | 3.3.3.3 | Implimentation | 1d? | 2005-01-26 | 2005-01-26 | 202 | 50d | 0d |
| 204 | 3.3.3.4 | Dilogs/VO/Icons/Objects/Animations | 1d? | 2005-01-27 | 2005-01-27 | 203 | 50d | 0d |
| 205 | 3.3.3.5 | Настройка | 1d? | 2005-01-28 | 2005-01-28 | 204 | 50d |  |
| 206 | 3.3.4 | **Script 4** | 5d? | 2005-01-24 | 2005-01-28 |  | 50d |  |
| 207 | 3.3.4.1 | Scenario(text) | 1d? | 2005-01-24 | 2005-01-24 |  | 50d | 0d |
| 208 | 3.3.4.2 | Постановка задач | 1d? | 2005-01-25 | 2005-01-25 | 207 | 50d | 0d |
| 209 | 3.3.4.3 | Implimentation | 1d? | 2005-01-26 | 2005-01-26 | 208 | 50d | 0d |
| 210 | 3.3.4.4 | Dilogs/VO/Icons/Objects/Animations | 1d? | 2005-01-27 | 2005-01-27 | 209 | 50d | 0d |
| 211 | 3.3.4.5 | Настройка | 1d? | 2005-01-28 | 2005-01-28 | 210 | 50d |  |

| ID | WBS | Task | Duration | Start | Finish | Predecessors | Total slack | Free slack | Resources | Work |
| --- | --- | --- | --- | --- | --- | --- | --- | --- | --- | --- |
| 212 | 3.3.5 | **Script 5** | 5d? | 2005-01-24 | 2005-01-28 |  | 50d |  |  |  |
| 213 | 3.3.5.1 | Scenario(text) | 1d? | 2005-01-24 | 2005-01-24 |  | 50d | 0d |  |  |
| 214 | 3.3.5.2 | Постановка задач | 1d? | 2005-01-25 | 2005-01-25 | 213 | 50d | 0d |  |  |
| 215 | 3.3.5.3 | Implimentation | 1d? | 2005-01-26 | 2005-01-26 | 214 | 50d | 0d |  |  |
| 216 | 3.3.5.4 | Dilogs/VO/Icons/Objects/Animations | 1d? | 2005-01-27 | 2005-01-27 | 215 | 50d | 0d |  |  |
| 217 | 3.3.5.5 | Настройка | 1d? | 2005-01-28 | 2005-01-28 | 216 | 50d |  |  |  |
| 219 | 4 | **04_Agroprom_Underground** | 11d? | 2005-01-24 | 2005-02-04 |  | 44d |  | Чугай, Рома | 88h |
| 220 | 4.1 | **LevelDesign** | 11d? | 2005-01-24 | 2005-02-04 |  | 44d |  |  |  |
| 221 | 4.1.1 | **Stage 1** | 11d? | 2005-01-24 | 2005-02-04 |  | 44d |  |  |  |
| 222 | 4.1.1.1 | List of Changes | 2d | 2005-01-24 | 2005-01-25 |  | 44d | 0d |  |  |
| 223 | 4.1.1.2 | Changed Geometry | 1d? | 2005-01-26 | 2005-01-26 | 222 | 44d | 0d |  |  |
| 224 | 4.1.1.3 | Check List 1 | 1d? | 2005-01-27 | 2005-01-27 | 223 | 44d | 0d |  |  |
| 225 | 4.1.1.4 | Check List 2 | 1d? | 2005-01-28 | 2005-01-28 | 224 | 44d | 0d |  |  |
| 226 | 4.1.1.5 | Check List 3 | 1d? | 2005-01-29 | 2005-01-29 | 225 | 44d | 0d |  |  |
| 227 | 4.1.1.6 | Check List 4 | 1d? | 2005-01-31 | 2005-01-31 | 226 | 44d | 0d |  |  |
| 228 | 4.1.1.7 | Render Geometry | 1d? | 2005-02-01 | 2005-02-01 | 227 | 44d | 0d |  |  |
| 229 | 4.1.1.8 | Grass | 1d? | 2005-02-02 | 2005-02-02 | 228 | 44d | 0d |  |  |
| 230 | 4.1.1.9 | AI Maps | 1d? | 2005-02-03 | 2005-02-03 | 229 | 44d | 0d |  |  |
| 231 | 4.1.1.10 | Graphs | 1d? | 2005-02-04 | 2005-02-04 | 230 | 44d |  |  |  |
| 233 | 4.2 | **GameDesign** | 3d? | 2005-01-24 | 2005-01-26 |  | 52d |  |  |  |
| 234 | 4.2.1 | **Secrets** | 3d? | 2005-01-24 | 2005-01-26 |  | 52d |  |  |  |
| 235 | 4.2.1.1 | **Stage 1** | 3d? | 2005-01-24 | 2005-01-26 |  | 52d |  |  |  |
| 236 | 4.2.1.1.1 | Design | 1d? | 2005-01-24 | 2005-01-24 |  | 52d | 0d |  |  |
| 237 | 4.2.1.1.2 | Implementation | 1d? | 2005-01-25 | 2005-01-25 | 236 | 52d | 0d |  |  |
| 238 | 4.2.1.1.3 | Tuning | 1d? | 2005-01-26 | 2005-01-26 | 237 | 52d |  |  |  |

| ID | WBS | Task | Duration | Start | Finish | Predecessors | Total slack | Free slack |
| --- | --- | --- | --- | --- | --- | --- | --- | --- |
| 239 | 4.2.2 | **Smartterrains** | 3d? | 2005-01-24 | 2005-01-26 |  | 52d |  |
| 240 | 4.2.2.1 | **Stage 1** | 3d? | 2005-01-24 | 2005-01-26 |  | 52d |  |
| 241 | 4.2.2.1.1 | Design | 1d? | 2005-01-24 | 2005-01-24 |  | 52d | 0d |
| 242 | 4.2.2.1.2 | Implementation | 1d? | 2005-01-25 | 2005-01-25 | 241 | 52d | 0d |
| 243 | 4.2.2.1.3 | Tuning | 1d? | 2005-01-26 | 2005-01-26 | 242 | 52d |  |
| 244 | 4.2.3 | **Monsters/Spawns** | 3d? | 2005-01-24 | 2005-01-26 |  | 52d |  |
| 245 | 4.2.3.1 | **Stage 1** | 3d? | 2005-01-24 | 2005-01-26 |  | 52d |  |
| 246 | 4.2.3.1.1 | Design | 1d? | 2005-01-24 | 2005-01-24 |  | 52d | 0d |
| 247 | 4.2.3.1.2 | Implementation | 1d? | 2005-01-25 | 2005-01-25 | 246 | 52d | 0d |
| 248 | 4.2.3.1.3 | Tuning | 1d? | 2005-01-26 | 2005-01-26 | 247 | 52d |  |
| 249 | 4.2.4 | **Stalkers/Spawns** | 3d? | 2005-01-24 | 2005-01-26 |  | 52d |  |
| 250 | 4.2.4.1 | **Stage 1** | 3d? | 2005-01-24 | 2005-01-26 |  | 52d |  |
| 251 | 4.2.4.1.1 | Design | 1d? | 2005-01-24 | 2005-01-24 |  | 52d | 0d |
| 252 | 4.2.4.1.2 | Implementation | 1d? | 2005-01-25 | 2005-01-25 | 251 | 52d | 0d |
| 253 | 4.2.4.1.3 | Tuning | 1d? | 2005-01-26 | 2005-01-26 | 252 | 52d |  |
| 254 | 4.2.5 | **Anomalies/Spawns** | 3d? | 2005-01-24 | 2005-01-26 |  | 52d |  |
| 255 | 4.2.5.1 | **Stage 1** | 3d? | 2005-01-24 | 2005-01-26 |  | 52d |  |
| 256 | 4.2.5.1.1 | Design | 1d? | 2005-01-24 | 2005-01-24 |  | 52d | 0d |
| 257 | 4.2.5.1.2 | Implementation | 1d? | 2005-01-25 | 2005-01-25 | 256 | 52d | 0d |
| 258 | 4.2.5.1.3 | Tuning | 1d? | 2005-01-26 | 2005-01-26 | 257 | 52d |  |
| 259 | 4.2.6 | **Physicks** | 3d? | 2005-01-24 | 2005-01-26 |  | 52d |  |
| 260 | 4.2.6.1 | **Stage 1** | 3d? | 2005-01-24 | 2005-01-26 |  | 52d |  |
| 261 | 4.2.6.1.1 | Design | 1d? | 2005-01-24 | 2005-01-24 |  | 52d | 0d |
| 262 | 4.2.6.1.2 | Implementation | 1d? | 2005-01-25 | 2005-01-25 | 261 | 52d | 0d |
| 263 | 4.2.6.1.3 | Tuning | 1d? | 2005-01-26 | 2005-01-26 | 262 | 52d |  |

| ID | WBS | Task | Duration | Start | Finish | Predecessors | Total slack | Free slack |
| --- | --- | --- | --- | --- | --- | --- | --- | --- |
| 265 | 4.3 | **Scripts** | 5d? | 2005-01-24 | 2005-01-28 |  | 50d |  |
| 266 | 4.3.1 | **Script 1** | 5d? | 2005-01-24 | 2005-01-28 |  | 50d |  |
| 267 | 4.3.1.1 | Scenario(text) | 1d? | 2005-01-24 | 2005-01-24 |  | 50d | 0d |
| 268 | 4.3.1.2 | Постановка задач | 1d? | 2005-01-25 | 2005-01-25 | 267 | 50d | 0d |
| 269 | 4.3.1.3 | Implimentation | 1d? | 2005-01-26 | 2005-01-26 | 268 | 50d | 0d |
| 270 | 4.3.1.4 | Dilogs/VO/Icons/Objects/Animations | 1d? | 2005-01-27 | 2005-01-27 | 269 | 50d | 0d |
| 271 | 4.3.1.5 | Настройка | 1d? | 2005-01-28 | 2005-01-28 | 270 | 50d |  |
| 272 | 4.3.2 | **Script 2** | 5d? | 2005-01-24 | 2005-01-28 |  | 50d |  |
| 273 | 4.3.2.1 | Scenario(text) | 1d? | 2005-01-24 | 2005-01-24 |  | 50d | 0d |
| 274 | 4.3.2.2 | Постановка задач | 1d? | 2005-01-25 | 2005-01-25 | 273 | 50d | 0d |
| 275 | 4.3.2.3 | Implimentation | 1d? | 2005-01-26 | 2005-01-26 | 274 | 50d | 0d |
| 276 | 4.3.2.4 | Dilogs/VO/Icons/Objects/Animations | 1d? | 2005-01-27 | 2005-01-27 | 275 | 50d | 0d |
| 277 | 4.3.2.5 | Настройка | 1d? | 2005-01-28 | 2005-01-28 | 276 | 50d |  |
| 278 | 4.3.3 | **Script 3** | 5d? | 2005-01-24 | 2005-01-28 |  | 50d |  |
| 279 | 4.3.3.1 | Scenario(text) | 1d? | 2005-01-24 | 2005-01-24 |  | 50d | 0d |
| 280 | 4.3.3.2 | Постановка задач | 1d? | 2005-01-25 | 2005-01-25 | 279 | 50d | 0d |
| 281 | 4.3.3.3 | Implimentation | 1d? | 2005-01-26 | 2005-01-26 | 280 | 50d | 0d |
| 282 | 4.3.3.4 | Dilogs/VO/Icons/Objects/Animations | 1d? | 2005-01-27 | 2005-01-27 | 281 | 50d | 0d |
| 283 | 4.3.3.5 | Настройка | 1d? | 2005-01-28 | 2005-01-28 | 282 | 50d |  |
| 284 | 4.3.4 | **Script 4** | 5d? | 2005-01-24 | 2005-01-28 |  | 50d |  |
| 285 | 4.3.4.1 | Scenario(text) | 1d? | 2005-01-24 | 2005-01-24 |  | 50d | 0d |
| 286 | 4.3.4.2 | Постановка задач | 1d? | 2005-01-25 | 2005-01-25 | 285 | 50d | 0d |
| 287 | 4.3.4.3 | Implimentation | 1d? | 2005-01-26 | 2005-01-26 | 286 | 50d | 0d |
| 288 | 4.3.4.4 | Dilogs/VO/Icons/Objects/Animations | 1d? | 2005-01-27 | 2005-01-27 | 287 | 50d | 0d |
| 289 | 4.3.4.5 | Настройка | 1d? | 2005-01-28 | 2005-01-28 | 288 | 50d |  |

| ID | WBS | Task | Duration | Start | Finish | Predecessors | Total slack | Free slack | Constraint | Deadline | Resources | Work |
| --- | --- | --- | --- | --- | --- | --- | --- | --- | --- | --- | --- | --- |
| 290 | 4.3.5 | **Script 5** | 5d? | 2005-01-24 | 2005-01-28 |  | 50d |  |  |  |  |  |
| 291 | 4.3.5.1 | Scenario(text) | 1d? | 2005-01-24 | 2005-01-24 |  | 50d | 0d |  |  |  |  |
| 292 | 4.3.5.2 | Постановка задач | 1d? | 2005-01-25 | 2005-01-25 | 291 | 50d | 0d |  |  |  |  |
| 293 | 4.3.5.3 | Implimentation | 1d? | 2005-01-26 | 2005-01-26 | 292 | 50d | 0d |  |  |  |  |
| 294 | 4.3.5.4 | Dilogs/VO/Icons/Objects/Animations | 1d? | 2005-01-27 | 2005-01-27 | 293 | 50d | 0d |  |  |  |  |
| 295 | 4.3.5.5 | Настройка | 1d? | 2005-01-28 | 2005-01-28 | 294 | 50d |  |  |  |  |  |
| 301 | 5 | **05_Dark_Valley** | 11d? | 2005-01-24 | 2005-02-04 |  | 1.88d | 0d |  | 2005-03-01 | Рома, Змей | 208h |
| 302 | 5.1 | **LevelDesign** | 11d? | 2005-01-24 | 2005-02-04 |  | 1.88d |  |  | 2005-02-07 | Rainbow, Ефимов Владимир | 88h |
| 303 | 5.1.1 | **Stage 1** | 11d? | 2005-01-24 | 2005-02-04 |  | 1.88d |  |  |  |  |  |
| 304 | 5.1.1.1 | List of Changes | 2d | 2005-01-24 | 2005-01-25 |  | 1.88d | 0d | start no earlier than 2005-01-24 |  |  |  |
| 305 | 5.1.1.2 | Changed Geometry | 1d? | 2005-01-26 | 2005-01-26 | 304 | 1.88d | 0d |  |  |  |  |
| 306 | 5.1.1.3 | Check List 1 | 1d? | 2005-01-27 | 2005-01-27 | 305 | 1.88d | 0d |  |  |  |  |
| 307 | 5.1.1.4 | Check List 2 | 1d? | 2005-01-28 | 2005-01-28 | 306 | 1.88d | 0d |  |  |  |  |
| 308 | 5.1.1.5 | Check List 3 | 1d? | 2005-01-29 | 2005-01-29 | 307 | 1.88d | 0d |  |  |  |  |
| 309 | 5.1.1.6 | Check List 4 | 1d? | 2005-01-31 | 2005-01-31 | 308 | 1.88d | 0d |  |  |  |  |
| 310 | 5.1.1.7 | Render Geometry | 1d? | 2005-02-01 | 2005-02-01 | 309 | 1.88d | 0d |  |  |  |  |
| 311 | 5.1.1.8 | Grass | 1d? | 2005-02-02 | 2005-02-02 | 310 | 1.88d | 0d |  |  |  |  |
| 312 | 5.1.1.9 | AI Maps | 1d? | 2005-02-03 | 2005-02-03 | 311 | 1.88d | 0d |  |  |  |  |
| 313 | 5.1.1.10 | Graphs | 1d? | 2005-02-04 | 2005-02-04 | 312 | 1.88d |  |  |  |  |  |
| 315 | 5.2 | **GameDesign** | 3d? | 2005-01-24 | 2005-01-26 |  | 17.88d |  |  |  |  |  |
| 316 | 5.2.1 | **Secrets** | 3d? | 2005-01-24 | 2005-01-26 |  | 17.88d |  |  |  |  |  |
| 317 | 5.2.1.1 | **Stage 1** | 3d? | 2005-01-24 | 2005-01-26 |  | 17.88d |  |  |  |  |  |
| 318 | 5.2.1.1.1 | Design | 1d? | 2005-01-24 | 2005-01-24 |  | 17.88d | 0d |  |  |  |  |
| 319 | 5.2.1.1.2 | Implementation | 1d? | 2005-01-25 | 2005-01-25 | 318 | 17.88d | 0d |  |  |  |  |
| 320 | 5.2.1.1.3 | Tuning | 1d? | 2005-01-26 | 2005-01-26 | 319 | 17.88d |  |  |  |  |  |

| ID | WBS | Task | Duration | Start | Finish | Predecessors | Total slack | Free slack |
| --- | --- | --- | --- | --- | --- | --- | --- | --- |
| 321 | 5.2.2 | **Smartterrains** | 3d? | 2005-01-24 | 2005-01-26 |  | 17.88d |  |
| 322 | 5.2.2.1 | **Stage 1** | 3d? | 2005-01-24 | 2005-01-26 |  | 17.88d |  |
| 323 | 5.2.2.1.1 | Design | 1d? | 2005-01-24 | 2005-01-24 |  | 17.88d | 0d |
| 324 | 5.2.2.1.2 | Implementation | 1d? | 2005-01-25 | 2005-01-25 | 323 | 17.88d | 0d |
| 325 | 5.2.2.1.3 | Tuning | 1d? | 2005-01-26 | 2005-01-26 | 324 | 17.88d |  |
| 326 | 5.2.3 | **Monsters/Spawns** | 3d? | 2005-01-24 | 2005-01-26 |  | 17.88d |  |
| 327 | 5.2.3.1 | **Stage 1** | 3d? | 2005-01-24 | 2005-01-26 |  | 17.88d |  |
| 328 | 5.2.3.1.1 | Design | 1d? | 2005-01-24 | 2005-01-24 |  | 17.88d | 0d |
| 329 | 5.2.3.1.2 | Implementation | 1d? | 2005-01-25 | 2005-01-25 | 328 | 17.88d | 0d |
| 330 | 5.2.3.1.3 | Tuning | 1d? | 2005-01-26 | 2005-01-26 | 329 | 17.88d |  |
| 331 | 5.2.4 | **Stalkers/Spawns** | 3d? | 2005-01-24 | 2005-01-26 |  | 17.88d |  |
| 332 | 5.2.4.1 | **Stage 1** | 3d? | 2005-01-24 | 2005-01-26 |  | 17.88d |  |
| 333 | 5.2.4.1.1 | Design | 1d? | 2005-01-24 | 2005-01-24 |  | 17.88d | 0d |
| 334 | 5.2.4.1.2 | Implementation | 1d? | 2005-01-25 | 2005-01-25 | 333 | 17.88d | 0d |
| 335 | 5.2.4.1.3 | Tuning | 1d? | 2005-01-26 | 2005-01-26 | 334 | 17.88d |  |
| 336 | 5.2.5 | **Anomalies/Spawns** | 3d? | 2005-01-24 | 2005-01-26 |  | 17.88d |  |
| 337 | 5.2.5.1 | **Stage 1** | 3d? | 2005-01-24 | 2005-01-26 |  | 17.88d |  |
| 338 | 5.2.5.1.1 | Design | 1d? | 2005-01-24 | 2005-01-24 |  | 17.88d | 0d |
| 339 | 5.2.5.1.2 | Implementation | 1d? | 2005-01-25 | 2005-01-25 | 338 | 17.88d | 0d |
| 340 | 5.2.5.1.3 | Tuning | 1d? | 2005-01-26 | 2005-01-26 | 339 | 17.88d |  |
| 341 | 5.2.6 | **Physicks** | 3d? | 2005-01-24 | 2005-01-26 |  | 17.88d |  |
| 342 | 5.2.6.1 | **Stage 1** | 3d? | 2005-01-24 | 2005-01-26 |  | 17.88d |  |
| 343 | 5.2.6.1.1 | Design | 1d? | 2005-01-24 | 2005-01-24 |  | 17.88d | 0d |
| 344 | 5.2.6.1.2 | Implementation | 1d? | 2005-01-25 | 2005-01-25 | 343 | 17.88d | 0d |
| 345 | 5.2.6.1.3 | Tuning | 1d? | 2005-01-26 | 2005-01-26 | 344 | 17.88d |  |

| ID | WBS | Task | Duration | Start | Finish | Predecessors | Total slack | Free slack | Deadline | Resources | Work |
| --- | --- | --- | --- | --- | --- | --- | --- | --- | --- | --- | --- |
| 347 | 5.3 | **Scripts** | 1d? | 2005-01-24 | 2005-01-24 |  | 19.88d |  |  |  | 32h |
| 348 | 5.3.1 | Сценарий (текст) | 1d? | 2005-01-24 | 2005-01-24 |  | 19.88d |  |  |  |  |
| 349 | 5.3.2 | **Сцена 1 - бандиты скармливают сталкера монстру в яме** | 1d? | 2005-01-24 | 2005-01-24 |  | 19.88d |  |  |  | 32h |
| 350 | 5.3.2.1 | Постановка задач | 1d? | 2005-01-24 | 2005-01-24 |  | 19.88d |  |  |  |  |
| 351 | 5.3.2.2 | **Реализация** | 1d? | 2005-01-24 | 2005-01-24 |  | 19.88d |  |  |  | 16h |
| 352 | 5.3.2.2.1 | Скрипт и диалоги общения пленника с игроком | 1d? | 2005-01-24 | 2005-01-24 |  | 19.88d |  |  | Рома, Змей | 8h |
| 353 | 5.3.2.2.2 | Сценка со сталкиванием в яму | 1d? | 2005-01-24 | 2005-01-24 |  | 19.88d |  |  | Рома, Змей | 8h |
| 354 | 5.3.2.3 | **Тестирование** | 1d? | 2005-01-24 | 2005-01-24 |  | 19.88d |  |  |  | 16h |
| 355 | 5.3.2.3.1 | Персонажи сцены не срываются по реакциям на звук и прочие раздражители | 1d? | 2005-01-24 | 2005-01-24 |  | 19.88d |  |  | Partizan | 8h |
| 356 | 5.3.2.3.2 | Убедиться, что жертва упадет в яму даже в режиме с медленными апдейтами | 1d? | 2005-01-24 | 2005-01-24 |  | 19.88d |  |  | Partizan | 8h |
| 358 | 6 | **18_Prypiat** | 11d? | 2005-02-05 | 2005-02-17 | 301 | 9.88d | 0d | 2005-04-01 | Рома, Змей | 176h |
| 359 | 6.1 | **LevelDesign** | 11d? | 2005-02-05 | 2005-02-17 |  | 9.88d |  | 2005-03-01 | Веня | 88h |
| 360 | 6.1.1 | **Stage 1** | 11d? | 2005-02-05 | 2005-02-17 |  | 9.88d |  |  |  |  |
| 361 | 6.1.1.1 | List of Changes | 2d | 2005-02-05 | 2005-02-07 |  | 9.88d | 0d |  |  |  |
| 362 | 6.1.1.2 | Changed Geometry | 1d? | 2005-02-08 | 2005-02-08 | 361 | 9.88d | 0d |  |  |  |
| 363 | 6.1.1.3 | Check List 1 | 1d? | 2005-02-09 | 2005-02-09 | 362 | 9.88d | 0d |  |  |  |
| 364 | 6.1.1.4 | Check List 2 | 1d? | 2005-02-10 | 2005-02-10 | 363 | 9.88d | 0d |  |  |  |
| 365 | 6.1.1.5 | Check List 3 | 1d? | 2005-02-11 | 2005-02-11 | 364 | 9.88d | 0d |  |  |  |
| 366 | 6.1.1.6 | Check List 4 | 1d? | 2005-02-12 | 2005-02-12 | 365 | 9.88d | 0d |  |  |  |
| 367 | 6.1.1.7 | Render Geometry | 1d? | 2005-02-14 | 2005-02-14 | 366 | 9.88d | 0d |  |  |  |
| 368 | 6.1.1.8 | Grass | 1d? | 2005-02-15 | 2005-02-15 | 367 | 9.88d | 0d |  |  |  |
| 369 | 6.1.1.9 | AI Maps | 1d? | 2005-02-16 | 2005-02-16 | 368 | 9.88d | 0d |  |  |  |
| 370 | 6.1.1.10 | Graphs | 1d? | 2005-02-17 | 2005-02-17 | 369 | 9.88d |  |  |  |  |
| 372 | 6.2 | **GameDesign** | 3d? | 2005-02-05 | 2005-02-08 |  | 33.88d |  |  |  |  |
| 373 | 6.2.1 | **Secrets** | 3d? | 2005-02-05 | 2005-02-08 |  | 33.88d |  |  |  |  |
| 374 | 6.2.1.1 | **Stage 1** | 3d? | 2005-02-05 | 2005-02-08 |  | 33.88d |  |  |  |  |
| 375 | 6.2.1.1.1 | Design | 1d? | 2005-02-05 | 2005-02-05 |  | 33.88d | 0d |  |  |  |
| 376 | 6.2.1.1.2 | Implementation | 1d? | 2005-02-07 | 2005-02-07 | 375 | 33.88d | 0d |  |  |  |
| 377 | 6.2.1.1.3 | Tuning | 1d? | 2005-02-08 | 2005-02-08 | 376 | 33.88d |  |  |  |  |

Notes:
- 350: Заключенный говорит: «Тсс! Сюда идут!» / В подвал входят несколько бандитов, которые ведут сталкера-новичка. / Они подводят его к отверстию в полу (отверстие плохо видно из окна, через которое игрок общался с заключенным, поэтому игрок может перейти к соседнему окну, где отломан кусок стены). / Перекидываются парой фраз «Ставлю 10 рублей, что ему оторвут голову», «Нет, он вообще превратится в кровавое месиво через 5 секунд», «Да хватит томить, толкайте его уже!». / Один из бандитов толкает новичка в яму [если будет плохо выглядеть - пусть не толкает, а стреляет в новичка]. / Бандиты некоторое время смотрит, что происходит в яме, потом уходят. / Тестирование: / Для активации сцены нужно подойти к окну и спрыгнуть в нишу около решетки. Место отмечено на карте отметкой "жертвоприношение".
- 352: Подойти к окну, когда игрок туда спрыгнул, отыгрывание фраз "сюда идут" и т.п.

| ID | WBS | Task | Duration | Start | Finish | Predecessors | Total slack | Free slack |
| --- | --- | --- | --- | --- | --- | --- | --- | --- |
| 378 | 6.2.2 | **Smartterrains** | 3d? | 2005-02-05 | 2005-02-08 |  | 33.88d |  |
| 379 | 6.2.2.1 | **Stage 1** | 3d? | 2005-02-05 | 2005-02-08 |  | 33.88d |  |
| 380 | 6.2.2.1.1 | Design | 1d? | 2005-02-05 | 2005-02-05 |  | 33.88d | 0d |
| 381 | 6.2.2.1.2 | Implementation | 1d? | 2005-02-07 | 2005-02-07 | 380 | 33.88d | 0d |
| 382 | 6.2.2.1.3 | Tuning | 1d? | 2005-02-08 | 2005-02-08 | 381 | 33.88d |  |
| 383 | 6.2.3 | **Monsters/Spawns** | 3d? | 2005-02-05 | 2005-02-08 |  | 33.88d |  |
| 384 | 6.2.3.1 | **Stage 1** | 3d? | 2005-02-05 | 2005-02-08 |  | 33.88d |  |
| 385 | 6.2.3.1.1 | Design | 1d? | 2005-02-05 | 2005-02-05 |  | 33.88d | 0d |
| 386 | 6.2.3.1.2 | Implementation | 1d? | 2005-02-07 | 2005-02-07 | 385 | 33.88d | 0d |
| 387 | 6.2.3.1.3 | Tuning | 1d? | 2005-02-08 | 2005-02-08 | 386 | 33.88d |  |
| 388 | 6.2.4 | **Stalkers/Spawns** | 3d? | 2005-02-05 | 2005-02-08 |  | 33.88d |  |
| 389 | 6.2.4.1 | **Stage 1** | 3d? | 2005-02-05 | 2005-02-08 |  | 33.88d |  |
| 390 | 6.2.4.1.1 | Design | 1d? | 2005-02-05 | 2005-02-05 |  | 33.88d | 0d |
| 391 | 6.2.4.1.2 | Implementation | 1d? | 2005-02-07 | 2005-02-07 | 390 | 33.88d | 0d |
| 392 | 6.2.4.1.3 | Tuning | 1d? | 2005-02-08 | 2005-02-08 | 391 | 33.88d |  |
| 393 | 6.2.5 | **Anomalies/Spawns** | 3d? | 2005-02-05 | 2005-02-08 |  | 33.88d |  |
| 394 | 6.2.5.1 | **Stage 1** | 3d? | 2005-02-05 | 2005-02-08 |  | 33.88d |  |
| 395 | 6.2.5.1.1 | Design | 1d? | 2005-02-05 | 2005-02-05 |  | 33.88d | 0d |
| 396 | 6.2.5.1.2 | Implementation | 1d? | 2005-02-07 | 2005-02-07 | 395 | 33.88d | 0d |
| 397 | 6.2.5.1.3 | Tuning | 1d? | 2005-02-08 | 2005-02-08 | 396 | 33.88d |  |
| 398 | 6.2.6 | **Physicks** | 3d? | 2005-02-05 | 2005-02-08 |  | 33.88d |  |
| 399 | 6.2.6.1 | **Stage 1** | 3d? | 2005-02-05 | 2005-02-08 |  | 33.88d |  |
| 400 | 6.2.6.1.1 | Design | 1d? | 2005-02-05 | 2005-02-05 |  | 33.88d | 0d |
| 401 | 6.2.6.1.2 | Implementation | 1d? | 2005-02-07 | 2005-02-07 | 400 | 33.88d | 0d |
| 402 | 6.2.6.1.3 | Tuning | 1d? | 2005-02-08 | 2005-02-08 | 401 | 33.88d |  |

| ID | WBS | Task | Duration | Start | Finish | Predecessors | Total slack | Free slack |
| --- | --- | --- | --- | --- | --- | --- | --- | --- |
| 404 | 6.3 | **Scripts** | 5d? | 2005-02-05 | 2005-02-10 |  | 31.88d |  |
| 405 | 6.3.1 | **Script 1** | 5d? | 2005-02-05 | 2005-02-10 |  | 31.88d |  |
| 406 | 6.3.1.1 | Scenario(text) | 1d? | 2005-02-05 | 2005-02-05 |  | 31.88d | 0d |
| 407 | 6.3.1.2 | Постановка задач | 1d? | 2005-02-07 | 2005-02-07 | 406 | 31.88d | 0d |
| 408 | 6.3.1.3 | Implimentation | 1d? | 2005-02-08 | 2005-02-08 | 407 | 31.88d | 0d |
| 409 | 6.3.1.4 | Dilogs/VO/Icons/Objects/Animations | 1d? | 2005-02-09 | 2005-02-09 | 408 | 31.88d | 0d |
| 410 | 6.3.1.5 | Настройка | 1d? | 2005-02-10 | 2005-02-10 | 409 | 31.88d |  |
| 411 | 6.3.2 | **Script 2** | 5d? | 2005-02-05 | 2005-02-10 |  | 31.88d |  |
| 412 | 6.3.2.1 | Scenario(text) | 1d? | 2005-02-05 | 2005-02-05 |  | 31.88d | 0d |
| 413 | 6.3.2.2 | Постановка задач | 1d? | 2005-02-07 | 2005-02-07 | 412 | 31.88d | 0d |
| 414 | 6.3.2.3 | Implimentation | 1d? | 2005-02-08 | 2005-02-08 | 413 | 31.88d | 0d |
| 415 | 6.3.2.4 | Dilogs/VO/Icons/Objects/Animations | 1d? | 2005-02-09 | 2005-02-09 | 414 | 31.88d | 0d |
| 416 | 6.3.2.5 | Настройка | 1d? | 2005-02-10 | 2005-02-10 | 415 | 31.88d |  |
| 417 | 6.3.3 | **Script 3** | 5d? | 2005-02-05 | 2005-02-10 |  | 31.88d |  |
| 418 | 6.3.3.1 | Scenario(text) | 1d? | 2005-02-05 | 2005-02-05 |  | 31.88d | 0d |
| 419 | 6.3.3.2 | Постановка задач | 1d? | 2005-02-07 | 2005-02-07 | 418 | 31.88d | 0d |
| 420 | 6.3.3.3 | Implimentation | 1d? | 2005-02-08 | 2005-02-08 | 419 | 31.88d | 0d |
| 421 | 6.3.3.4 | Dilogs/VO/Icons/Objects/Animations | 1d? | 2005-02-09 | 2005-02-09 | 420 | 31.88d | 0d |
| 422 | 6.3.3.5 | Настройка | 1d? | 2005-02-10 | 2005-02-10 | 421 | 31.88d |  |
| 423 | 6.3.4 | **Script 4** | 5d? | 2005-02-05 | 2005-02-10 |  | 31.88d |  |
| 424 | 6.3.4.1 | Scenario(text) | 1d? | 2005-02-05 | 2005-02-05 |  | 31.88d | 0d |
| 425 | 6.3.4.2 | Постановка задач | 1d? | 2005-02-07 | 2005-02-07 | 424 | 31.88d | 0d |
| 426 | 6.3.4.3 | Implimentation | 1d? | 2005-02-08 | 2005-02-08 | 425 | 31.88d | 0d |
| 427 | 6.3.4.4 | Dilogs/VO/Icons/Objects/Animations | 1d? | 2005-02-09 | 2005-02-09 | 426 | 31.88d | 0d |
| 428 | 6.3.4.5 | Настройка | 1d? | 2005-02-10 | 2005-02-10 | 427 | 31.88d |  |

| ID | WBS | Task | Duration | Start | Finish | Predecessors | Total slack | Free slack | Deadline | Resources | Work |
| --- | --- | --- | --- | --- | --- | --- | --- | --- | --- | --- | --- |
| 429 | 6.3.5 | **Script 5** | 5d? | 2005-02-05 | 2005-02-10 |  | 31.88d |  |  |  |  |
| 430 | 6.3.5.1 | Scenario(text) | 1d? | 2005-02-05 | 2005-02-05 |  | 31.88d | 0d |  |  |  |
| 431 | 6.3.5.2 | Постановка задач | 1d? | 2005-02-07 | 2005-02-07 | 430 | 31.88d | 0d |  |  |  |
| 432 | 6.3.5.3 | Implimentation | 1d? | 2005-02-08 | 2005-02-08 | 431 | 31.88d | 0d |  |  |  |
| 433 | 6.3.5.4 | Dilogs/VO/Icons/Objects/Animations | 1d? | 2005-02-09 | 2005-02-09 | 432 | 31.88d | 0d |  |  |  |
| 434 | 6.3.5.5 | Настройка | 1d? | 2005-02-10 | 2005-02-10 | 433 | 31.88d |  |  |  |  |
| 436 | 7 | **13_Dead_City** | 11d? | 2005-02-18 | 2005-03-02 | 358 | 25.88d |  | 2005-04-29 | Рома, Змей | 176h |
| 437 | 7.1 | **LevelDesign** | 11d? | 2005-02-18 | 2005-03-02 |  | 25.88d |  | 2005-04-01 | Rainbow | 88h |
| 438 | 7.1.1 | **Stage 1** | 11d? | 2005-02-18 | 2005-03-02 |  | 25.88d |  |  |  |  |
| 439 | 7.1.1.1 | List of Changes | 2d | 2005-02-18 | 2005-02-19 |  | 25.88d | 0d |  |  |  |
| 440 | 7.1.1.2 | Changed Geometry | 1d? | 2005-02-21 | 2005-02-21 | 439 | 25.88d | 0d |  |  |  |
| 441 | 7.1.1.3 | Check List 1 | 1d? | 2005-02-22 | 2005-02-22 | 440 | 25.88d | 0d |  |  |  |
| 442 | 7.1.1.4 | Check List 2 | 1d? | 2005-02-23 | 2005-02-23 | 441 | 25.88d | 0d |  |  |  |
| 443 | 7.1.1.5 | Check List 3 | 1d? | 2005-02-24 | 2005-02-24 | 442 | 25.88d | 0d |  |  |  |
| 444 | 7.1.1.6 | Check List 4 | 1d? | 2005-02-25 | 2005-02-25 | 443 | 25.88d | 0d |  |  |  |
| 445 | 7.1.1.7 | Render Geometry | 1d? | 2005-02-26 | 2005-02-26 | 444 | 25.88d | 0d |  |  |  |
| 446 | 7.1.1.8 | Grass | 1d? | 2005-02-28 | 2005-02-28 | 445 | 25.88d | 0d |  |  |  |
| 447 | 7.1.1.9 | AI Maps | 1d? | 2005-03-01 | 2005-03-01 | 446 | 25.88d | 0d |  |  |  |
| 448 | 7.1.1.10 | Graphs | 1d? | 2005-03-02 | 2005-03-02 | 447 | 25.88d |  |  |  |  |
| 450 | 7.2 | **GameDesign** | 3d? | 2005-02-18 | 2005-02-21 |  | 57.88d |  |  |  |  |
| 451 | 7.2.1 | **Secrets** | 3d? | 2005-02-18 | 2005-02-21 |  | 57.88d |  |  |  |  |
| 452 | 7.2.1.1 | **Stage 1** | 3d? | 2005-02-18 | 2005-02-21 |  | 57.88d |  |  |  |  |
| 453 | 7.2.1.1.1 | Design | 1d? | 2005-02-18 | 2005-02-18 |  | 57.88d | 0d |  |  |  |
| 454 | 7.2.1.1.2 | Implementation | 1d? | 2005-02-19 | 2005-02-19 | 453 | 57.88d | 0d |  |  |  |
| 455 | 7.2.1.1.3 | Tuning | 1d? | 2005-02-21 | 2005-02-21 | 454 | 57.88d |  |  |  |  |

| ID | WBS | Task | Duration | Start | Finish | Predecessors | Total slack | Free slack |
| --- | --- | --- | --- | --- | --- | --- | --- | --- |
| 456 | 7.2.2 | **Smartterrains** | 3d? | 2005-02-18 | 2005-02-21 |  | 57.88d |  |
| 457 | 7.2.2.1 | **Stage 1** | 3d? | 2005-02-18 | 2005-02-21 |  | 57.88d |  |
| 458 | 7.2.2.1.1 | Design | 1d? | 2005-02-18 | 2005-02-18 |  | 57.88d | 0d |
| 459 | 7.2.2.1.2 | Implementation | 1d? | 2005-02-19 | 2005-02-19 | 458 | 57.88d | 0d |
| 460 | 7.2.2.1.3 | Tuning | 1d? | 2005-02-21 | 2005-02-21 | 459 | 57.88d |  |
| 461 | 7.2.3 | **Monsters/Spawns** | 3d? | 2005-02-18 | 2005-02-21 |  | 57.88d |  |
| 462 | 7.2.3.1 | **Stage 1** | 3d? | 2005-02-18 | 2005-02-21 |  | 57.88d |  |
| 463 | 7.2.3.1.1 | Design | 1d? | 2005-02-18 | 2005-02-18 |  | 57.88d | 0d |
| 464 | 7.2.3.1.2 | Implementation | 1d? | 2005-02-19 | 2005-02-19 | 463 | 57.88d | 0d |
| 465 | 7.2.3.1.3 | Tuning | 1d? | 2005-02-21 | 2005-02-21 | 464 | 57.88d |  |
| 466 | 7.2.4 | **Stalkers/Spawns** | 3d? | 2005-02-18 | 2005-02-21 |  | 57.88d |  |
| 467 | 7.2.4.1 | **Stage 1** | 3d? | 2005-02-18 | 2005-02-21 |  | 57.88d |  |
| 468 | 7.2.4.1.1 | Design | 1d? | 2005-02-18 | 2005-02-18 |  | 57.88d | 0d |
| 469 | 7.2.4.1.2 | Implementation | 1d? | 2005-02-19 | 2005-02-19 | 468 | 57.88d | 0d |
| 470 | 7.2.4.1.3 | Tuning | 1d? | 2005-02-21 | 2005-02-21 | 469 | 57.88d |  |
| 471 | 7.2.5 | **Anomalies/Spawns** | 3d? | 2005-02-18 | 2005-02-21 |  | 57.88d |  |
| 472 | 7.2.5.1 | **Stage 1** | 3d? | 2005-02-18 | 2005-02-21 |  | 57.88d |  |
| 473 | 7.2.5.1.1 | Design | 1d? | 2005-02-18 | 2005-02-18 |  | 57.88d | 0d |
| 474 | 7.2.5.1.2 | Implementation | 1d? | 2005-02-19 | 2005-02-19 | 473 | 57.88d | 0d |
| 475 | 7.2.5.1.3 | Tuning | 1d? | 2005-02-21 | 2005-02-21 | 474 | 57.88d |  |
| 476 | 7.2.6 | **Physicks** | 3d? | 2005-02-18 | 2005-02-21 |  | 57.88d |  |
| 477 | 7.2.6.1 | **Stage 1** | 3d? | 2005-02-18 | 2005-02-21 |  | 57.88d |  |
| 478 | 7.2.6.1.1 | Design | 1d? | 2005-02-18 | 2005-02-18 |  | 57.88d | 0d |
| 479 | 7.2.6.1.2 | Implementation | 1d? | 2005-02-19 | 2005-02-19 | 478 | 57.88d | 0d |
| 480 | 7.2.6.1.3 | Tuning | 1d? | 2005-02-21 | 2005-02-21 | 479 | 57.88d |  |

| ID | WBS | Task | Duration | Start | Finish | Predecessors | Total slack | Free slack |
| --- | --- | --- | --- | --- | --- | --- | --- | --- |
| 482 | 7.3 | **Scripts** | 5d? | 2005-02-18 | 2005-02-23 |  | 55.88d |  |
| 483 | 7.3.1 | **Script 1** | 5d? | 2005-02-18 | 2005-02-23 |  | 55.88d |  |
| 484 | 7.3.1.1 | Scenario(text) | 1d? | 2005-02-18 | 2005-02-18 |  | 55.88d | 0d |
| 485 | 7.3.1.2 | Постановка задач | 1d? | 2005-02-19 | 2005-02-19 | 484 | 55.88d | 0d |
| 486 | 7.3.1.3 | Implimentation | 1d? | 2005-02-21 | 2005-02-21 | 485 | 55.88d | 0d |
| 487 | 7.3.1.4 | Dilogs/VO/Icons/Objects/Animations | 1d? | 2005-02-22 | 2005-02-22 | 486 | 55.88d | 0d |
| 488 | 7.3.1.5 | Настройка | 1d? | 2005-02-23 | 2005-02-23 | 487 | 55.88d |  |
| 489 | 7.3.2 | **Script 2** | 5d? | 2005-02-18 | 2005-02-23 |  | 55.88d |  |
| 490 | 7.3.2.1 | Scenario(text) | 1d? | 2005-02-18 | 2005-02-18 |  | 55.88d | 0d |
| 491 | 7.3.2.2 | Постановка задач | 1d? | 2005-02-19 | 2005-02-19 | 490 | 55.88d | 0d |
| 492 | 7.3.2.3 | Implimentation | 1d? | 2005-02-21 | 2005-02-21 | 491 | 55.88d | 0d |
| 493 | 7.3.2.4 | Dilogs/VO/Icons/Objects/Animations | 1d? | 2005-02-22 | 2005-02-22 | 492 | 55.88d | 0d |
| 494 | 7.3.2.5 | Настройка | 1d? | 2005-02-23 | 2005-02-23 | 493 | 55.88d |  |
| 495 | 7.3.3 | **Script 3** | 5d? | 2005-02-18 | 2005-02-23 |  | 55.88d |  |
| 496 | 7.3.3.1 | Scenario(text) | 1d? | 2005-02-18 | 2005-02-18 |  | 55.88d | 0d |
| 497 | 7.3.3.2 | Постановка задач | 1d? | 2005-02-19 | 2005-02-19 | 496 | 55.88d | 0d |
| 498 | 7.3.3.3 | Implimentation | 1d? | 2005-02-21 | 2005-02-21 | 497 | 55.88d | 0d |
| 499 | 7.3.3.4 | Dilogs/VO/Icons/Objects/Animations | 1d? | 2005-02-22 | 2005-02-22 | 498 | 55.88d | 0d |
| 500 | 7.3.3.5 | Настройка | 1d? | 2005-02-23 | 2005-02-23 | 499 | 55.88d |  |
| 501 | 7.3.4 | **Script 4** | 5d? | 2005-02-18 | 2005-02-23 |  | 55.88d |  |
| 502 | 7.3.4.1 | Scenario(text) | 1d? | 2005-02-18 | 2005-02-18 |  | 55.88d | 0d |
| 503 | 7.3.4.2 | Постановка задач | 1d? | 2005-02-19 | 2005-02-19 | 502 | 55.88d | 0d |
| 504 | 7.3.4.3 | Implimentation | 1d? | 2005-02-21 | 2005-02-21 | 503 | 55.88d | 0d |
| 505 | 7.3.4.4 | Dilogs/VO/Icons/Objects/Animations | 1d? | 2005-02-22 | 2005-02-22 | 504 | 55.88d | 0d |
| 506 | 7.3.4.5 | Настройка | 1d? | 2005-02-23 | 2005-02-23 | 505 | 55.88d |  |

| ID | WBS | Task | Duration | Start | Finish | Predecessors | Total slack | Free slack | Deadline | Resources | Work |
| --- | --- | --- | --- | --- | --- | --- | --- | --- | --- | --- | --- |
| 507 | 7.3.5 | **Script 5** | 5d? | 2005-02-18 | 2005-02-23 |  | 55.88d |  |  |  |  |
| 508 | 7.3.5.1 | Scenario(text) | 1d? | 2005-02-18 | 2005-02-18 |  | 55.88d | 0d |  |  |  |
| 509 | 7.3.5.2 | Постановка задач | 1d? | 2005-02-19 | 2005-02-19 | 508 | 55.88d | 0d |  |  |  |
| 510 | 7.3.5.3 | Implimentation | 1d? | 2005-02-21 | 2005-02-21 | 509 | 55.88d | 0d |  |  |  |
| 511 | 7.3.5.4 | Dilogs/VO/Icons/Objects/Animations | 1d? | 2005-02-22 | 2005-02-22 | 510 | 55.88d | 0d |  |  |  |
| 512 | 7.3.5.5 | Настройка | 1d? | 2005-02-23 | 2005-02-23 | 511 | 55.88d |  |  |  |  |
| 516 | 8 | **06_Dark_Valley_Underground** | 11d? | 2005-01-24 | 2005-02-04 |  | 1.88d | 0d | 2005-03-01 | Джим, Угрюмый | 88h |
| 517 | 8.1 | **LevelDesign** | 11d? | 2005-01-24 | 2005-02-04 |  | 1.88d |  | 2005-02-07 |  |  |
| 518 | 8.1.1 | **Stage 1** | 11d? | 2005-01-24 | 2005-02-04 |  | 1.88d |  |  |  |  |
| 519 | 8.1.1.1 | List of Changes | 2d | 2005-01-24 | 2005-01-25 |  | 1.88d | 0d |  |  |  |
| 520 | 8.1.1.2 | Changed Geometry | 1d? | 2005-01-26 | 2005-01-26 | 519 | 1.88d | 0d |  |  |  |
| 521 | 8.1.1.3 | Check List 1 | 1d? | 2005-01-27 | 2005-01-27 | 520 | 1.88d | 0d |  |  |  |
| 522 | 8.1.1.4 | Check List 2 | 1d? | 2005-01-28 | 2005-01-28 | 521 | 1.88d | 0d |  |  |  |
| 523 | 8.1.1.5 | Check List 3 | 1d? | 2005-01-29 | 2005-01-29 | 522 | 1.88d | 0d |  |  |  |
| 524 | 8.1.1.6 | Check List 4 | 1d? | 2005-01-31 | 2005-01-31 | 523 | 1.88d | 0d |  |  |  |
| 525 | 8.1.1.7 | Render Geometry | 1d? | 2005-02-01 | 2005-02-01 | 524 | 1.88d | 0d |  |  |  |
| 526 | 8.1.1.8 | Grass | 1d? | 2005-02-02 | 2005-02-02 | 525 | 1.88d | 0d |  |  |  |
| 527 | 8.1.1.9 | AI Maps | 1d? | 2005-02-03 | 2005-02-03 | 526 | 1.88d | 0d |  |  |  |
| 528 | 8.1.1.10 | Graphs | 1d? | 2005-02-04 | 2005-02-04 | 527 | 1.88d |  |  |  |  |
| 530 | 8.2 | **GameDesign** | 3d? | 2005-01-24 | 2005-01-26 |  | 17.88d |  |  |  |  |
| 531 | 8.2.1 | **Secrets** | 3d? | 2005-01-24 | 2005-01-26 |  | 17.88d |  |  |  |  |
| 532 | 8.2.1.1 | **Stage 1** | 3d? | 2005-01-24 | 2005-01-26 |  | 17.88d |  |  |  |  |
| 533 | 8.2.1.1.1 | Design | 1d? | 2005-01-24 | 2005-01-24 |  | 17.88d | 0d |  |  |  |
| 534 | 8.2.1.1.2 | Implementation | 1d? | 2005-01-25 | 2005-01-25 | 533 | 17.88d | 0d |  |  |  |
| 535 | 8.2.1.1.3 | Tuning | 1d? | 2005-01-26 | 2005-01-26 | 534 | 17.88d |  |  |  |  |

| ID | WBS | Task | Duration | Start | Finish | Predecessors | Total slack | Free slack |
| --- | --- | --- | --- | --- | --- | --- | --- | --- |
| 536 | 8.2.2 | **Smartterrains** | 3d? | 2005-01-24 | 2005-01-26 |  | 17.88d |  |
| 537 | 8.2.2.1 | **Stage 1** | 3d? | 2005-01-24 | 2005-01-26 |  | 17.88d |  |
| 538 | 8.2.2.1.1 | Design | 1d? | 2005-01-24 | 2005-01-24 |  | 17.88d | 0d |
| 539 | 8.2.2.1.2 | Implementation | 1d? | 2005-01-25 | 2005-01-25 | 538 | 17.88d | 0d |
| 540 | 8.2.2.1.3 | Tuning | 1d? | 2005-01-26 | 2005-01-26 | 539 | 17.88d |  |
| 541 | 8.2.3 | **Monsters/Spawns** | 3d? | 2005-01-24 | 2005-01-26 |  | 17.88d |  |
| 542 | 8.2.3.1 | **Stage 1** | 3d? | 2005-01-24 | 2005-01-26 |  | 17.88d |  |
| 543 | 8.2.3.1.1 | Design | 1d? | 2005-01-24 | 2005-01-24 |  | 17.88d | 0d |
| 544 | 8.2.3.1.2 | Implementation | 1d? | 2005-01-25 | 2005-01-25 | 543 | 17.88d | 0d |
| 545 | 8.2.3.1.3 | Tuning | 1d? | 2005-01-26 | 2005-01-26 | 544 | 17.88d |  |
| 546 | 8.2.4 | **Stalkers/Spawns** | 3d? | 2005-01-24 | 2005-01-26 |  | 17.88d |  |
| 547 | 8.2.4.1 | **Stage 1** | 3d? | 2005-01-24 | 2005-01-26 |  | 17.88d |  |
| 548 | 8.2.4.1.1 | Design | 1d? | 2005-01-24 | 2005-01-24 |  | 17.88d | 0d |
| 549 | 8.2.4.1.2 | Implementation | 1d? | 2005-01-25 | 2005-01-25 | 548 | 17.88d | 0d |
| 550 | 8.2.4.1.3 | Tuning | 1d? | 2005-01-26 | 2005-01-26 | 549 | 17.88d |  |
| 551 | 8.2.5 | **Anomalies/Spawns** | 3d? | 2005-01-24 | 2005-01-26 |  | 17.88d |  |
| 552 | 8.2.5.1 | **Stage 1** | 3d? | 2005-01-24 | 2005-01-26 |  | 17.88d |  |
| 553 | 8.2.5.1.1 | Design | 1d? | 2005-01-24 | 2005-01-24 |  | 17.88d | 0d |
| 554 | 8.2.5.1.2 | Implementation | 1d? | 2005-01-25 | 2005-01-25 | 553 | 17.88d | 0d |
| 555 | 8.2.5.1.3 | Tuning | 1d? | 2005-01-26 | 2005-01-26 | 554 | 17.88d |  |
| 556 | 8.2.6 | **Physicks** | 3d? | 2005-01-24 | 2005-01-26 |  | 17.88d |  |
| 557 | 8.2.6.1 | **Stage 1** | 3d? | 2005-01-24 | 2005-01-26 |  | 17.88d |  |
| 558 | 8.2.6.1.1 | Design | 1d? | 2005-01-24 | 2005-01-24 |  | 17.88d | 0d |
| 559 | 8.2.6.1.2 | Implementation | 1d? | 2005-01-25 | 2005-01-25 | 558 | 17.88d | 0d |
| 560 | 8.2.6.1.3 | Tuning | 1d? | 2005-01-26 | 2005-01-26 | 559 | 17.88d |  |

| ID | WBS | Task | Duration | Start | Finish | Predecessors | Total slack | Free slack |
| --- | --- | --- | --- | --- | --- | --- | --- | --- |
| 562 | 8.3 | **Scripts** | 5d? | 2005-01-24 | 2005-01-28 |  | 15.88d |  |
| 563 | 8.3.1 | **Script 1** | 5d? | 2005-01-24 | 2005-01-28 |  | 15.88d |  |
| 564 | 8.3.1.1 | Scenario(text) | 1d? | 2005-01-24 | 2005-01-24 |  | 15.88d | 0d |
| 565 | 8.3.1.2 | Постановка задач | 1d? | 2005-01-25 | 2005-01-25 | 564 | 15.88d | 0d |
| 566 | 8.3.1.3 | Implimentation | 1d? | 2005-01-26 | 2005-01-26 | 565 | 15.88d | 0d |
| 567 | 8.3.1.4 | Dilogs/VO/Icons/Objects/Animations | 1d? | 2005-01-27 | 2005-01-27 | 566 | 15.88d | 0d |
| 568 | 8.3.1.5 | Настройка | 1d? | 2005-01-28 | 2005-01-28 | 567 | 15.88d |  |
| 569 | 8.3.2 | **Script 2** | 5d? | 2005-01-24 | 2005-01-28 |  | 15.88d |  |
| 570 | 8.3.2.1 | Scenario(text) | 1d? | 2005-01-24 | 2005-01-24 |  | 15.88d | 0d |
| 571 | 8.3.2.2 | Постановка задач | 1d? | 2005-01-25 | 2005-01-25 | 570 | 15.88d | 0d |
| 572 | 8.3.2.3 | Implimentation | 1d? | 2005-01-26 | 2005-01-26 | 571 | 15.88d | 0d |
| 573 | 8.3.2.4 | Dilogs/VO/Icons/Objects/Animations | 1d? | 2005-01-27 | 2005-01-27 | 572 | 15.88d | 0d |
| 574 | 8.3.2.5 | Настройка | 1d? | 2005-01-28 | 2005-01-28 | 573 | 15.88d |  |
| 575 | 8.3.3 | **Script 3** | 5d? | 2005-01-24 | 2005-01-28 |  | 15.88d |  |
| 576 | 8.3.3.1 | Scenario(text) | 1d? | 2005-01-24 | 2005-01-24 |  | 15.88d | 0d |
| 577 | 8.3.3.2 | Постановка задач | 1d? | 2005-01-25 | 2005-01-25 | 576 | 15.88d | 0d |
| 578 | 8.3.3.3 | Implimentation | 1d? | 2005-01-26 | 2005-01-26 | 577 | 15.88d | 0d |
| 579 | 8.3.3.4 | Dilogs/VO/Icons/Objects/Animations | 1d? | 2005-01-27 | 2005-01-27 | 578 | 15.88d | 0d |
| 580 | 8.3.3.5 | Настройка | 1d? | 2005-01-28 | 2005-01-28 | 579 | 15.88d |  |
| 581 | 8.3.4 | **Script 4** | 5d? | 2005-01-24 | 2005-01-28 |  | 15.88d |  |
| 582 | 8.3.4.1 | Scenario(text) | 1d? | 2005-01-24 | 2005-01-24 |  | 15.88d | 0d |
| 583 | 8.3.4.2 | Постановка задач | 1d? | 2005-01-25 | 2005-01-25 | 582 | 15.88d | 0d |
| 584 | 8.3.4.3 | Implimentation | 1d? | 2005-01-26 | 2005-01-26 | 583 | 15.88d | 0d |
| 585 | 8.3.4.4 | Dilogs/VO/Icons/Objects/Animations | 1d? | 2005-01-27 | 2005-01-27 | 584 | 15.88d | 0d |
| 586 | 8.3.4.5 | Настройка | 1d? | 2005-01-28 | 2005-01-28 | 585 | 15.88d |  |

| ID | WBS | Task | Duration | Start | Finish | Predecessors | Total slack | Free slack | Deadline | Resources | Work |
| --- | --- | --- | --- | --- | --- | --- | --- | --- | --- | --- | --- |
| 587 | 8.3.5 | **Script 5** | 5d? | 2005-01-24 | 2005-01-28 |  | 15.88d |  |  |  |  |
| 588 | 8.3.5.1 | Scenario(text) | 1d? | 2005-01-24 | 2005-01-24 |  | 15.88d | 0d |  |  |  |
| 589 | 8.3.5.2 | Постановка задач | 1d? | 2005-01-25 | 2005-01-25 | 588 | 15.88d | 0d |  |  |  |
| 590 | 8.3.5.3 | Implimentation | 1d? | 2005-01-26 | 2005-01-26 | 589 | 15.88d | 0d |  |  |  |
| 591 | 8.3.5.4 | Dilogs/VO/Icons/Objects/Animations | 1d? | 2005-01-27 | 2005-01-27 | 590 | 15.88d | 0d |  |  |  |
| 592 | 8.3.5.5 | Настройка | 1d? | 2005-01-28 | 2005-01-28 | 591 | 15.88d |  |  |  |  |
| 594 | 9 | **16_Radar_Antena_Control_Undergaround** | 11d? | 2005-02-05 | 2005-02-17 | 516 | 9.88d | 0d | 2005-04-01 | Джим, Угрюмый | 88h |
| 595 | 9.1 | **LevelDesign** | 11d? | 2005-02-05 | 2005-02-17 |  | 9.88d |  | 2005-03-01 |  |  |
| 596 | 9.1.1 | **Stage 1** | 11d? | 2005-02-05 | 2005-02-17 |  | 9.88d |  |  |  |  |
| 597 | 9.1.1.1 | List of Changes | 2d | 2005-02-05 | 2005-02-07 |  | 9.88d | 0d |  |  |  |
| 598 | 9.1.1.2 | Changed Geometry | 1d? | 2005-02-08 | 2005-02-08 | 597 | 9.88d | 0d |  |  |  |
| 599 | 9.1.1.3 | Check List 1 | 1d? | 2005-02-09 | 2005-02-09 | 598 | 9.88d | 0d |  |  |  |
| 600 | 9.1.1.4 | Check List 2 | 1d? | 2005-02-10 | 2005-02-10 | 599 | 9.88d | 0d |  |  |  |
| 601 | 9.1.1.5 | Check List 3 | 1d? | 2005-02-11 | 2005-02-11 | 600 | 9.88d | 0d |  |  |  |
| 602 | 9.1.1.6 | Check List 4 | 1d? | 2005-02-12 | 2005-02-12 | 601 | 9.88d | 0d |  |  |  |
| 603 | 9.1.1.7 | Render Geometry | 1d? | 2005-02-14 | 2005-02-14 | 602 | 9.88d | 0d |  |  |  |
| 604 | 9.1.1.8 | Grass | 1d? | 2005-02-15 | 2005-02-15 | 603 | 9.88d | 0d |  |  |  |
| 605 | 9.1.1.9 | AI Maps | 1d? | 2005-02-16 | 2005-02-16 | 604 | 9.88d | 0d |  |  |  |
| 606 | 9.1.1.10 | Graphs | 1d? | 2005-02-17 | 2005-02-17 | 605 | 9.88d |  |  |  |  |
| 608 | 9.2 | **GameDesign** | 3d? | 2005-02-05 | 2005-02-08 |  | 33.88d |  |  |  |  |
| 609 | 9.2.1 | **Secrets** | 3d? | 2005-02-05 | 2005-02-08 |  | 33.88d |  |  |  |  |
| 610 | 9.2.1.1 | **Stage 1** | 3d? | 2005-02-05 | 2005-02-08 |  | 33.88d |  |  |  |  |
| 611 | 9.2.1.1.1 | Design | 1d? | 2005-02-05 | 2005-02-05 |  | 33.88d | 0d |  |  |  |
| 612 | 9.2.1.1.2 | Implementation | 1d? | 2005-02-07 | 2005-02-07 | 611 | 33.88d | 0d |  |  |  |
| 613 | 9.2.1.1.3 | Tuning | 1d? | 2005-02-08 | 2005-02-08 | 612 | 33.88d |  |  |  |  |

| ID | WBS | Task | Duration | Start | Finish | Predecessors | Total slack | Free slack |
| --- | --- | --- | --- | --- | --- | --- | --- | --- |
| 614 | 9.2.2 | **Smartterrains** | 3d? | 2005-02-05 | 2005-02-08 |  | 33.88d |  |
| 615 | 9.2.2.1 | **Stage 1** | 3d? | 2005-02-05 | 2005-02-08 |  | 33.88d |  |
| 616 | 9.2.2.1.1 | Design | 1d? | 2005-02-05 | 2005-02-05 |  | 33.88d | 0d |
| 617 | 9.2.2.1.2 | Implementation | 1d? | 2005-02-07 | 2005-02-07 | 616 | 33.88d | 0d |
| 618 | 9.2.2.1.3 | Tuning | 1d? | 2005-02-08 | 2005-02-08 | 617 | 33.88d |  |
| 619 | 9.2.3 | **Monsters/Spawns** | 3d? | 2005-02-05 | 2005-02-08 |  | 33.88d |  |
| 620 | 9.2.3.1 | **Stage 1** | 3d? | 2005-02-05 | 2005-02-08 |  | 33.88d |  |
| 621 | 9.2.3.1.1 | Design | 1d? | 2005-02-05 | 2005-02-05 |  | 33.88d | 0d |
| 622 | 9.2.3.1.2 | Implementation | 1d? | 2005-02-07 | 2005-02-07 | 621 | 33.88d | 0d |
| 623 | 9.2.3.1.3 | Tuning | 1d? | 2005-02-08 | 2005-02-08 | 622 | 33.88d |  |
| 624 | 9.2.4 | **Stalkers/Spawns** | 3d? | 2005-02-05 | 2005-02-08 |  | 33.88d |  |
| 625 | 9.2.4.1 | **Stage 1** | 3d? | 2005-02-05 | 2005-02-08 |  | 33.88d |  |
| 626 | 9.2.4.1.1 | Design | 1d? | 2005-02-05 | 2005-02-05 |  | 33.88d | 0d |
| 627 | 9.2.4.1.2 | Implementation | 1d? | 2005-02-07 | 2005-02-07 | 626 | 33.88d | 0d |
| 628 | 9.2.4.1.3 | Tuning | 1d? | 2005-02-08 | 2005-02-08 | 627 | 33.88d |  |
| 629 | 9.2.5 | **Anomalies/Spawns** | 3d? | 2005-02-05 | 2005-02-08 |  | 33.88d |  |
| 630 | 9.2.5.1 | **Stage 1** | 3d? | 2005-02-05 | 2005-02-08 |  | 33.88d |  |
| 631 | 9.2.5.1.1 | Design | 1d? | 2005-02-05 | 2005-02-05 |  | 33.88d | 0d |
| 632 | 9.2.5.1.2 | Implementation | 1d? | 2005-02-07 | 2005-02-07 | 631 | 33.88d | 0d |
| 633 | 9.2.5.1.3 | Tuning | 1d? | 2005-02-08 | 2005-02-08 | 632 | 33.88d |  |
| 634 | 9.2.6 | **Physicks** | 3d? | 2005-02-05 | 2005-02-08 |  | 33.88d |  |
| 635 | 9.2.6.1 | **Stage 1** | 3d? | 2005-02-05 | 2005-02-08 |  | 33.88d |  |
| 636 | 9.2.6.1.1 | Design | 1d? | 2005-02-05 | 2005-02-05 |  | 33.88d | 0d |
| 637 | 9.2.6.1.2 | Implementation | 1d? | 2005-02-07 | 2005-02-07 | 636 | 33.88d | 0d |
| 638 | 9.2.6.1.3 | Tuning | 1d? | 2005-02-08 | 2005-02-08 | 637 | 33.88d |  |

| ID | WBS | Task | Duration | Start | Finish | Predecessors | Total slack | Free slack |
| --- | --- | --- | --- | --- | --- | --- | --- | --- |
| 640 | 9.3 | **Scripts** | 5d? | 2005-02-05 | 2005-02-10 |  | 31.88d |  |
| 641 | 9.3.1 | **Script 1** | 5d? | 2005-02-05 | 2005-02-10 |  | 31.88d |  |
| 642 | 9.3.1.1 | Scenario(text) | 1d? | 2005-02-05 | 2005-02-05 |  | 31.88d | 0d |
| 643 | 9.3.1.2 | Постановка задач | 1d? | 2005-02-07 | 2005-02-07 | 642 | 31.88d | 0d |
| 644 | 9.3.1.3 | Implimentation | 1d? | 2005-02-08 | 2005-02-08 | 643 | 31.88d | 0d |
| 645 | 9.3.1.4 | Dilogs/VO/Icons/Objects/Animations | 1d? | 2005-02-09 | 2005-02-09 | 644 | 31.88d | 0d |
| 646 | 9.3.1.5 | Настройка | 1d? | 2005-02-10 | 2005-02-10 | 645 | 31.88d |  |
| 647 | 9.3.2 | **Script 2** | 5d? | 2005-02-05 | 2005-02-10 |  | 31.88d |  |
| 648 | 9.3.2.1 | Scenario(text) | 1d? | 2005-02-05 | 2005-02-05 |  | 31.88d | 0d |
| 649 | 9.3.2.2 | Постановка задач | 1d? | 2005-02-07 | 2005-02-07 | 648 | 31.88d | 0d |
| 650 | 9.3.2.3 | Implimentation | 1d? | 2005-02-08 | 2005-02-08 | 649 | 31.88d | 0d |
| 651 | 9.3.2.4 | Dilogs/VO/Icons/Objects/Animations | 1d? | 2005-02-09 | 2005-02-09 | 650 | 31.88d | 0d |
| 652 | 9.3.2.5 | Настройка | 1d? | 2005-02-10 | 2005-02-10 | 651 | 31.88d |  |
| 653 | 9.3.3 | **Script 3** | 5d? | 2005-02-05 | 2005-02-10 |  | 31.88d |  |
| 654 | 9.3.3.1 | Scenario(text) | 1d? | 2005-02-05 | 2005-02-05 |  | 31.88d | 0d |
| 655 | 9.3.3.2 | Постановка задач | 1d? | 2005-02-07 | 2005-02-07 | 654 | 31.88d | 0d |
| 656 | 9.3.3.3 | Implimentation | 1d? | 2005-02-08 | 2005-02-08 | 655 | 31.88d | 0d |
| 657 | 9.3.3.4 | Dilogs/VO/Icons/Objects/Animations | 1d? | 2005-02-09 | 2005-02-09 | 656 | 31.88d | 0d |
| 658 | 9.3.3.5 | Настройка | 1d? | 2005-02-10 | 2005-02-10 | 657 | 31.88d |  |
| 659 | 9.3.4 | **Script 4** | 5d? | 2005-02-05 | 2005-02-10 |  | 31.88d |  |
| 660 | 9.3.4.1 | Scenario(text) | 1d? | 2005-02-05 | 2005-02-05 |  | 31.88d | 0d |
| 661 | 9.3.4.2 | Постановка задач | 1d? | 2005-02-07 | 2005-02-07 | 660 | 31.88d | 0d |
| 662 | 9.3.4.3 | Implimentation | 1d? | 2005-02-08 | 2005-02-08 | 661 | 31.88d | 0d |
| 663 | 9.3.4.4 | Dilogs/VO/Icons/Objects/Animations | 1d? | 2005-02-09 | 2005-02-09 | 662 | 31.88d | 0d |
| 664 | 9.3.4.5 | Настройка | 1d? | 2005-02-10 | 2005-02-10 | 663 | 31.88d |  |

| ID | WBS | Task | Duration | Start | Finish | Predecessors | Total slack | Free slack | Deadline | Resources | Work |
| --- | --- | --- | --- | --- | --- | --- | --- | --- | --- | --- | --- |
| 665 | 9.3.5 | **Script 5** | 5d? | 2005-02-05 | 2005-02-10 |  | 31.88d |  |  |  |  |
| 666 | 9.3.5.1 | Scenario(text) | 1d? | 2005-02-05 | 2005-02-05 |  | 31.88d | 0d |  |  |  |
| 667 | 9.3.5.2 | Постановка задач | 1d? | 2005-02-07 | 2005-02-07 | 666 | 31.88d | 0d |  |  |  |
| 668 | 9.3.5.3 | Implimentation | 1d? | 2005-02-08 | 2005-02-08 | 667 | 31.88d | 0d |  |  |  |
| 669 | 9.3.5.4 | Dilogs/VO/Icons/Objects/Animations | 1d? | 2005-02-09 | 2005-02-09 | 668 | 31.88d | 0d |  |  |  |
| 670 | 9.3.5.5 | Настройка | 1d? | 2005-02-10 | 2005-02-10 | 669 | 31.88d |  |  |  |  |
| 672 | 10 | **17_Radar_Monolith_Control_Underground** | 11d? | 2005-02-18 | 2005-03-02 | 594 | 25.88d |  | 2005-04-29 | Джим, Угрюмый | 88h |
| 673 | 10.1 | **LevelDesign** | 11d? | 2005-02-18 | 2005-03-02 |  | 25.88d |  | 2005-04-01 |  |  |
| 674 | 10.1.1 | **Stage 1** | 11d? | 2005-02-18 | 2005-03-02 |  | 25.88d |  |  |  |  |
| 675 | 10.1.1.1 | List of Changes | 2d | 2005-02-18 | 2005-02-19 |  | 25.88d | 0d |  |  |  |
| 676 | 10.1.1.2 | Changed Geometry | 1d? | 2005-02-21 | 2005-02-21 | 675 | 25.88d | 0d |  |  |  |
| 677 | 10.1.1.3 | Check List 1 | 1d? | 2005-02-22 | 2005-02-22 | 676 | 25.88d | 0d |  |  |  |
| 678 | 10.1.1.4 | Check List 2 | 1d? | 2005-02-23 | 2005-02-23 | 677 | 25.88d | 0d |  |  |  |
| 679 | 10.1.1.5 | Check List 3 | 1d? | 2005-02-24 | 2005-02-24 | 678 | 25.88d | 0d |  |  |  |
| 680 | 10.1.1.6 | Check List 4 | 1d? | 2005-02-25 | 2005-02-25 | 679 | 25.88d | 0d |  |  |  |
| 681 | 10.1.1.7 | Render Geometry | 1d? | 2005-02-26 | 2005-02-26 | 680 | 25.88d | 0d |  |  |  |
| 682 | 10.1.1.8 | Grass | 1d? | 2005-02-28 | 2005-02-28 | 681 | 25.88d | 0d |  |  |  |
| 683 | 10.1.1.9 | AI Maps | 1d? | 2005-03-01 | 2005-03-01 | 682 | 25.88d | 0d |  |  |  |
| 684 | 10.1.1.10 | Graphs | 1d? | 2005-03-02 | 2005-03-02 | 683 | 25.88d |  |  |  |  |
| 686 | 10.2 | **GameDesign** | 3d? | 2005-02-18 | 2005-02-21 |  | 57.88d |  |  |  |  |
| 687 | 10.2.1 | **Secrets** | 3d? | 2005-02-18 | 2005-02-21 |  | 57.88d |  |  |  |  |
| 688 | 10.2.1.1 | **Stage 1** | 3d? | 2005-02-18 | 2005-02-21 |  | 57.88d |  |  |  |  |
| 689 | 10.2.1.1.1 | Design | 1d? | 2005-02-18 | 2005-02-18 |  | 57.88d | 0d |  |  |  |
| 690 | 10.2.1.1.2 | Implementation | 1d? | 2005-02-19 | 2005-02-19 | 689 | 57.88d | 0d |  |  |  |
| 691 | 10.2.1.1.3 | Tuning | 1d? | 2005-02-21 | 2005-02-21 | 690 | 57.88d |  |  |  |  |

| ID | WBS | Task | Duration | Start | Finish | Predecessors | Total slack | Free slack |
| --- | --- | --- | --- | --- | --- | --- | --- | --- |
| 692 | 10.2.2 | **Smartterrains** | 3d? | 2005-02-18 | 2005-02-21 |  | 57.88d |  |
| 693 | 10.2.2.1 | **Stage 1** | 3d? | 2005-02-18 | 2005-02-21 |  | 57.88d |  |
| 694 | 10.2.2.1.1 | Design | 1d? | 2005-02-18 | 2005-02-18 |  | 57.88d | 0d |
| 695 | 10.2.2.1.2 | Implementation | 1d? | 2005-02-19 | 2005-02-19 | 694 | 57.88d | 0d |
| 696 | 10.2.2.1.3 | Tuning | 1d? | 2005-02-21 | 2005-02-21 | 695 | 57.88d |  |
| 697 | 10.2.3 | **Monsters/Spawns** | 3d? | 2005-02-18 | 2005-02-21 |  | 57.88d |  |
| 698 | 10.2.3.1 | **Stage 1** | 3d? | 2005-02-18 | 2005-02-21 |  | 57.88d |  |
| 699 | 10.2.3.1.1 | Design | 1d? | 2005-02-18 | 2005-02-18 |  | 57.88d | 0d |
| 700 | 10.2.3.1.2 | Implementation | 1d? | 2005-02-19 | 2005-02-19 | 699 | 57.88d | 0d |
| 701 | 10.2.3.1.3 | Tuning | 1d? | 2005-02-21 | 2005-02-21 | 700 | 57.88d |  |
| 702 | 10.2.4 | **Stalkers/Spawns** | 3d? | 2005-02-18 | 2005-02-21 |  | 57.88d |  |
| 703 | 10.2.4.1 | **Stage 1** | 3d? | 2005-02-18 | 2005-02-21 |  | 57.88d |  |
| 704 | 10.2.4.1.1 | Design | 1d? | 2005-02-18 | 2005-02-18 |  | 57.88d | 0d |
| 705 | 10.2.4.1.2 | Implementation | 1d? | 2005-02-19 | 2005-02-19 | 704 | 57.88d | 0d |
| 706 | 10.2.4.1.3 | Tuning | 1d? | 2005-02-21 | 2005-02-21 | 705 | 57.88d |  |
| 707 | 10.2.5 | **Anomalies/Spawns** | 3d? | 2005-02-18 | 2005-02-21 |  | 57.88d |  |
| 708 | 10.2.5.1 | **Stage 1** | 3d? | 2005-02-18 | 2005-02-21 |  | 57.88d |  |
| 709 | 10.2.5.1.1 | Design | 1d? | 2005-02-18 | 2005-02-18 |  | 57.88d | 0d |
| 710 | 10.2.5.1.2 | Implementation | 1d? | 2005-02-19 | 2005-02-19 | 709 | 57.88d | 0d |
| 711 | 10.2.5.1.3 | Tuning | 1d? | 2005-02-21 | 2005-02-21 | 710 | 57.88d |  |
| 712 | 10.2.6 | **Physicks** | 3d? | 2005-02-18 | 2005-02-21 |  | 57.88d |  |
| 713 | 10.2.6.1 | **Stage 1** | 3d? | 2005-02-18 | 2005-02-21 |  | 57.88d |  |
| 714 | 10.2.6.1.1 | Design | 1d? | 2005-02-18 | 2005-02-18 |  | 57.88d | 0d |
| 715 | 10.2.6.1.2 | Implementation | 1d? | 2005-02-19 | 2005-02-19 | 714 | 57.88d | 0d |
| 716 | 10.2.6.1.3 | Tuning | 1d? | 2005-02-21 | 2005-02-21 | 715 | 57.88d |  |

| ID | WBS | Task | Duration | Start | Finish | Predecessors | Total slack | Free slack |
| --- | --- | --- | --- | --- | --- | --- | --- | --- |
| 718 | 10.3 | **Scripts** | 5d? | 2005-02-18 | 2005-02-23 |  | 55.88d |  |
| 719 | 10.3.1 | **Script 1** | 5d? | 2005-02-18 | 2005-02-23 |  | 55.88d |  |
| 720 | 10.3.1.1 | Scenario(text) | 1d? | 2005-02-18 | 2005-02-18 |  | 55.88d | 0d |
| 721 | 10.3.1.2 | Постановка задач | 1d? | 2005-02-19 | 2005-02-19 | 720 | 55.88d | 0d |
| 722 | 10.3.1.3 | Implimentation | 1d? | 2005-02-21 | 2005-02-21 | 721 | 55.88d | 0d |
| 723 | 10.3.1.4 | Dilogs/VO/Icons/Objects/Animations | 1d? | 2005-02-22 | 2005-02-22 | 722 | 55.88d | 0d |
| 724 | 10.3.1.5 | Настройка | 1d? | 2005-02-23 | 2005-02-23 | 723 | 55.88d |  |
| 725 | 10.3.2 | **Script 2** | 5d? | 2005-02-18 | 2005-02-23 |  | 55.88d |  |
| 726 | 10.3.2.1 | Scenario(text) | 1d? | 2005-02-18 | 2005-02-18 |  | 55.88d | 0d |
| 727 | 10.3.2.2 | Постановка задач | 1d? | 2005-02-19 | 2005-02-19 | 726 | 55.88d | 0d |
| 728 | 10.3.2.3 | Implimentation | 1d? | 2005-02-21 | 2005-02-21 | 727 | 55.88d | 0d |
| 729 | 10.3.2.4 | Dilogs/VO/Icons/Objects/Animations | 1d? | 2005-02-22 | 2005-02-22 | 728 | 55.88d | 0d |
| 730 | 10.3.2.5 | Настройка | 1d? | 2005-02-23 | 2005-02-23 | 729 | 55.88d |  |
| 731 | 10.3.3 | **Script 3** | 5d? | 2005-02-18 | 2005-02-23 |  | 55.88d |  |
| 732 | 10.3.3.1 | Scenario(text) | 1d? | 2005-02-18 | 2005-02-18 |  | 55.88d | 0d |
| 733 | 10.3.3.2 | Постановка задач | 1d? | 2005-02-19 | 2005-02-19 | 732 | 55.88d | 0d |
| 734 | 10.3.3.3 | Implimentation | 1d? | 2005-02-21 | 2005-02-21 | 733 | 55.88d | 0d |
| 735 | 10.3.3.4 | Dilogs/VO/Icons/Objects/Animations | 1d? | 2005-02-22 | 2005-02-22 | 734 | 55.88d | 0d |
| 736 | 10.3.3.5 | Настройка | 1d? | 2005-02-23 | 2005-02-23 | 735 | 55.88d |  |
| 737 | 10.3.4 | **Script 4** | 5d? | 2005-02-18 | 2005-02-23 |  | 55.88d |  |
| 738 | 10.3.4.1 | Scenario(text) | 1d? | 2005-02-18 | 2005-02-18 |  | 55.88d | 0d |
| 739 | 10.3.4.2 | Постановка задач | 1d? | 2005-02-19 | 2005-02-19 | 738 | 55.88d | 0d |
| 740 | 10.3.4.3 | Implimentation | 1d? | 2005-02-21 | 2005-02-21 | 739 | 55.88d | 0d |
| 741 | 10.3.4.4 | Dilogs/VO/Icons/Objects/Animations | 1d? | 2005-02-22 | 2005-02-22 | 740 | 55.88d | 0d |
| 742 | 10.3.4.5 | Настройка | 1d? | 2005-02-23 | 2005-02-23 | 741 | 55.88d |  |

| ID | WBS | Task | Duration | Start | Finish | Predecessors | Total slack | Free slack | Deadline | Resources | Work |
| --- | --- | --- | --- | --- | --- | --- | --- | --- | --- | --- | --- |
| 743 | 10.3.5 | **Script 5** | 5d? | 2005-02-18 | 2005-02-23 |  | 55.88d |  |  |  |  |
| 744 | 10.3.5.1 | Scenario(text) | 1d? | 2005-02-18 | 2005-02-18 |  | 55.88d | 0d |  |  |  |
| 745 | 10.3.5.2 | Постановка задач | 1d? | 2005-02-19 | 2005-02-19 | 744 | 55.88d | 0d |  |  |  |
| 746 | 10.3.5.3 | Implimentation | 1d? | 2005-02-21 | 2005-02-21 | 745 | 55.88d | 0d |  |  |  |
| 747 | 10.3.5.4 | Dilogs/VO/Icons/Objects/Animations | 1d? | 2005-02-22 | 2005-02-22 | 746 | 55.88d | 0d |  |  |  |
| 748 | 10.3.5.5 | Настройка | 1d? | 2005-02-23 | 2005-02-23 | 747 | 55.88d |  |  |  |  |
| 754 | 11 | **08_Rostok_Bar** | 11d? | 2005-01-24 | 2005-02-04 |  | -20.12d | 0d | 2005-02-07 | Коан, Руслан | 88h |
| 755 | 11.1 | **LevelDesign** | 11d? | 2005-01-24 | 2005-02-04 |  | -20.12d | 0d | 2005-02-01 |  |  |
| 756 | 11.1.1 | **Stage 1** | 11d? | 2005-01-24 | 2005-02-04 |  | -20.12d | 0d |  |  |  |
| 757 | 11.1.1.1 | List of Changes | 2d | 2005-01-24 | 2005-01-25 |  | -20.12d | 0d |  |  |  |
| 758 | 11.1.1.2 | Changed Geometry | 1d? | 2005-01-26 | 2005-01-26 | 757 | -20.12d | 0d |  |  |  |
| 759 | 11.1.1.3 | Check List 1 | 1d? | 2005-01-27 | 2005-01-27 | 758 | -20.12d | 0d |  |  |  |
| 760 | 11.1.1.4 | Check List 2 | 1d? | 2005-01-28 | 2005-01-28 | 759 | -20.12d | 0d |  |  |  |
| 761 | 11.1.1.5 | Check List 3 | 1d? | 2005-01-29 | 2005-01-29 | 760 | -20.12d | 0d |  |  |  |
| 762 | 11.1.1.6 | Check List 4 | 1d? | 2005-01-31 | 2005-01-31 | 761 | -20.12d | 0d |  |  |  |
| 763 | 11.1.1.7 | Render Geometry | 1d? | 2005-02-01 | 2005-02-01 | 762 | -20.12d | 0d |  |  |  |
| 764 | 11.1.1.8 | Grass | 1d? | 2005-02-02 | 2005-02-02 | 763 | -20.12d | 0d |  |  |  |
| 765 | 11.1.1.9 | AI Maps | 1d? | 2005-02-03 | 2005-02-03 | 764 | -20.12d | 0d |  |  |  |
| 766 | 11.1.1.10 | Graphs | 1d? | 2005-02-04 | 2005-02-04 | 765 | -20.12d | 0d |  |  |  |
| 768 | 11.2 | **GameDesign** | 3d? | 2005-01-24 | 2005-01-26 |  | -12.12d | 0d |  |  |  |
| 769 | 11.2.1 | **Secrets** | 3d? | 2005-01-24 | 2005-01-26 |  | -12.12d | 0d |  |  |  |
| 770 | 11.2.1.1 | **Stage 1** | 3d? | 2005-01-24 | 2005-01-26 |  | -12.12d | 0d |  |  |  |
| 771 | 11.2.1.1.1 | Design | 1d? | 2005-01-24 | 2005-01-24 |  | -12.12d | 0d |  |  |  |
| 772 | 11.2.1.1.2 | Implementation | 1d? | 2005-01-25 | 2005-01-25 | 771 | -12.12d | 0d |  |  |  |
| 773 | 11.2.1.1.3 | Tuning | 1d? | 2005-01-26 | 2005-01-26 | 772 | -12.12d | 0d |  |  |  |

| ID | WBS | Task | Duration | Start | Finish | Predecessors | Total slack | Free slack |
| --- | --- | --- | --- | --- | --- | --- | --- | --- |
| 774 | 11.2.2 | **Smartterrains** | 3d? | 2005-01-24 | 2005-01-26 |  | -12.12d | 0d |
| 775 | 11.2.2.1 | **Stage 1** | 3d? | 2005-01-24 | 2005-01-26 |  | -12.12d | 0d |
| 776 | 11.2.2.1.1 | Design | 1d? | 2005-01-24 | 2005-01-24 |  | -12.12d | 0d |
| 777 | 11.2.2.1.2 | Implementation | 1d? | 2005-01-25 | 2005-01-25 | 776 | -12.12d | 0d |
| 778 | 11.2.2.1.3 | Tuning | 1d? | 2005-01-26 | 2005-01-26 | 777 | -12.12d | 0d |
| 779 | 11.2.3 | **Monsters/Spawns** | 3d? | 2005-01-24 | 2005-01-26 |  | -12.12d | 0d |
| 780 | 11.2.3.1 | **Stage 1** | 3d? | 2005-01-24 | 2005-01-26 |  | -12.12d | 0d |
| 781 | 11.2.3.1.1 | Design | 1d? | 2005-01-24 | 2005-01-24 |  | -12.12d | 0d |
| 782 | 11.2.3.1.2 | Implementation | 1d? | 2005-01-25 | 2005-01-25 | 781 | -12.12d | 0d |
| 783 | 11.2.3.1.3 | Tuning | 1d? | 2005-01-26 | 2005-01-26 | 782 | -12.12d | 0d |
| 784 | 11.2.4 | **Stalkers/Spawns** | 3d? | 2005-01-24 | 2005-01-26 |  | -12.12d | 0d |
| 785 | 11.2.4.1 | **Stage 1** | 3d? | 2005-01-24 | 2005-01-26 |  | -12.12d | 0d |
| 786 | 11.2.4.1.1 | Design | 1d? | 2005-01-24 | 2005-01-24 |  | -12.12d | 0d |
| 787 | 11.2.4.1.2 | Implementation | 1d? | 2005-01-25 | 2005-01-25 | 786 | -12.12d | 0d |
| 788 | 11.2.4.1.3 | Tuning | 1d? | 2005-01-26 | 2005-01-26 | 787 | -12.12d | 0d |
| 789 | 11.2.5 | **Anomalies/Spawns** | 3d? | 2005-01-24 | 2005-01-26 |  | -12.12d | 0d |
| 790 | 11.2.5.1 | **Stage 1** | 3d? | 2005-01-24 | 2005-01-26 |  | -12.12d | 0d |
| 791 | 11.2.5.1.1 | Design | 1d? | 2005-01-24 | 2005-01-24 |  | -12.12d | 0d |
| 792 | 11.2.5.1.2 | Implementation | 1d? | 2005-01-25 | 2005-01-25 | 791 | -12.12d | 0d |
| 793 | 11.2.5.1.3 | Tuning | 1d? | 2005-01-26 | 2005-01-26 | 792 | -12.12d | 0d |
| 794 | 11.2.6 | **Physicks** | 3d? | 2005-01-24 | 2005-01-26 |  | -12.12d | 0d |
| 795 | 11.2.6.1 | **Stage 1** | 3d? | 2005-01-24 | 2005-01-26 |  | -12.12d | 0d |
| 796 | 11.2.6.1.1 | Design | 1d? | 2005-01-24 | 2005-01-24 |  | -12.12d | 0d |
| 797 | 11.2.6.1.2 | Implementation | 1d? | 2005-01-25 | 2005-01-25 | 796 | -12.12d | 0d |
| 798 | 11.2.6.1.3 | Tuning | 1d? | 2005-01-26 | 2005-01-26 | 797 | -12.12d | 0d |

| ID | WBS | Task | Duration | Start | Finish | Predecessors | Total slack | Free slack |
| --- | --- | --- | --- | --- | --- | --- | --- | --- |
| 800 | 11.3 | **Scripts** | 5d? | 2005-01-24 | 2005-01-28 |  | -14.12d | 0d |
| 801 | 11.3.1 | **Script 1** | 5d? | 2005-01-24 | 2005-01-28 |  | -14.12d | 0d |
| 802 | 11.3.1.1 | Scenario(text) | 1d? | 2005-01-24 | 2005-01-24 |  | -14.12d | 0d |
| 803 | 11.3.1.2 | Постановка задач | 1d? | 2005-01-25 | 2005-01-25 | 802 | -14.12d | 0d |
| 804 | 11.3.1.3 | Implimentation | 1d? | 2005-01-26 | 2005-01-26 | 803 | -14.12d | 0d |
| 805 | 11.3.1.4 | Dilogs/VO/Icons/Objects/Animations | 1d? | 2005-01-27 | 2005-01-27 | 804 | -14.12d | 0d |
| 806 | 11.3.1.5 | Настройка | 1d? | 2005-01-28 | 2005-01-28 | 805 | -14.12d | 0d |
| 807 | 11.3.2 | **Script 2** | 5d? | 2005-01-24 | 2005-01-28 |  | -14.12d | 0d |
| 808 | 11.3.2.1 | Scenario(text) | 1d? | 2005-01-24 | 2005-01-24 |  | -14.12d | 0d |
| 809 | 11.3.2.2 | Постановка задач | 1d? | 2005-01-25 | 2005-01-25 | 808 | -14.12d | 0d |
| 810 | 11.3.2.3 | Implimentation | 1d? | 2005-01-26 | 2005-01-26 | 809 | -14.12d | 0d |
| 811 | 11.3.2.4 | Dilogs/VO/Icons/Objects/Animations | 1d? | 2005-01-27 | 2005-01-27 | 810 | -14.12d | 0d |
| 812 | 11.3.2.5 | Настройка | 1d? | 2005-01-28 | 2005-01-28 | 811 | -14.12d | 0d |
| 813 | 11.3.3 | **Script 3** | 5d? | 2005-01-24 | 2005-01-28 |  | -14.12d | 0d |
| 814 | 11.3.3.1 | Scenario(text) | 1d? | 2005-01-24 | 2005-01-24 |  | -14.12d | 0d |
| 815 | 11.3.3.2 | Постановка задач | 1d? | 2005-01-25 | 2005-01-25 | 814 | -14.12d | 0d |
| 816 | 11.3.3.3 | Implimentation | 1d? | 2005-01-26 | 2005-01-26 | 815 | -14.12d | 0d |
| 817 | 11.3.3.4 | Dilogs/VO/Icons/Objects/Animations | 1d? | 2005-01-27 | 2005-01-27 | 816 | -14.12d | 0d |
| 818 | 11.3.3.5 | Настройка | 1d? | 2005-01-28 | 2005-01-28 | 817 | -14.12d | 0d |
| 819 | 11.3.4 | **Script 4** | 5d? | 2005-01-24 | 2005-01-28 |  | -14.12d | 0d |
| 820 | 11.3.4.1 | Scenario(text) | 1d? | 2005-01-24 | 2005-01-24 |  | -14.12d | 0d |
| 821 | 11.3.4.2 | Постановка задач | 1d? | 2005-01-25 | 2005-01-25 | 820 | -14.12d | 0d |
| 822 | 11.3.4.3 | Implimentation | 1d? | 2005-01-26 | 2005-01-26 | 821 | -14.12d | 0d |
| 823 | 11.3.4.4 | Dilogs/VO/Icons/Objects/Animations | 1d? | 2005-01-27 | 2005-01-27 | 822 | -14.12d | 0d |
| 824 | 11.3.4.5 | Настройка | 1d? | 2005-01-28 | 2005-01-28 | 823 | -14.12d | 0d |

| ID | WBS | Task | Duration | Start | Finish | Predecessors | Total slack | Free slack | Deadline | Resources | Work |
| --- | --- | --- | --- | --- | --- | --- | --- | --- | --- | --- | --- |
| 825 | 11.3.5 | **Script 5** | 5d? | 2005-01-24 | 2005-01-28 |  | -14.12d | 0d |  |  |  |
| 826 | 11.3.5.1 | Scenario(text) | 1d? | 2005-01-24 | 2005-01-24 |  | -14.12d | 0d |  |  |  |
| 827 | 11.3.5.2 | Постановка задач | 1d? | 2005-01-25 | 2005-01-25 | 826 | -14.12d | 0d |  |  |  |
| 828 | 11.3.5.3 | Implimentation | 1d? | 2005-01-26 | 2005-01-26 | 827 | -14.12d | 0d |  |  |  |
| 829 | 11.3.5.4 | Dilogs/VO/Icons/Objects/Animations | 1d? | 2005-01-27 | 2005-01-27 | 828 | -14.12d | 0d |  |  |  |
| 830 | 11.3.5.5 | Настройка | 1d? | 2005-01-28 | 2005-01-28 | 829 | -14.12d | 0d |  |  |  |
| 832 | 12 | **09_Rostok_Dolg** | 11d? | 2005-02-05 | 2005-02-17 | 754 | -20.12d | 0d | 2005-02-15 | Коан, Руслан | 88h |
| 833 | 12.1 | **LevelDesign** | 11d? | 2005-02-05 | 2005-02-17 |  | -20.12d | 0d | 2005-02-07 |  |  |
| 834 | 12.1.1 | **Stage 1** | 11d? | 2005-02-05 | 2005-02-17 |  | -20.12d | 0d |  |  |  |
| 835 | 12.1.1.1 | List of Changes | 2d | 2005-02-05 | 2005-02-07 |  | -20.12d | 0d |  |  |  |
| 836 | 12.1.1.2 | Changed Geometry | 1d? | 2005-02-08 | 2005-02-08 | 835 | -20.12d | 0d |  |  |  |
| 837 | 12.1.1.3 | Check List 1 | 1d? | 2005-02-09 | 2005-02-09 | 836 | -20.12d | 0d |  |  |  |
| 838 | 12.1.1.4 | Check List 2 | 1d? | 2005-02-10 | 2005-02-10 | 837 | -20.12d | 0d |  |  |  |
| 839 | 12.1.1.5 | Check List 3 | 1d? | 2005-02-11 | 2005-02-11 | 838 | -20.12d | 0d |  |  |  |
| 840 | 12.1.1.6 | Check List 4 | 1d? | 2005-02-12 | 2005-02-12 | 839 | -20.12d | 0d |  |  |  |
| 841 | 12.1.1.7 | Render Geometry | 1d? | 2005-02-14 | 2005-02-14 | 840 | -20.12d | 0d |  |  |  |
| 842 | 12.1.1.8 | Grass | 1d? | 2005-02-15 | 2005-02-15 | 841 | -20.12d | 0d |  |  |  |
| 843 | 12.1.1.9 | AI Maps | 1d? | 2005-02-16 | 2005-02-16 | 842 | -20.12d | 0d |  |  |  |
| 844 | 12.1.1.10 | Graphs | 1d? | 2005-02-17 | 2005-02-17 | 843 | -20.12d | 0d |  |  |  |
| 846 | 12.2 | **GameDesign** | 3d? | 2005-02-05 | 2005-02-08 |  | -12.12d | 0d |  |  |  |
| 847 | 12.2.1 | **Secrets** | 3d? | 2005-02-05 | 2005-02-08 |  | -12.12d | 0d |  |  |  |
| 848 | 12.2.1.1 | **Stage 1** | 3d? | 2005-02-05 | 2005-02-08 |  | -12.12d | 0d |  |  |  |
| 849 | 12.2.1.1.1 | Design | 1d? | 2005-02-05 | 2005-02-05 |  | -12.12d | 0d |  |  |  |
| 850 | 12.2.1.1.2 | Implementation | 1d? | 2005-02-07 | 2005-02-07 | 849 | -12.12d | 0d |  |  |  |
| 851 | 12.2.1.1.3 | Tuning | 1d? | 2005-02-08 | 2005-02-08 | 850 | -12.12d | 0d |  |  |  |

| ID | WBS | Task | Duration | Start | Finish | Predecessors | Total slack | Free slack |
| --- | --- | --- | --- | --- | --- | --- | --- | --- |
| 852 | 12.2.2 | **Smartterrains** | 3d? | 2005-02-05 | 2005-02-08 |  | -12.12d | 0d |
| 853 | 12.2.2.1 | **Stage 1** | 3d? | 2005-02-05 | 2005-02-08 |  | -12.12d | 0d |
| 854 | 12.2.2.1.1 | Design | 1d? | 2005-02-05 | 2005-02-05 |  | -12.12d | 0d |
| 855 | 12.2.2.1.2 | Implementation | 1d? | 2005-02-07 | 2005-02-07 | 854 | -12.12d | 0d |
| 856 | 12.2.2.1.3 | Tuning | 1d? | 2005-02-08 | 2005-02-08 | 855 | -12.12d | 0d |
| 857 | 12.2.3 | **Monsters/Spawns** | 3d? | 2005-02-05 | 2005-02-08 |  | -12.12d | 0d |
| 858 | 12.2.3.1 | **Stage 1** | 3d? | 2005-02-05 | 2005-02-08 |  | -12.12d | 0d |
| 859 | 12.2.3.1.1 | Design | 1d? | 2005-02-05 | 2005-02-05 |  | -12.12d | 0d |
| 860 | 12.2.3.1.2 | Implementation | 1d? | 2005-02-07 | 2005-02-07 | 859 | -12.12d | 0d |
| 861 | 12.2.3.1.3 | Tuning | 1d? | 2005-02-08 | 2005-02-08 | 860 | -12.12d | 0d |
| 862 | 12.2.4 | **Stalkers/Spawns** | 3d? | 2005-02-05 | 2005-02-08 |  | -12.12d | 0d |
| 863 | 12.2.4.1 | **Stage 1** | 3d? | 2005-02-05 | 2005-02-08 |  | -12.12d | 0d |
| 864 | 12.2.4.1.1 | Design | 1d? | 2005-02-05 | 2005-02-05 |  | -12.12d | 0d |
| 865 | 12.2.4.1.2 | Implementation | 1d? | 2005-02-07 | 2005-02-07 | 864 | -12.12d | 0d |
| 866 | 12.2.4.1.3 | Tuning | 1d? | 2005-02-08 | 2005-02-08 | 865 | -12.12d | 0d |
| 867 | 12.2.5 | **Anomalies/Spawns** | 3d? | 2005-02-05 | 2005-02-08 |  | -12.12d | 0d |
| 868 | 12.2.5.1 | **Stage 1** | 3d? | 2005-02-05 | 2005-02-08 |  | -12.12d | 0d |
| 869 | 12.2.5.1.1 | Design | 1d? | 2005-02-05 | 2005-02-05 |  | -12.12d | 0d |
| 870 | 12.2.5.1.2 | Implementation | 1d? | 2005-02-07 | 2005-02-07 | 869 | -12.12d | 0d |
| 871 | 12.2.5.1.3 | Tuning | 1d? | 2005-02-08 | 2005-02-08 | 870 | -12.12d | 0d |
| 872 | 12.2.6 | **Physicks** | 3d? | 2005-02-05 | 2005-02-08 |  | -12.12d | 0d |
| 873 | 12.2.6.1 | **Stage 1** | 3d? | 2005-02-05 | 2005-02-08 |  | -12.12d | 0d |
| 874 | 12.2.6.1.1 | Design | 1d? | 2005-02-05 | 2005-02-05 |  | -12.12d | 0d |
| 875 | 12.2.6.1.2 | Implementation | 1d? | 2005-02-07 | 2005-02-07 | 874 | -12.12d | 0d |
| 876 | 12.2.6.1.3 | Tuning | 1d? | 2005-02-08 | 2005-02-08 | 875 | -12.12d | 0d |

| ID | WBS | Task | Duration | Start | Finish | Predecessors | Total slack | Free slack |
| --- | --- | --- | --- | --- | --- | --- | --- | --- |
| 878 | 12.3 | **Scripts** | 5d? | 2005-02-05 | 2005-02-10 |  | -14.12d | 0d |
| 879 | 12.3.1 | **Script 1** | 5d? | 2005-02-05 | 2005-02-10 |  | -14.12d | 0d |
| 880 | 12.3.1.1 | Scenario(text) | 1d? | 2005-02-05 | 2005-02-05 |  | -14.12d | 0d |
| 881 | 12.3.1.2 | Постановка задач | 1d? | 2005-02-07 | 2005-02-07 | 880 | -14.12d | 0d |
| 882 | 12.3.1.3 | Implimentation | 1d? | 2005-02-08 | 2005-02-08 | 881 | -14.12d | 0d |
| 883 | 12.3.1.4 | Dilogs/VO/Icons/Objects/Animations | 1d? | 2005-02-09 | 2005-02-09 | 882 | -14.12d | 0d |
| 884 | 12.3.1.5 | Настройка | 1d? | 2005-02-10 | 2005-02-10 | 883 | -14.12d | 0d |
| 885 | 12.3.2 | **Script 2** | 5d? | 2005-02-05 | 2005-02-10 |  | -14.12d | 0d |
| 886 | 12.3.2.1 | Scenario(text) | 1d? | 2005-02-05 | 2005-02-05 |  | -14.12d | 0d |
| 887 | 12.3.2.2 | Постановка задач | 1d? | 2005-02-07 | 2005-02-07 | 886 | -14.12d | 0d |
| 888 | 12.3.2.3 | Implimentation | 1d? | 2005-02-08 | 2005-02-08 | 887 | -14.12d | 0d |
| 889 | 12.3.2.4 | Dilogs/VO/Icons/Objects/Animations | 1d? | 2005-02-09 | 2005-02-09 | 888 | -14.12d | 0d |
| 890 | 12.3.2.5 | Настройка | 1d? | 2005-02-10 | 2005-02-10 | 889 | -14.12d | 0d |
| 891 | 12.3.3 | **Script 3** | 5d? | 2005-02-05 | 2005-02-10 |  | -14.12d | 0d |
| 892 | 12.3.3.1 | Scenario(text) | 1d? | 2005-02-05 | 2005-02-05 |  | -14.12d | 0d |
| 893 | 12.3.3.2 | Постановка задач | 1d? | 2005-02-07 | 2005-02-07 | 892 | -14.12d | 0d |
| 894 | 12.3.3.3 | Implimentation | 1d? | 2005-02-08 | 2005-02-08 | 893 | -14.12d | 0d |
| 895 | 12.3.3.4 | Dilogs/VO/Icons/Objects/Animations | 1d? | 2005-02-09 | 2005-02-09 | 894 | -14.12d | 0d |
| 896 | 12.3.3.5 | Настройка | 1d? | 2005-02-10 | 2005-02-10 | 895 | -14.12d | 0d |
| 897 | 12.3.4 | **Script 4** | 5d? | 2005-02-05 | 2005-02-10 |  | -14.12d | 0d |
| 898 | 12.3.4.1 | Scenario(text) | 1d? | 2005-02-05 | 2005-02-05 |  | -14.12d | 0d |
| 899 | 12.3.4.2 | Постановка задач | 1d? | 2005-02-07 | 2005-02-07 | 898 | -14.12d | 0d |
| 900 | 12.3.4.3 | Implimentation | 1d? | 2005-02-08 | 2005-02-08 | 899 | -14.12d | 0d |
| 901 | 12.3.4.4 | Dilogs/VO/Icons/Objects/Animations | 1d? | 2005-02-09 | 2005-02-09 | 900 | -14.12d | 0d |
| 902 | 12.3.4.5 | Настройка | 1d? | 2005-02-10 | 2005-02-10 | 901 | -14.12d | 0d |

| ID | WBS | Task | Duration | Start | Finish | Predecessors | Total slack | Free slack | Deadline | Resources | Work |
| --- | --- | --- | --- | --- | --- | --- | --- | --- | --- | --- | --- |
| 903 | 12.3.5 | **Script 5** | 5d? | 2005-02-05 | 2005-02-10 |  | -14.12d | 0d |  |  |  |
| 904 | 12.3.5.1 | Scenario(text) | 1d? | 2005-02-05 | 2005-02-05 |  | -14.12d | 0d |  |  |  |
| 905 | 12.3.5.2 | Постановка задач | 1d? | 2005-02-07 | 2005-02-07 | 904 | -14.12d | 0d |  |  |  |
| 906 | 12.3.5.3 | Implimentation | 1d? | 2005-02-08 | 2005-02-08 | 905 | -14.12d | 0d |  |  |  |
| 907 | 12.3.5.4 | Dilogs/VO/Icons/Objects/Animations | 1d? | 2005-02-09 | 2005-02-09 | 906 | -14.12d | 0d |  |  |  |
| 908 | 12.3.5.5 | Настройка | 1d? | 2005-02-10 | 2005-02-10 | 907 | -14.12d | 0d |  |  |  |
| 911 | 13 | **07_Rostok** | 11d? | 2005-02-18 | 2005-03-02 | 832 | -20.12d | 0d | 2005-03-15 | Коан, Руслан | 88h |
| 912 | 13.1 | **LevelDesign** | 11d? | 2005-02-18 | 2005-03-02 |  | -20.12d | 0d | 2005-02-07 |  |  |
| 913 | 13.1.1 | **Stage 1** | 11d? | 2005-02-18 | 2005-03-02 |  | -20.12d | 0d |  |  |  |
| 914 | 13.1.1.1 | List of Changes | 2d | 2005-02-18 | 2005-02-19 |  | -20.12d | 0d |  |  |  |
| 915 | 13.1.1.2 | Changed Geometry | 1d? | 2005-02-21 | 2005-02-21 | 914 | -20.12d | 0d |  |  |  |
| 916 | 13.1.1.3 | Check List 1 | 1d? | 2005-02-22 | 2005-02-22 | 915 | -20.12d | 0d |  |  |  |
| 917 | 13.1.1.4 | Check List 2 | 1d? | 2005-02-23 | 2005-02-23 | 916 | -20.12d | 0d |  |  |  |
| 918 | 13.1.1.5 | Check List 3 | 1d? | 2005-02-24 | 2005-02-24 | 917 | -20.12d | 0d |  |  |  |
| 919 | 13.1.1.6 | Check List 4 | 1d? | 2005-02-25 | 2005-02-25 | 918 | -20.12d | 0d |  |  |  |
| 920 | 13.1.1.7 | Render Geometry | 1d? | 2005-02-26 | 2005-02-26 | 919 | -20.12d | 0d |  |  |  |
| 921 | 13.1.1.8 | Grass | 1d? | 2005-02-28 | 2005-02-28 | 920 | -20.12d | 0d |  |  |  |
| 922 | 13.1.1.9 | AI Maps | 1d? | 2005-03-01 | 2005-03-01 | 921 | -20.12d | 0d |  |  |  |
| 923 | 13.1.1.10 | Graphs | 1d? | 2005-03-02 | 2005-03-02 | 922 | -20.12d | 0d |  |  |  |
| 925 | 13.2 | **GameDesign** | 3d? | 2005-02-18 | 2005-02-21 |  | 7.88d |  |  |  |  |
| 926 | 13.2.1 | **Secrets** | 3d? | 2005-02-18 | 2005-02-21 |  | 7.88d |  |  |  |  |
| 927 | 13.2.1.1 | **Stage 1** | 3d? | 2005-02-18 | 2005-02-21 |  | 7.88d |  |  |  |  |
| 928 | 13.2.1.1.1 | Design | 1d? | 2005-02-18 | 2005-02-18 |  | 7.88d | 0d |  |  |  |
| 929 | 13.2.1.1.2 | Implementation | 1d? | 2005-02-19 | 2005-02-19 | 928 | 7.88d | 0d |  |  |  |
| 930 | 13.2.1.1.3 | Tuning | 1d? | 2005-02-21 | 2005-02-21 | 929 | 7.88d |  |  |  |  |

| ID | WBS | Task | Duration | Start | Finish | Predecessors | Total slack | Free slack |
| --- | --- | --- | --- | --- | --- | --- | --- | --- |
| 931 | 13.2.2 | **Smartterrains** | 3d? | 2005-02-18 | 2005-02-21 |  | 7.88d |  |
| 932 | 13.2.2.1 | **Stage 1** | 3d? | 2005-02-18 | 2005-02-21 |  | 7.88d |  |
| 933 | 13.2.2.1.1 | Design | 1d? | 2005-02-18 | 2005-02-18 |  | 7.88d | 0d |
| 934 | 13.2.2.1.2 | Implementation | 1d? | 2005-02-19 | 2005-02-19 | 933 | 7.88d | 0d |
| 935 | 13.2.2.1.3 | Tuning | 1d? | 2005-02-21 | 2005-02-21 | 934 | 7.88d |  |
| 936 | 13.2.3 | **Monsters/Spawns** | 3d? | 2005-02-18 | 2005-02-21 |  | 7.88d |  |
| 937 | 13.2.3.1 | **Stage 1** | 3d? | 2005-02-18 | 2005-02-21 |  | 7.88d |  |
| 938 | 13.2.3.1.1 | Design | 1d? | 2005-02-18 | 2005-02-18 |  | 7.88d | 0d |
| 939 | 13.2.3.1.2 | Implementation | 1d? | 2005-02-19 | 2005-02-19 | 938 | 7.88d | 0d |
| 940 | 13.2.3.1.3 | Tuning | 1d? | 2005-02-21 | 2005-02-21 | 939 | 7.88d |  |
| 941 | 13.2.4 | **Stalkers/Spawns** | 3d? | 2005-02-18 | 2005-02-21 |  | 7.88d |  |
| 942 | 13.2.4.1 | **Stage 1** | 3d? | 2005-02-18 | 2005-02-21 |  | 7.88d |  |
| 943 | 13.2.4.1.1 | Design | 1d? | 2005-02-18 | 2005-02-18 |  | 7.88d | 0d |
| 944 | 13.2.4.1.2 | Implementation | 1d? | 2005-02-19 | 2005-02-19 | 943 | 7.88d | 0d |
| 945 | 13.2.4.1.3 | Tuning | 1d? | 2005-02-21 | 2005-02-21 | 944 | 7.88d |  |
| 946 | 13.2.5 | **Anomalies/Spawns** | 3d? | 2005-02-18 | 2005-02-21 |  | 7.88d |  |
| 947 | 13.2.5.1 | **Stage 1** | 3d? | 2005-02-18 | 2005-02-21 |  | 7.88d |  |
| 948 | 13.2.5.1.1 | Design | 1d? | 2005-02-18 | 2005-02-18 |  | 7.88d | 0d |
| 949 | 13.2.5.1.2 | Implementation | 1d? | 2005-02-19 | 2005-02-19 | 948 | 7.88d | 0d |
| 950 | 13.2.5.1.3 | Tuning | 1d? | 2005-02-21 | 2005-02-21 | 949 | 7.88d |  |
| 951 | 13.2.6 | **Physicks** | 3d? | 2005-02-18 | 2005-02-21 |  | 7.88d |  |
| 952 | 13.2.6.1 | **Stage 1** | 3d? | 2005-02-18 | 2005-02-21 |  | 7.88d |  |
| 953 | 13.2.6.1.1 | Design | 1d? | 2005-02-18 | 2005-02-18 |  | 7.88d | 0d |
| 954 | 13.2.6.1.2 | Implementation | 1d? | 2005-02-19 | 2005-02-19 | 953 | 7.88d | 0d |
| 955 | 13.2.6.1.3 | Tuning | 1d? | 2005-02-21 | 2005-02-21 | 954 | 7.88d |  |

| ID | WBS | Task | Duration | Start | Finish | Predecessors | Total slack | Free slack |
| --- | --- | --- | --- | --- | --- | --- | --- | --- |
| 957 | 13.3 | **Scripts** | 5d? | 2005-02-18 | 2005-02-23 |  | 5.88d |  |
| 958 | 13.3.1 | **Script 1** | 5d? | 2005-02-18 | 2005-02-23 |  | 5.88d |  |
| 959 | 13.3.1.1 | Scenario(text) | 1d? | 2005-02-18 | 2005-02-18 |  | 5.88d | 0d |
| 960 | 13.3.1.2 | Постановка задач | 1d? | 2005-02-19 | 2005-02-19 | 959 | 5.88d | 0d |
| 961 | 13.3.1.3 | Implimentation | 1d? | 2005-02-21 | 2005-02-21 | 960 | 5.88d | 0d |
| 962 | 13.3.1.4 | Dilogs/VO/Icons/Objects/Animations | 1d? | 2005-02-22 | 2005-02-22 | 961 | 5.88d | 0d |
| 963 | 13.3.1.5 | Настройка | 1d? | 2005-02-23 | 2005-02-23 | 962 | 5.88d |  |
| 964 | 13.3.2 | **Script 2** | 5d? | 2005-02-18 | 2005-02-23 |  | 5.88d |  |
| 965 | 13.3.2.1 | Scenario(text) | 1d? | 2005-02-18 | 2005-02-18 |  | 5.88d | 0d |
| 966 | 13.3.2.2 | Постановка задач | 1d? | 2005-02-19 | 2005-02-19 | 965 | 5.88d | 0d |
| 967 | 13.3.2.3 | Implimentation | 1d? | 2005-02-21 | 2005-02-21 | 966 | 5.88d | 0d |
| 968 | 13.3.2.4 | Dilogs/VO/Icons/Objects/Animations | 1d? | 2005-02-22 | 2005-02-22 | 967 | 5.88d | 0d |
| 969 | 13.3.2.5 | Настройка | 1d? | 2005-02-23 | 2005-02-23 | 968 | 5.88d |  |
| 970 | 13.3.3 | **Script 3** | 5d? | 2005-02-18 | 2005-02-23 |  | 5.88d |  |
| 971 | 13.3.3.1 | Scenario(text) | 1d? | 2005-02-18 | 2005-02-18 |  | 5.88d | 0d |
| 972 | 13.3.3.2 | Постановка задач | 1d? | 2005-02-19 | 2005-02-19 | 971 | 5.88d | 0d |
| 973 | 13.3.3.3 | Implimentation | 1d? | 2005-02-21 | 2005-02-21 | 972 | 5.88d | 0d |
| 974 | 13.3.3.4 | Dilogs/VO/Icons/Objects/Animations | 1d? | 2005-02-22 | 2005-02-22 | 973 | 5.88d | 0d |
| 975 | 13.3.3.5 | Настройка | 1d? | 2005-02-23 | 2005-02-23 | 974 | 5.88d |  |
| 976 | 13.3.4 | **Script 4** | 5d? | 2005-02-18 | 2005-02-23 |  | 5.88d |  |
| 977 | 13.3.4.1 | Scenario(text) | 1d? | 2005-02-18 | 2005-02-18 |  | 5.88d | 0d |
| 978 | 13.3.4.2 | Постановка задач | 1d? | 2005-02-19 | 2005-02-19 | 977 | 5.88d | 0d |
| 979 | 13.3.4.3 | Implimentation | 1d? | 2005-02-21 | 2005-02-21 | 978 | 5.88d | 0d |
| 980 | 13.3.4.4 | Dilogs/VO/Icons/Objects/Animations | 1d? | 2005-02-22 | 2005-02-22 | 979 | 5.88d | 0d |
| 981 | 13.3.4.5 | Настройка | 1d? | 2005-02-23 | 2005-02-23 | 980 | 5.88d |  |

| ID | WBS | Task | Duration | Start | Finish | Predecessors | Total slack | Free slack | Deadline | Resources | Work |
| --- | --- | --- | --- | --- | --- | --- | --- | --- | --- | --- | --- |
| 982 | 13.3.5 | **Script 5** | 5d? | 2005-02-18 | 2005-02-23 |  | 5.88d |  |  |  |  |
| 983 | 13.3.5.1 | Scenario(text) | 1d? | 2005-02-18 | 2005-02-18 |  | 5.88d | 0d |  |  |  |
| 984 | 13.3.5.2 | Постановка задач | 1d? | 2005-02-19 | 2005-02-19 | 983 | 5.88d | 0d |  |  |  |
| 985 | 13.3.5.3 | Implimentation | 1d? | 2005-02-21 | 2005-02-21 | 984 | 5.88d | 0d |  |  |  |
| 986 | 13.3.5.4 | Dilogs/VO/Icons/Objects/Animations | 1d? | 2005-02-22 | 2005-02-22 | 985 | 5.88d | 0d |  |  |  |
| 987 | 13.3.5.5 | Настройка | 1d? | 2005-02-23 | 2005-02-23 | 986 | 5.88d |  |  |  |  |
| 989 | 14 | **11_Yantar** | 11d? | 2005-03-03 | 2005-03-15 | 911 | -0.12d | 0d | 2005-04-15 | Коан, Руслан | 88h |
| 990 | 14.1 | **LevelDesign** | 11d? | 2005-03-03 | 2005-03-15 |  | -0.12d | 0d | 2005-03-15 |  |  |
| 991 | 14.1.1 | **Stage 1** | 11d? | 2005-03-03 | 2005-03-15 |  | -0.12d | 0d |  |  |  |
| 992 | 14.1.1.1 | List of Changes | 2d | 2005-03-03 | 2005-03-04 |  | -0.12d | 0d |  |  |  |
| 993 | 14.1.1.2 | Changed Geometry | 1d? | 2005-03-05 | 2005-03-05 | 992 | -0.12d | 0d |  |  |  |
| 994 | 14.1.1.3 | Check List 1 | 1d? | 2005-03-07 | 2005-03-07 | 993 | -0.12d | 0d |  |  |  |
| 995 | 14.1.1.4 | Check List 2 | 1d? | 2005-03-08 | 2005-03-08 | 994 | -0.12d | 0d |  |  |  |
| 996 | 14.1.1.5 | Check List 3 | 1d? | 2005-03-09 | 2005-03-09 | 995 | -0.12d | 0d |  |  |  |
| 997 | 14.1.1.6 | Check List 4 | 1d? | 2005-03-10 | 2005-03-10 | 996 | -0.12d | 0d |  |  |  |
| 998 | 14.1.1.7 | Render Geometry | 1d? | 2005-03-11 | 2005-03-11 | 997 | -0.12d | 0d |  |  |  |
| 999 | 14.1.1.8 | Grass | 1d? | 2005-03-12 | 2005-03-12 | 998 | -0.12d | 0d |  |  |  |
| 1000 | 14.1.1.9 | AI Maps | 1d? | 2005-03-14 | 2005-03-14 | 999 | -0.12d | 0d |  |  |  |
| 1001 | 14.1.1.10 | Graphs | 1d? | 2005-03-15 | 2005-03-15 | 1000 | -0.12d | 0d |  |  |  |
| 1003 | 14.2 | **GameDesign** | 3d? | 2005-03-03 | 2005-03-05 |  | 23.88d |  |  |  |  |
| 1004 | 14.2.1 | **Secrets** | 3d? | 2005-03-03 | 2005-03-05 |  | 23.88d |  |  |  |  |
| 1005 | 14.2.1.1 | **Stage 1** | 3d? | 2005-03-03 | 2005-03-05 |  | 23.88d |  |  |  |  |
| 1006 | 14.2.1.1.1 | Design | 1d? | 2005-03-03 | 2005-03-03 |  | 23.88d | 0d |  |  |  |
| 1007 | 14.2.1.1.2 | Implementation | 1d? | 2005-03-04 | 2005-03-04 | 1006 | 23.88d | 0d |  |  |  |
| 1008 | 14.2.1.1.3 | Tuning | 1d? | 2005-03-05 | 2005-03-05 | 1007 | 23.88d |  |  |  |  |

| ID | WBS | Task | Duration | Start | Finish | Predecessors | Total slack | Free slack |
| --- | --- | --- | --- | --- | --- | --- | --- | --- |
| 1009 | 14.2.2 | **Smartterrains** | 3d? | 2005-03-03 | 2005-03-05 |  | 23.88d |  |
| 1010 | 14.2.2.1 | **Stage 1** | 3d? | 2005-03-03 | 2005-03-05 |  | 23.88d |  |
| 1011 | 14.2.2.1.1 | Design | 1d? | 2005-03-03 | 2005-03-03 |  | 23.88d | 0d |
| 1012 | 14.2.2.1.2 | Implementation | 1d? | 2005-03-04 | 2005-03-04 | 1011 | 23.88d | 0d |
| 1013 | 14.2.2.1.3 | Tuning | 1d? | 2005-03-05 | 2005-03-05 | 1012 | 23.88d |  |
| 1014 | 14.2.3 | **Monsters/Spawns** | 3d? | 2005-03-03 | 2005-03-05 |  | 23.88d |  |
| 1015 | 14.2.3.1 | **Stage 1** | 3d? | 2005-03-03 | 2005-03-05 |  | 23.88d |  |
| 1016 | 14.2.3.1.1 | Design | 1d? | 2005-03-03 | 2005-03-03 |  | 23.88d | 0d |
| 1017 | 14.2.3.1.2 | Implementation | 1d? | 2005-03-04 | 2005-03-04 | 1016 | 23.88d | 0d |
| 1018 | 14.2.3.1.3 | Tuning | 1d? | 2005-03-05 | 2005-03-05 | 1017 | 23.88d |  |
| 1019 | 14.2.4 | **Stalkers/Spawns** | 3d? | 2005-03-03 | 2005-03-05 |  | 23.88d |  |
| 1020 | 14.2.4.1 | **Stage 1** | 3d? | 2005-03-03 | 2005-03-05 |  | 23.88d |  |
| 1021 | 14.2.4.1.1 | Design | 1d? | 2005-03-03 | 2005-03-03 |  | 23.88d | 0d |
| 1022 | 14.2.4.1.2 | Implementation | 1d? | 2005-03-04 | 2005-03-04 | 1021 | 23.88d | 0d |
| 1023 | 14.2.4.1.3 | Tuning | 1d? | 2005-03-05 | 2005-03-05 | 1022 | 23.88d |  |
| 1024 | 14.2.5 | **Anomalies/Spawns** | 3d? | 2005-03-03 | 2005-03-05 |  | 23.88d |  |
| 1025 | 14.2.5.1 | **Stage 1** | 3d? | 2005-03-03 | 2005-03-05 |  | 23.88d |  |
| 1026 | 14.2.5.1.1 | Design | 1d? | 2005-03-03 | 2005-03-03 |  | 23.88d | 0d |
| 1027 | 14.2.5.1.2 | Implementation | 1d? | 2005-03-04 | 2005-03-04 | 1026 | 23.88d | 0d |
| 1028 | 14.2.5.1.3 | Tuning | 1d? | 2005-03-05 | 2005-03-05 | 1027 | 23.88d |  |
| 1029 | 14.2.6 | **Physicks** | 3d? | 2005-03-03 | 2005-03-05 |  | 23.88d |  |
| 1030 | 14.2.6.1 | **Stage 1** | 3d? | 2005-03-03 | 2005-03-05 |  | 23.88d |  |
| 1031 | 14.2.6.1.1 | Design | 1d? | 2005-03-03 | 2005-03-03 |  | 23.88d | 0d |
| 1032 | 14.2.6.1.2 | Implementation | 1d? | 2005-03-04 | 2005-03-04 | 1031 | 23.88d | 0d |
| 1033 | 14.2.6.1.3 | Tuning | 1d? | 2005-03-05 | 2005-03-05 | 1032 | 23.88d |  |

| ID | WBS | Task | Duration | Start | Finish | Predecessors | Total slack | Free slack |
| --- | --- | --- | --- | --- | --- | --- | --- | --- |
| 1035 | 14.3 | **Scripts** | 5d? | 2005-03-03 | 2005-03-08 |  | 21.88d |  |
| 1036 | 14.3.1 | **Script 1** | 5d? | 2005-03-03 | 2005-03-08 |  | 21.88d |  |
| 1037 | 14.3.1.1 | Scenario(text) | 1d? | 2005-03-03 | 2005-03-03 |  | 21.88d | 0d |
| 1038 | 14.3.1.2 | Постановка задач | 1d? | 2005-03-04 | 2005-03-04 | 1037 | 21.88d | 0d |
| 1039 | 14.3.1.3 | Implimentation | 1d? | 2005-03-05 | 2005-03-05 | 1038 | 21.88d | 0d |
| 1040 | 14.3.1.4 | Dilogs/VO/Icons/Objects/Animations | 1d? | 2005-03-07 | 2005-03-07 | 1039 | 21.88d | 0d |
| 1041 | 14.3.1.5 | Настройка | 1d? | 2005-03-08 | 2005-03-08 | 1040 | 21.88d |  |
| 1042 | 14.3.2 | **Script 2** | 5d? | 2005-03-03 | 2005-03-08 |  | 21.88d |  |
| 1043 | 14.3.2.1 | Scenario(text) | 1d? | 2005-03-03 | 2005-03-03 |  | 21.88d | 0d |
| 1044 | 14.3.2.2 | Постановка задач | 1d? | 2005-03-04 | 2005-03-04 | 1043 | 21.88d | 0d |
| 1045 | 14.3.2.3 | Implimentation | 1d? | 2005-03-05 | 2005-03-05 | 1044 | 21.88d | 0d |
| 1046 | 14.3.2.4 | Dilogs/VO/Icons/Objects/Animations | 1d? | 2005-03-07 | 2005-03-07 | 1045 | 21.88d | 0d |
| 1047 | 14.3.2.5 | Настройка | 1d? | 2005-03-08 | 2005-03-08 | 1046 | 21.88d |  |
| 1048 | 14.3.3 | **Script 3** | 5d? | 2005-03-03 | 2005-03-08 |  | 21.88d |  |
| 1049 | 14.3.3.1 | Scenario(text) | 1d? | 2005-03-03 | 2005-03-03 |  | 21.88d | 0d |
| 1050 | 14.3.3.2 | Постановка задач | 1d? | 2005-03-04 | 2005-03-04 | 1049 | 21.88d | 0d |
| 1051 | 14.3.3.3 | Implimentation | 1d? | 2005-03-05 | 2005-03-05 | 1050 | 21.88d | 0d |
| 1052 | 14.3.3.4 | Dilogs/VO/Icons/Objects/Animations | 1d? | 2005-03-07 | 2005-03-07 | 1051 | 21.88d | 0d |
| 1053 | 14.3.3.5 | Настройка | 1d? | 2005-03-08 | 2005-03-08 | 1052 | 21.88d |  |
| 1054 | 14.3.4 | **Script 4** | 5d? | 2005-03-03 | 2005-03-08 |  | 21.88d |  |
| 1055 | 14.3.4.1 | Scenario(text) | 1d? | 2005-03-03 | 2005-03-03 |  | 21.88d | 0d |
| 1056 | 14.3.4.2 | Постановка задач | 1d? | 2005-03-04 | 2005-03-04 | 1055 | 21.88d | 0d |
| 1057 | 14.3.4.3 | Implimentation | 1d? | 2005-03-05 | 2005-03-05 | 1056 | 21.88d | 0d |
| 1058 | 14.3.4.4 | Dilogs/VO/Icons/Objects/Animations | 1d? | 2005-03-07 | 2005-03-07 | 1057 | 21.88d | 0d |
| 1059 | 14.3.4.5 | Настройка | 1d? | 2005-03-08 | 2005-03-08 | 1058 | 21.88d |  |

| ID | WBS | Task | Duration | Start | Finish | Predecessors | Total slack | Free slack | Deadline | Resources | Work |
| --- | --- | --- | --- | --- | --- | --- | --- | --- | --- | --- | --- |
| 1060 | 14.3.5 | **Script 5** | 5d? | 2005-03-03 | 2005-03-08 |  | 21.88d |  |  |  |  |
| 1061 | 14.3.5.1 | Scenario(text) | 1d? | 2005-03-03 | 2005-03-03 |  | 21.88d | 0d |  |  |  |
| 1062 | 14.3.5.2 | Постановка задач | 1d? | 2005-03-04 | 2005-03-04 | 1061 | 21.88d | 0d |  |  |  |
| 1063 | 14.3.5.3 | Implimentation | 1d? | 2005-03-05 | 2005-03-05 | 1062 | 21.88d | 0d |  |  |  |
| 1064 | 14.3.5.4 | Dilogs/VO/Icons/Objects/Animations | 1d? | 2005-03-07 | 2005-03-07 | 1063 | 21.88d | 0d |  |  |  |
| 1065 | 14.3.5.5 | Настройка | 1d? | 2005-03-08 | 2005-03-08 | 1064 | 21.88d |  |  |  |  |
| 1067 | 15 | **22_Warlab** | 11d? | 2005-03-16 | 2005-03-28 | 989 | 15.88d |  | 2005-05-13 | Коан, Руслан | 88h |
| 1068 | 15.1 | **LevelDesign** | 11d? | 2005-03-16 | 2005-03-28 |  | 15.88d |  | 2005-04-15 |  |  |
| 1069 | 15.1.1 | **Stage 1** | 11d? | 2005-03-16 | 2005-03-28 |  | 15.88d |  |  |  |  |
| 1070 | 15.1.1.1 | List of Changes | 2d | 2005-03-16 | 2005-03-17 |  | 15.88d | 0d |  |  |  |
| 1071 | 15.1.1.2 | Changed Geometry | 1d? | 2005-03-18 | 2005-03-18 | 1070 | 15.88d | 0d |  |  |  |
| 1072 | 15.1.1.3 | Check List 1 | 1d? | 2005-03-19 | 2005-03-19 | 1071 | 15.88d | 0d |  |  |  |
| 1073 | 15.1.1.4 | Check List 2 | 1d? | 2005-03-21 | 2005-03-21 | 1072 | 15.88d | 0d |  |  |  |
| 1074 | 15.1.1.5 | Check List 3 | 1d? | 2005-03-22 | 2005-03-22 | 1073 | 15.88d | 0d |  |  |  |
| 1075 | 15.1.1.6 | Check List 4 | 1d? | 2005-03-23 | 2005-03-23 | 1074 | 15.88d | 0d |  |  |  |
| 1076 | 15.1.1.7 | Render Geometry | 1d? | 2005-03-24 | 2005-03-24 | 1075 | 15.88d | 0d |  |  |  |
| 1077 | 15.1.1.8 | Grass | 1d? | 2005-03-25 | 2005-03-25 | 1076 | 15.88d | 0d |  |  |  |
| 1078 | 15.1.1.9 | AI Maps | 1d? | 2005-03-26 | 2005-03-26 | 1077 | 15.88d | 0d |  |  |  |
| 1079 | 15.1.1.10 | Graphs | 1d? | 2005-03-28 | 2005-03-28 | 1078 | 15.88d |  |  |  |  |
| 1081 | 15.2 | **GameDesign** | 3d? | 2005-03-16 | 2005-03-18 |  | 47.88d |  |  |  |  |
| 1082 | 15.2.1 | **Secrets** | 3d? | 2005-03-16 | 2005-03-18 |  | 47.88d |  |  |  |  |
| 1083 | 15.2.1.1 | **Stage 1** | 3d? | 2005-03-16 | 2005-03-18 |  | 47.88d |  |  |  |  |
| 1084 | 15.2.1.1.1 | Design | 1d? | 2005-03-16 | 2005-03-16 |  | 47.88d | 0d |  |  |  |
| 1085 | 15.2.1.1.2 | Implementation | 1d? | 2005-03-17 | 2005-03-17 | 1084 | 47.88d | 0d |  |  |  |
| 1086 | 15.2.1.1.3 | Tuning | 1d? | 2005-03-18 | 2005-03-18 | 1085 | 47.88d |  |  |  |  |

| ID | WBS | Task | Duration | Start | Finish | Predecessors | Total slack | Free slack |
| --- | --- | --- | --- | --- | --- | --- | --- | --- |
| 1087 | 15.2.2 | **Smartterrains** | 3d? | 2005-03-16 | 2005-03-18 |  | 47.88d |  |
| 1088 | 15.2.2.1 | **Stage 1** | 3d? | 2005-03-16 | 2005-03-18 |  | 47.88d |  |
| 1089 | 15.2.2.1.1 | Design | 1d? | 2005-03-16 | 2005-03-16 |  | 47.88d | 0d |
| 1090 | 15.2.2.1.2 | Implementation | 1d? | 2005-03-17 | 2005-03-17 | 1089 | 47.88d | 0d |
| 1091 | 15.2.2.1.3 | Tuning | 1d? | 2005-03-18 | 2005-03-18 | 1090 | 47.88d |  |
| 1092 | 15.2.3 | **Monsters/Spawns** | 3d? | 2005-03-16 | 2005-03-18 |  | 47.88d |  |
| 1093 | 15.2.3.1 | **Stage 1** | 3d? | 2005-03-16 | 2005-03-18 |  | 47.88d |  |
| 1094 | 15.2.3.1.1 | Design | 1d? | 2005-03-16 | 2005-03-16 |  | 47.88d | 0d |
| 1095 | 15.2.3.1.2 | Implementation | 1d? | 2005-03-17 | 2005-03-17 | 1094 | 47.88d | 0d |
| 1096 | 15.2.3.1.3 | Tuning | 1d? | 2005-03-18 | 2005-03-18 | 1095 | 47.88d |  |
| 1097 | 15.2.4 | **Stalkers/Spawns** | 3d? | 2005-03-16 | 2005-03-18 |  | 47.88d |  |
| 1098 | 15.2.4.1 | **Stage 1** | 3d? | 2005-03-16 | 2005-03-18 |  | 47.88d |  |
| 1099 | 15.2.4.1.1 | Design | 1d? | 2005-03-16 | 2005-03-16 |  | 47.88d | 0d |
| 1100 | 15.2.4.1.2 | Implementation | 1d? | 2005-03-17 | 2005-03-17 | 1099 | 47.88d | 0d |
| 1101 | 15.2.4.1.3 | Tuning | 1d? | 2005-03-18 | 2005-03-18 | 1100 | 47.88d |  |
| 1102 | 15.2.5 | **Anomalies/Spawns** | 3d? | 2005-03-16 | 2005-03-18 |  | 47.88d |  |
| 1103 | 15.2.5.1 | **Stage 1** | 3d? | 2005-03-16 | 2005-03-18 |  | 47.88d |  |
| 1104 | 15.2.5.1.1 | Design | 1d? | 2005-03-16 | 2005-03-16 |  | 47.88d | 0d |
| 1105 | 15.2.5.1.2 | Implementation | 1d? | 2005-03-17 | 2005-03-17 | 1104 | 47.88d | 0d |
| 1106 | 15.2.5.1.3 | Tuning | 1d? | 2005-03-18 | 2005-03-18 | 1105 | 47.88d |  |
| 1107 | 15.2.6 | **Physicks** | 3d? | 2005-03-16 | 2005-03-18 |  | 47.88d |  |
| 1108 | 15.2.6.1 | **Stage 1** | 3d? | 2005-03-16 | 2005-03-18 |  | 47.88d |  |
| 1109 | 15.2.6.1.1 | Design | 1d? | 2005-03-16 | 2005-03-16 |  | 47.88d | 0d |
| 1110 | 15.2.6.1.2 | Implementation | 1d? | 2005-03-17 | 2005-03-17 | 1109 | 47.88d | 0d |
| 1111 | 15.2.6.1.3 | Tuning | 1d? | 2005-03-18 | 2005-03-18 | 1110 | 47.88d |  |

| ID | WBS | Task | Duration | Start | Finish | Predecessors | Total slack | Free slack |
| --- | --- | --- | --- | --- | --- | --- | --- | --- |
| 1113 | 15.3 | **Scripts** | 5d? | 2005-03-16 | 2005-03-21 |  | 45.88d |  |
| 1114 | 15.3.1 | **Script 1** | 5d? | 2005-03-16 | 2005-03-21 |  | 45.88d |  |
| 1115 | 15.3.1.1 | Scenario(text) | 1d? | 2005-03-16 | 2005-03-16 |  | 45.88d | 0d |
| 1116 | 15.3.1.2 | Постановка задач | 1d? | 2005-03-17 | 2005-03-17 | 1115 | 45.88d | 0d |
| 1117 | 15.3.1.3 | Implimentation | 1d? | 2005-03-18 | 2005-03-18 | 1116 | 45.88d | 0d |
| 1118 | 15.3.1.4 | Dilogs/VO/Icons/Objects/Animations | 1d? | 2005-03-19 | 2005-03-19 | 1117 | 45.88d | 0d |
| 1119 | 15.3.1.5 | Настройка | 1d? | 2005-03-21 | 2005-03-21 | 1118 | 45.88d |  |
| 1120 | 15.3.2 | **Script 2** | 5d? | 2005-03-16 | 2005-03-21 |  | 45.88d |  |
| 1121 | 15.3.2.1 | Scenario(text) | 1d? | 2005-03-16 | 2005-03-16 |  | 45.88d | 0d |
| 1122 | 15.3.2.2 | Постановка задач | 1d? | 2005-03-17 | 2005-03-17 | 1121 | 45.88d | 0d |
| 1123 | 15.3.2.3 | Implimentation | 1d? | 2005-03-18 | 2005-03-18 | 1122 | 45.88d | 0d |
| 1124 | 15.3.2.4 | Dilogs/VO/Icons/Objects/Animations | 1d? | 2005-03-19 | 2005-03-19 | 1123 | 45.88d | 0d |
| 1125 | 15.3.2.5 | Настройка | 1d? | 2005-03-21 | 2005-03-21 | 1124 | 45.88d |  |
| 1126 | 15.3.3 | **Script 3** | 5d? | 2005-03-16 | 2005-03-21 |  | 45.88d |  |
| 1127 | 15.3.3.1 | Scenario(text) | 1d? | 2005-03-16 | 2005-03-16 |  | 45.88d | 0d |
| 1128 | 15.3.3.2 | Постановка задач | 1d? | 2005-03-17 | 2005-03-17 | 1127 | 45.88d | 0d |
| 1129 | 15.3.3.3 | Implimentation | 1d? | 2005-03-18 | 2005-03-18 | 1128 | 45.88d | 0d |
| 1130 | 15.3.3.4 | Dilogs/VO/Icons/Objects/Animations | 1d? | 2005-03-19 | 2005-03-19 | 1129 | 45.88d | 0d |
| 1131 | 15.3.3.5 | Настройка | 1d? | 2005-03-21 | 2005-03-21 | 1130 | 45.88d |  |
| 1132 | 15.3.4 | **Script 4** | 5d? | 2005-03-16 | 2005-03-21 |  | 45.88d |  |
| 1133 | 15.3.4.1 | Scenario(text) | 1d? | 2005-03-16 | 2005-03-16 |  | 45.88d | 0d |
| 1134 | 15.3.4.2 | Постановка задач | 1d? | 2005-03-17 | 2005-03-17 | 1133 | 45.88d | 0d |
| 1135 | 15.3.4.3 | Implimentation | 1d? | 2005-03-18 | 2005-03-18 | 1134 | 45.88d | 0d |
| 1136 | 15.3.4.4 | Dilogs/VO/Icons/Objects/Animations | 1d? | 2005-03-19 | 2005-03-19 | 1135 | 45.88d | 0d |
| 1137 | 15.3.4.5 | Настройка | 1d? | 2005-03-21 | 2005-03-21 | 1136 | 45.88d |  |

| ID | WBS | Task | Duration | Start | Finish | Predecessors | Complete | Remaining | Total slack | Free slack | Constraint | Deadline | Resources | Work | Actual work |
| --- | --- | --- | --- | --- | --- | --- | --- | --- | --- | --- | --- | --- | --- | --- | --- |
| 1138 | 15.3.5 | **Script 5** | 5d? | 2005-03-16 | 2005-03-21 |  |  |  | 45.88d |  |  |  |  |  |  |
| 1139 | 15.3.5.1 | Scenario(text) | 1d? | 2005-03-16 | 2005-03-16 |  |  |  | 45.88d | 0d |  |  |  |  |  |
| 1140 | 15.3.5.2 | Постановка задач | 1d? | 2005-03-17 | 2005-03-17 | 1139 |  |  | 45.88d | 0d |  |  |  |  |  |
| 1141 | 15.3.5.3 | Implimentation | 1d? | 2005-03-18 | 2005-03-18 | 1140 |  |  | 45.88d | 0d |  |  |  |  |  |
| 1142 | 15.3.5.4 | Dilogs/VO/Icons/Objects/Animations | 1d? | 2005-03-19 | 2005-03-19 | 1141 |  |  | 45.88d | 0d |  |  |  |  |  |
| 1143 | 15.3.5.5 | Настройка | 1d? | 2005-03-21 | 2005-03-21 | 1142 |  |  | 45.88d |  |  |  |  |  |  |
| 1152 | 16 | **10_Military_Base** | 31.88d? | 2005-01-24 A | 2005-03-01 |  | 1% | 31.51d? | -30.88d | 0d |  | 2005-03-01 | Маст Дай, Сидорович | 674h | 10.95h |
| 1153 | 16.1 | **LevelDesign** | 11d? | 2005-01-24 | 2005-02-04 |  |  |  | -29.12d | 0d |  | 2005-02-07 |  |  |  |
| 1154 | 16.1.1 | **Stage 1** | 11d? | 2005-01-24 | 2005-02-04 |  |  |  | -29.12d | 0d |  |  |  |  |  |
| 1155 | 16.1.1.1 | List of Changes | 2d | 2005-01-24 | 2005-01-25 |  |  |  | -29.12d | 0d |  |  |  |  |  |
| 1156 | 16.1.1.2 | Changed Geometry | 1d? | 2005-01-26 | 2005-01-26 | 1155 |  |  | -29.12d | 0d |  |  |  |  |  |
| 1157 | 16.1.1.3 | Check List 1 | 1d? | 2005-01-27 | 2005-01-27 | 1156 |  |  | -29.12d | 0d |  |  |  |  |  |
| 1158 | 16.1.1.4 | Check List 2 | 1d? | 2005-01-28 | 2005-01-28 | 1157 |  |  | -29.12d | 0d |  |  |  |  |  |
| 1159 | 16.1.1.5 | Check List 3 | 1d? | 2005-01-29 | 2005-01-29 | 1158 |  |  | -29.12d | 0d |  |  |  |  |  |
| 1160 | 16.1.1.6 | Check List 4 | 1d? | 2005-01-31 | 2005-01-31 | 1159 |  |  | -29.12d | 0d |  |  |  |  |  |
| 1161 | 16.1.1.7 | Render Geometry | 1d? | 2005-02-01 | 2005-02-01 | 1160 |  |  | -29.12d | 0d |  |  |  |  |  |
| 1162 | 16.1.1.8 | Grass | 1d? | 2005-02-02 | 2005-02-02 | 1161 |  |  | -29.12d | 0d |  |  |  |  |  |
| 1163 | 16.1.1.9 | AI Maps | 1d? | 2005-02-03 | 2005-02-03 | 1162 |  |  | -29.12d | 0d |  |  |  |  |  |
| 1164 | 16.1.1.10 | Graphs | 1d? | 2005-02-04 | 2005-02-04 | 1163 |  |  | -29.12d | 0d |  |  |  |  |  |
| 1166 | 16.2 | **GameDesign** | 31.88d? | 2005-01-24 | 2005-03-01 |  |  |  | -50d | 0d |  |  |  | 83h |  |
| 1167 | 16.2.1 | **Secrets** | 3.88d? | 2005-02-25 | 2005-03-01 |  |  |  | -50d | 0d |  |  |  | 23h |  |
| 1168 | 16.2.1.1 | **Stage 1** | 3.88d? | 2005-02-25 | 2005-03-01 |  |  |  | -50d | 0d |  |  |  | 23h |  |
| 1169 | 16.2.1.1.1 | Design | 1.88d? | 2005-02-25 | 2005-02-26 |  |  |  | -50d | 0d | start no earlier than 2005-02-25 |  | Mustdie | 15h |  |
| 1170 | 16.2.1.1.2 | Implementation | 1d? | 2005-02-26 | 2005-02-28 | 1169 |  |  | -50d | 0d |  |  | Mustdie | 8h |  |
| 1171 | 16.2.1.1.3 | Tuning | 1d? | 2005-02-28 | 2005-03-01 | 1170 |  |  | -50d | 0d |  |  |  |  |  |

| ID | WBS | Task | Duration | Start | Finish | Predecessors | Total slack | Free slack | Constraint | Resources | Work |
| --- | --- | --- | --- | --- | --- | --- | --- | --- | --- | --- | --- |
| 1172 | 16.2.2 | **Smartterrains** | 3.88d? | 2005-02-25 | 2005-03-01 |  | -50d | 0d |  |  | 15h |
| 1173 | 16.2.2.1 | **Stage 1** | 3.88d? | 2005-02-25 | 2005-03-01 |  | -50d | 0d |  |  | 15h |
| 1174 | 16.2.2.1.1 | Design | 1.88d? | 2005-02-25 | 2005-02-26 |  | -50d | 0d | start no earlier than 2005-02-25 | Mustdie | 15h |
| 1175 | 16.2.2.1.2 | Implementation | 1d? | 2005-02-26 | 2005-02-28 | 1174 | -50d | 0d |  |  |  |
| 1176 | 16.2.2.1.3 | Tuning | 1d? | 2005-02-28 | 2005-03-01 | 1175 | -50d | 0d |  |  |  |
| 1177 | 16.2.3 | **Monsters/Spawns** | 3.88d? | 2005-02-25 | 2005-03-01 |  | -50d | 0d |  |  | 15h |
| 1178 | 16.2.3.1 | **Stage 1** | 3.88d? | 2005-02-25 | 2005-03-01 |  | -50d | 0d |  |  | 15h |
| 1179 | 16.2.3.1.1 | Design | 1.88d? | 2005-02-25 | 2005-02-26 |  | -50d | 0d | start no earlier than 2005-02-25 | Маст Дай, Сидорович | 15h |
| 1180 | 16.2.3.1.2 | Implementation | 1d? | 2005-02-26 | 2005-02-28 | 1179 | -50d | 0d |  |  |  |
| 1181 | 16.2.3.1.3 | Tuning | 1d? | 2005-02-28 | 2005-03-01 | 1180 | -50d | 0d |  |  |  |
| 1182 | 16.2.4 | **Stalkers/Spawns** | 3.88d? | 2005-02-25 | 2005-03-01 |  | -50d | 0d |  |  | 15h |
| 1183 | 16.2.4.1 | **Stage 1** | 3.88d? | 2005-02-25 | 2005-03-01 |  | -50d | 0d |  |  | 15h |
| 1184 | 16.2.4.1.1 | Design | 1.88d? | 2005-02-25 | 2005-02-26 |  | -50d | 0d | start no earlier than 2005-02-25 | Сидорович, Маст Дай | 15h |
| 1185 | 16.2.4.1.2 | Implementation | 1d? | 2005-02-26 | 2005-02-28 | 1184 | -50d | 0d |  |  |  |
| 1186 | 16.2.4.1.3 | Tuning | 1d? | 2005-02-28 | 2005-03-01 | 1185 | -50d | 0d |  |  |  |
| 1187 | 16.2.5 | **Anomalies/Spawns** | 3.88d? | 2005-02-25 | 2005-03-01 |  | -50d | 0d |  |  | 15h |
| 1188 | 16.2.5.1 | **Stage 1** | 3.88d? | 2005-02-25 | 2005-03-01 |  | -50d | 0d |  |  | 15h |
| 1189 | 16.2.5.1.1 | Design | 1.88d? | 2005-02-25 | 2005-02-26 |  | -50d | 0d | start no earlier than 2005-02-25 | Сидорович, Маст Дай | 15h |
| 1190 | 16.2.5.1.2 | Implementation | 1d? | 2005-02-26 | 2005-02-28 | 1189 | -50d | 0d |  |  |  |
| 1191 | 16.2.5.1.3 | Tuning | 1d? | 2005-02-28 | 2005-03-01 | 1190 | -50d | 0d |  |  |  |
| 1192 | 16.2.6 | **Physicks** | 3d? | 2005-01-24 | 2005-01-26 |  | -21.12d | 0d |  |  |  |
| 1193 | 16.2.6.1 | **Stage 1** | 3d? | 2005-01-24 | 2005-01-26 |  | -21.12d | 0d |  |  |  |
| 1194 | 16.2.6.1.1 | Design | 1d? | 2005-01-24 | 2005-01-24 |  | -21.12d | 0d |  |  |  |
| 1195 | 16.2.6.1.2 | Implementation | 1d? | 2005-01-25 | 2005-01-25 | 1194 | -21.12d | 0d |  |  |  |
| 1196 | 16.2.6.1.3 | Tuning | 1d? | 2005-01-26 | 2005-01-26 | 1195 | -21.12d | 0d |  |  |  |

| ID | WBS | Task | Duration | Start | Finish | Predecessors | Complete | Remaining | Total slack | Free slack | Constraint | Deadline | Resources | Work | Actual work |
| --- | --- | --- | --- | --- | --- | --- | --- | --- | --- | --- | --- | --- | --- | --- | --- |
| 1198 | 16.3 | **Scripts** | 29d? | 2005-01-24 A | 2005-02-25 |  | 2% | 28.45d? | -28d | 0d | finish no later than 2005-02-25 | 2005-03-01 |  | 336h | 8h |
| 1199 | 16.3.1 | Сценарий (текст) | 1d | 2005-01-24 A | 2005-01-24 A |  | 100% |  |  |  |  |  | Mustdie | 8h | 8h |
| 1200 | 16.3.2 | **Сцена 1 - База свободы (ГУЛАГ)** | 14d? | 2005-02-01 | 2005-02-16 |  |  |  | -39.12d | 0d |  |  |  | 152h |  |
| 1201 | 16.3.2.1 | Постановка задач | 1d? | 2005-02-01 | 2005-02-01 |  |  |  | -34.12d | 0d | start no earlier than 2005-02-01 |  | Сидорович | 8h |  |
| 1202 | 16.3.2.2 | **Реализация** | 8d? | 2005-02-02 | 2005-02-10 | 1201 |  |  | -34.12d | 0d |  |  |  | 72h |  |
| 1203 | 16.3.2.2.1 | Реализация | 8d | 2005-02-02 | 2005-02-10 | 1201 |  |  | -34.12d | 0d | start no earlier than 2005-02-01 |  | Сидорович | 64h |  |
| 1204 | 16.3.2.2.2 | Доработка X в движке | 1d? | 2005-02-02 | 2005-02-02 |  |  |  | -28.12d | 0d |  |  | Dima | 8h |  |
| 1205 | 16.3.2.3 | Расстановка | 4d | 2005-02-02 | 2005-02-05 | 1199 |  |  | -30.12d | 0d | start no earlier than 2005-02-02 |  | Mustdie | 32h |  |
| 1206 | 16.3.2.4 | Тексты, Диалоги, Задания, Отметки на карте, новости, профили персонажей (продумать) | 4d | 2005-02-11 | 2005-02-15 |  |  |  | -38.12d | 0d | start no earlier than 2005-02-11 |  | Mustdie | 32h |  |
| 1207 | 16.3.2.5 | **Тестирование** | 12d? | 2005-02-03 | 2005-02-16 | 1204 |  |  | -39.12d | 0d |  |  |  | 8h |  |
| 1208 | 16.3.2.5.1 | Тестирование | 1d | 2005-02-16 | 2005-02-16 |  |  |  | -39.12d | 0d | start no earlier than 2005-02-16 |  |  |  |  |
| 1209 | 16.3.2.5.2 | Проверить расстановку AI нод вокруг дерева | 1d? | 2005-02-03 | 2005-02-03 |  |  |  | -28.12d | 0d |  |  | Partizan | 8h |  |
| 1210 | 16.3.3 | **Сцена 2 - Группировка Долга** | 4d? | 2005-02-16 | 2005-02-19 |  |  |  | -42.12d | 0d |  |  |  | 64h |  |
| 1211 | 16.3.3.1 | Постановка задач | 1d | 2005-02-16 | 2005-02-16 |  |  |  | -41.12d | 0d | start no earlier than 2005-02-16 |  | Сидорович | 8h |  |
| 1212 | 16.3.3.2 | **Реализация** | 2d? | 2005-02-17 | 2005-02-18 | 1211 |  |  | -41.12d | 0d |  |  |  | 24h |  |
| 1213 | 16.3.3.2.1 | Реализация | 2d | 2005-02-17 | 2005-02-18 | 1211 |  |  | -41.12d | 0d | start no earlier than 2005-02-16 |  | Сидорович | 16h |  |
| 1214 | 16.3.3.2.2 | Доработка X в движке | 1d? | 2005-02-17 | 2005-02-17 |  |  |  | -41.12d | 0d |  |  | Dima | 8h |  |
| 1215 | 16.3.3.3 | Расстановка | 1d | 2005-02-17 | 2005-02-17 |  |  |  | -42.12d | 0d | start no earlier than 2005-02-17 |  | Mustdie | 8h |  |
| 1216 | 16.3.3.4 | Тексты, Диалоги, Задания, Отметки на карте, новости, профили персонажей (продумать) | 2d | 2005-02-18 | 2005-02-19 | 1215 |  |  | -42.12d | 0d |  |  | Mustdie | 16h |  |
| 1217 | 16.3.3.5 | **Тестирование** | 1d? | 2005-02-18 | 2005-02-18 | 1214 |  |  | -41.12d | 0d |  |  |  | 8h |  |
| 1218 | 16.3.3.5.1 | Тестирование | 1d | 2005-02-18 | 2005-02-18 |  |  |  | -41.12d | 0d | start no earlier than 2005-02-18 |  |  |  |  |
| 1219 | 16.3.3.5.2 | Проверить расстановку AI нод вокруг дерева | 1d? | 2005-02-18 | 2005-02-18 |  |  |  | -41.12d | 0d |  |  | Partizan | 8h |  |
| 1220 | 16.3.4 | **Сцена 3 - Сумасшедший сталкер** | 2.25d? | 2005-02-18 | 2005-02-21 |  |  |  | -43.12d | 0d |  |  |  | 32h |  |
| 1221 | 16.3.4.1 | Постановка задач | 1d | 2005-02-18 | 2005-02-19 |  |  |  | -41.88d | 0d | finish no earlier than 2005-02-19 |  | Сидорович | 8h |  |

| ID | WBS | Task | Duration | Start | Finish | Total slack | Free slack | Constraint | Resources | Work |
| --- | --- | --- | --- | --- | --- | --- | --- | --- | --- | --- |
| 1222 | 16.3.4.2 | **Реализация** | 1d? | 2005-02-21 | 2005-02-21 | -43.12d | 0d |  |  | 24h |
| 1223 | 16.3.4.2.1 | Реализация | 1d | 2005-02-21 | 2005-02-21 | -43.12d | 0d | start no earlier than 2005-02-21 | Сидорович | 8h |
| 1224 | 16.3.4.2.2 | Доработка X в движке | 1d? | 2005-02-21 | 2005-02-21 | -43.12d | 0d | start no earlier than 2005-02-21 |  |  |
| 1225 | 16.3.4.2.3 | Расстановка | 1d | 2005-02-21 | 2005-02-21 | -43.12d | 0d | start no earlier than 2005-02-21 | Mustdie | 8h |
| 1226 | 16.3.4.2.4 | Тексты, Диалоги, Задания, Отметки на карте, новости, профили персонажей (продумать) | 1d | 2005-02-21 | 2005-02-21 | -43.12d | 0d | start no earlier than 2005-02-21 | Mustdie | 8h |
| 1227 | 16.3.4.3 | **Тестирование** | 1d? | 2005-02-21 | 2005-02-21 | -43.12d | 0d |  |  |  |
| 1228 | 16.3.4.3.1 | Тестирование | 1d | 2005-02-21 | 2005-02-21 | -43.12d | 0d | start no earlier than 2005-02-21 |  |  |
| 1229 | 16.3.4.3.2 | Проверить расстановку AI нод вокруг дерева | 1d? | 2005-02-21 | 2005-02-21 | -43.12d | 0d | start no earlier than 2005-02-21 |  |  |
| 1230 | 16.3.5 | **Сцена 4 - Бой - Киллеры и Бандтиты** | 1d? | 2005-02-22 | 2005-02-22 | -44.12d | 0d |  |  | 32h |
| 1231 | 16.3.5.1 | Постановка задач | 1d? | 2005-02-22 | 2005-02-22 | -44.12d | 0d | start no earlier than 2005-02-22 | Сидорович | 8h |
| 1232 | 16.3.5.2 | **Реализация** | 1d? | 2005-02-22 | 2005-02-22 | -44.12d | 0d |  |  | 24h |
| 1233 | 16.3.5.2.1 | Реализация | 1d | 2005-02-22 | 2005-02-22 | -44.12d | 0d | start no earlier than 2005-02-22 | Сидорович | 8h |
| 1234 | 16.3.5.2.2 | Доработка X в движке | 1d? | 2005-02-22 | 2005-02-22 | -44.12d | 0d | start no earlier than 2005-02-22 |  |  |
| 1235 | 16.3.5.2.3 | Расстановка | 1d? | 2005-02-22 | 2005-02-22 | -44.12d | 0d | start no earlier than 2005-02-22 | Mustdie | 8h |
| 1236 | 16.3.5.2.4 | Тексты, Диалоги, Задания, Отметки на карте, новости, профили персонажей (продумать) | 1d? | 2005-02-22 | 2005-02-22 | -44.12d | 0d | start no earlier than 2005-02-22 | Mustdie | 8h |
| 1237 | 16.3.5.3 | **Тестирование** | 1d? | 2005-02-22 | 2005-02-22 | -44.12d | 0d |  |  |  |
| 1238 | 16.3.5.3.1 | Тестирование | 1d? | 2005-02-22 | 2005-02-22 | -44.12d | 0d | start no earlier than 2005-02-22 |  |  |
| 1239 | 16.3.5.3.2 | Проверить расстановку AI нод вокруг дерева | 1d? | 2005-02-22 | 2005-02-22 | -44.12d | 0d | start no earlier than 2005-02-22 |  |  |
| 1240 | 16.3.6 | **Сцена 5 - Деревня** | 3d? | 2005-02-23 | 2005-02-25 | -47.12d | 0d |  |  | 48h |
| 1241 | 16.3.6.1 | Постановка задач | 1d? | 2005-02-23 | 2005-02-23 | -45.12d | 0d | start no earlier than 2005-02-23 | Сидорович | 8h |
| 1242 | 16.3.6.2 | **Реализация** | 2d? | 2005-02-24 | 2005-02-25 | -47.12d | 0d |  |  | 40h |
| 1243 | 16.3.6.2.1 | Реализация | 2d | 2005-02-24 | 2005-02-25 | -47.12d | 0d | start no earlier than 2005-02-24 | Сидорович | 16h |
| 1244 | 16.3.6.2.2 | Доработка X в движке | 1d? | 2005-02-24 | 2005-02-24 | -46.12d | 0d | start no earlier than 2005-02-24 |  |  |
| 1245 | 16.3.6.2.3 | Расстановка | 2d | 2005-02-24 | 2005-02-25 | -47.12d | 0d | start no earlier than 2005-02-24 | Mustdie | 16h |
| 1246 | 16.3.6.2.4 | Тексты, Диалоги, Задания, Отметки на карте, новости, профили персонажей (продумать) | 1d? | 2005-02-24 | 2005-02-24 | -46.12d | 0d | start no earlier than 2005-02-24 | Mustdie | 8h |

| ID | WBS | Task | Duration | Start | Finish | Predecessors | Total slack | Free slack | Constraint | Deadline | Resources | Work |
| --- | --- | --- | --- | --- | --- | --- | --- | --- | --- | --- | --- | --- |
| 1247 | 16.3.6.3 | **Тестирование** | 1d? | 2005-02-24 | 2005-02-24 |  | -46.12d | 0d |  |  |  |  |
| 1248 | 16.3.6.3.1 | Тестирование | 1d? | 2005-02-24 | 2005-02-24 |  | -46.12d | 0d | start no earlier than 2005-02-24 |  |  |  |
| 1249 | 16.3.6.3.2 | Проверить расстановку AI нод вокруг дерева | 1d? | 2005-02-24 | 2005-02-24 |  | -46.12d | 0d | start no earlier than 2005-02-24 |  |  |  |
| 1257 | 17 | **20_Sarcofag** | 11d? | 2005-03-01 | 2005-03-14 | 1152 | -50d | 0d |  | 2005-04-01 | Маст Дай, Сидорович | 88h |
| 1258 | 17.1 | **LevelDesign** | 11d? | 2005-03-01 | 2005-03-14 |  | -50d | 0d |  | 2005-03-01 |  |  |
| 1259 | 17.1.1 | **Stage 1** | 11d? | 2005-03-01 | 2005-03-14 |  | -50d | 0d |  |  |  |  |
| 1260 | 17.1.1.1 | List of Changes | 2d | 2005-03-01 | 2005-03-03 |  | -50d | 0d |  |  |  |  |
| 1261 | 17.1.1.2 | Changed Geometry | 1d? | 2005-03-03 | 2005-03-04 | 1260 | -50d | 0d |  |  |  |  |
| 1262 | 17.1.1.3 | Check List 1 | 1d? | 2005-03-04 | 2005-03-05 | 1261 | -50d | 0d |  |  |  |  |
| 1263 | 17.1.1.4 | Check List 2 | 1d? | 2005-03-05 | 2005-03-07 | 1262 | -50d | 0d |  |  |  |  |
| 1264 | 17.1.1.5 | Check List 3 | 1d? | 2005-03-07 | 2005-03-08 | 1263 | -50d | 0d |  |  |  |  |
| 1265 | 17.1.1.6 | Check List 4 | 1d? | 2005-03-08 | 2005-03-09 | 1264 | -50d | 0d |  |  |  |  |
| 1266 | 17.1.1.7 | Render Geometry | 1d? | 2005-03-09 | 2005-03-10 | 1265 | -50d | 0d |  |  |  |  |
| 1267 | 17.1.1.8 | Grass | 1d? | 2005-03-10 | 2005-03-11 | 1266 | -50d | 0d |  |  |  |  |
| 1268 | 17.1.1.9 | AI Maps | 1d? | 2005-03-11 | 2005-03-12 | 1267 | -50d | 0d |  |  |  |  |
| 1269 | 17.1.1.10 | Graphs | 1d? | 2005-03-12 | 2005-03-14 | 1268 | -50d | 0d |  |  |  |  |
| 1271 | 17.2 | **GameDesign** | 3d? | 2005-03-01 | 2005-03-04 |  | -42d | 0d |  |  |  |  |
| 1272 | 17.2.1 | **Secrets** | 3d? | 2005-03-01 | 2005-03-04 |  | -42d | 0d |  |  |  |  |
| 1273 | 17.2.1.1 | **Stage 1** | 3d? | 2005-03-01 | 2005-03-04 |  | -42d | 0d |  |  |  |  |
| 1274 | 17.2.1.1.1 | Design | 1d? | 2005-03-01 | 2005-03-02 |  | -42d | 0d |  |  |  |  |
| 1275 | 17.2.1.1.2 | Implementation | 1d? | 2005-03-02 | 2005-03-03 | 1274 | -42d | 0d |  |  |  |  |
| 1276 | 17.2.1.1.3 | Tuning | 1d? | 2005-03-03 | 2005-03-04 | 1275 | -42d | 0d |  |  |  |  |
| 1277 | 17.2.2 | **Smartterrains** | 3d? | 2005-03-01 | 2005-03-04 |  | -42d | 0d |  |  |  |  |
| 1278 | 17.2.2.1 | **Stage 1** | 3d? | 2005-03-01 | 2005-03-04 |  | -42d | 0d |  |  |  |  |
| 1279 | 17.2.2.1.1 | Design | 1d? | 2005-03-01 | 2005-03-02 |  | -42d | 0d |  |  |  |  |
| 1280 | 17.2.2.1.2 | Implementation | 1d? | 2005-03-02 | 2005-03-03 | 1279 | -42d | 0d |  |  |  |  |
| 1281 | 17.2.2.1.3 | Tuning | 1d? | 2005-03-03 | 2005-03-04 | 1280 | -42d | 0d |  |  |  |  |

| ID | WBS | Task | Duration | Start | Finish | Predecessors | Total slack | Free slack |
| --- | --- | --- | --- | --- | --- | --- | --- | --- |
| 1282 | 17.2.3 | **Monsters/Spawns** | 3d? | 2005-03-01 | 2005-03-04 |  | -42d | 0d |
| 1283 | 17.2.3.1 | **Stage 1** | 3d? | 2005-03-01 | 2005-03-04 |  | -42d | 0d |
| 1284 | 17.2.3.1.1 | Design | 1d? | 2005-03-01 | 2005-03-02 |  | -42d | 0d |
| 1285 | 17.2.3.1.2 | Implementation | 1d? | 2005-03-02 | 2005-03-03 | 1284 | -42d | 0d |
| 1286 | 17.2.3.1.3 | Tuning | 1d? | 2005-03-03 | 2005-03-04 | 1285 | -42d | 0d |
| 1287 | 17.2.4 | **Stalkers/Spawns** | 3d? | 2005-03-01 | 2005-03-04 |  | -42d | 0d |
| 1288 | 17.2.4.1 | **Stage 1** | 3d? | 2005-03-01 | 2005-03-04 |  | -42d | 0d |
| 1289 | 17.2.4.1.1 | Design | 1d? | 2005-03-01 | 2005-03-02 |  | -42d | 0d |
| 1290 | 17.2.4.1.2 | Implementation | 1d? | 2005-03-02 | 2005-03-03 | 1289 | -42d | 0d |
| 1291 | 17.2.4.1.3 | Tuning | 1d? | 2005-03-03 | 2005-03-04 | 1290 | -42d | 0d |
| 1292 | 17.2.5 | **Anomalies/Spawns** | 3d? | 2005-03-01 | 2005-03-04 |  | -42d | 0d |
| 1293 | 17.2.5.1 | **Stage 1** | 3d? | 2005-03-01 | 2005-03-04 |  | -42d | 0d |
| 1294 | 17.2.5.1.1 | Design | 1d? | 2005-03-01 | 2005-03-02 |  | -42d | 0d |
| 1295 | 17.2.5.1.2 | Implementation | 1d? | 2005-03-02 | 2005-03-03 | 1294 | -42d | 0d |
| 1296 | 17.2.5.1.3 | Tuning | 1d? | 2005-03-03 | 2005-03-04 | 1295 | -42d | 0d |
| 1297 | 17.2.6 | **Physicks** | 3d? | 2005-03-01 | 2005-03-04 |  | -42d | 0d |
| 1298 | 17.2.6.1 | **Stage 1** | 3d? | 2005-03-01 | 2005-03-04 |  | -42d | 0d |
| 1299 | 17.2.6.1.1 | Design | 1d? | 2005-03-01 | 2005-03-02 |  | -42d | 0d |
| 1300 | 17.2.6.1.2 | Implementation | 1d? | 2005-03-02 | 2005-03-03 | 1299 | -42d | 0d |
| 1301 | 17.2.6.1.3 | Tuning | 1d? | 2005-03-03 | 2005-03-04 | 1300 | -42d | 0d |
| 1303 | 17.3 | **Scripts** | 5d? | 2005-03-01 | 2005-03-07 |  | -44d | 0d |
| 1304 | 17.3.1 | **Script 1** | 5d? | 2005-03-01 | 2005-03-07 |  | -44d | 0d |
| 1305 | 17.3.1.1 | Scenario(text) | 1d? | 2005-03-01 | 2005-03-02 |  | -44d | 0d |
| 1306 | 17.3.1.2 | Постановка задач | 1d? | 2005-03-02 | 2005-03-03 | 1305 | -44d | 0d |
| 1307 | 17.3.1.3 | Implimentation | 1d? | 2005-03-03 | 2005-03-04 | 1306 | -44d | 0d |
| 1308 | 17.3.1.4 | Dilogs/VO/Icons/Objects/Animations | 1d? | 2005-03-04 | 2005-03-05 | 1307 | -44d | 0d |
| 1309 | 17.3.1.5 | Настройка | 1d? | 2005-03-05 | 2005-03-07 | 1308 | -44d | 0d |

| ID | WBS | Task | Duration | Start | Finish | Predecessors | Total slack | Free slack |
| --- | --- | --- | --- | --- | --- | --- | --- | --- |
| 1310 | 17.3.2 | **Script 2** | 5d? | 2005-03-01 | 2005-03-07 |  | -44d | 0d |
| 1311 | 17.3.2.1 | Scenario(text) | 1d? | 2005-03-01 | 2005-03-02 |  | -44d | 0d |
| 1312 | 17.3.2.2 | Постановка задач | 1d? | 2005-03-02 | 2005-03-03 | 1311 | -44d | 0d |
| 1313 | 17.3.2.3 | Implimentation | 1d? | 2005-03-03 | 2005-03-04 | 1312 | -44d | 0d |
| 1314 | 17.3.2.4 | Dilogs/VO/Icons/Objects/Animations | 1d? | 2005-03-04 | 2005-03-05 | 1313 | -44d | 0d |
| 1315 | 17.3.2.5 | Настройка | 1d? | 2005-03-05 | 2005-03-07 | 1314 | -44d | 0d |
| 1316 | 17.3.3 | **Script 3** | 5d? | 2005-03-01 | 2005-03-07 |  | -44d | 0d |
| 1317 | 17.3.3.1 | Scenario(text) | 1d? | 2005-03-01 | 2005-03-02 |  | -44d | 0d |
| 1318 | 17.3.3.2 | Постановка задач | 1d? | 2005-03-02 | 2005-03-03 | 1317 | -44d | 0d |
| 1319 | 17.3.3.3 | Implimentation | 1d? | 2005-03-03 | 2005-03-04 | 1318 | -44d | 0d |
| 1320 | 17.3.3.4 | Dilogs/VO/Icons/Objects/Animations | 1d? | 2005-03-04 | 2005-03-05 | 1319 | -44d | 0d |
| 1321 | 17.3.3.5 | Настройка | 1d? | 2005-03-05 | 2005-03-07 | 1320 | -44d | 0d |
| 1322 | 17.3.4 | **Script 4** | 5d? | 2005-03-01 | 2005-03-07 |  | -44d | 0d |
| 1323 | 17.3.4.1 | Scenario(text) | 1d? | 2005-03-01 | 2005-03-02 |  | -44d | 0d |
| 1324 | 17.3.4.2 | Постановка задач | 1d? | 2005-03-02 | 2005-03-03 | 1323 | -44d | 0d |
| 1325 | 17.3.4.3 | Implimentation | 1d? | 2005-03-03 | 2005-03-04 | 1324 | -44d | 0d |
| 1326 | 17.3.4.4 | Dilogs/VO/Icons/Objects/Animations | 1d? | 2005-03-04 | 2005-03-05 | 1325 | -44d | 0d |
| 1327 | 17.3.4.5 | Настройка | 1d? | 2005-03-05 | 2005-03-07 | 1326 | -44d | 0d |
| 1328 | 17.3.5 | **Script 5** | 5d? | 2005-03-01 | 2005-03-07 |  | -44d | 0d |
| 1329 | 17.3.5.1 | Scenario(text) | 1d? | 2005-03-01 | 2005-03-02 |  | -44d | 0d |
| 1330 | 17.3.5.2 | Постановка задач | 1d? | 2005-03-02 | 2005-03-03 | 1329 | -44d | 0d |
| 1331 | 17.3.5.3 | Implimentation | 1d? | 2005-03-03 | 2005-03-04 | 1330 | -44d | 0d |
| 1332 | 17.3.5.4 | Dilogs/VO/Icons/Objects/Animations | 1d? | 2005-03-04 | 2005-03-05 | 1331 | -44d | 0d |
| 1333 | 17.3.5.5 | Настройка | 1d? | 2005-03-05 | 2005-03-07 | 1332 | -44d | 0d |

| ID | WBS | Task | Duration | Start | Finish | Predecessors | Total slack | Free slack | Deadline | Resources | Work |
| --- | --- | --- | --- | --- | --- | --- | --- | --- | --- | --- | --- |
| 1335 | 18 | **19_Stancia** | 11d? | 2005-03-14 | 2005-03-26 | 1257 | -50d | 0d | 2005-04-29 | Маст Дай, Сидорович | 88h |
| 1336 | 18.1 | **LevelDesign** | 11d? | 2005-03-14 | 2005-03-26 |  | -50d | 0d | 2005-01-27 |  |  |
| 1337 | 18.1.1 | **Stage 1** | 11d? | 2005-03-14 | 2005-03-26 |  | -50d | 0d |  |  |  |
| 1338 | 18.1.1.1 | List of Changes | 2d | 2005-03-14 | 2005-03-16 |  | -50d | 0d |  |  |  |
| 1339 | 18.1.1.2 | Changed Geometry | 1d? | 2005-03-16 | 2005-03-17 | 1338 | -50d | 0d |  |  |  |
| 1340 | 18.1.1.3 | Check List 1 | 1d? | 2005-03-17 | 2005-03-18 | 1339 | -50d | 0d |  |  |  |
| 1341 | 18.1.1.4 | Check List 2 | 1d? | 2005-03-18 | 2005-03-19 | 1340 | -50d | 0d |  |  |  |
| 1342 | 18.1.1.5 | Check List 3 | 1d? | 2005-03-19 | 2005-03-21 | 1341 | -50d | 0d |  |  |  |
| 1343 | 18.1.1.6 | Check List 4 | 1d? | 2005-03-21 | 2005-03-22 | 1342 | -50d | 0d |  |  |  |
| 1344 | 18.1.1.7 | Render Geometry | 1d? | 2005-03-22 | 2005-03-23 | 1343 | -50d | 0d |  |  |  |
| 1345 | 18.1.1.8 | Grass | 1d? | 2005-03-23 | 2005-03-24 | 1344 | -50d | 0d |  |  |  |
| 1346 | 18.1.1.9 | AI Maps | 1d? | 2005-03-24 | 2005-03-25 | 1345 | -50d | 0d |  |  |  |
| 1347 | 18.1.1.10 | Graphs | 1d? | 2005-03-25 | 2005-03-26 | 1346 | -50d | 0d |  |  |  |
| 1349 | 18.2 | **GameDesign** | 3d? | 2005-03-14 | 2005-03-17 |  | 37d |  |  |  |  |
| 1350 | 18.2.1 | **Secrets** | 3d? | 2005-03-14 | 2005-03-17 |  | 37d |  |  |  |  |
| 1351 | 18.2.1.1 | **Stage 1** | 3d? | 2005-03-14 | 2005-03-17 |  | 37d |  |  |  |  |
| 1352 | 18.2.1.1.1 | Design | 1d? | 2005-03-14 | 2005-03-15 |  | 37d | 0d |  |  |  |
| 1353 | 18.2.1.1.2 | Implementation | 1d? | 2005-03-15 | 2005-03-16 | 1352 | 37d | 0d |  |  |  |
| 1354 | 18.2.1.1.3 | Tuning | 1d? | 2005-03-16 | 2005-03-17 | 1353 | 37d |  |  |  |  |
| 1355 | 18.2.2 | **Smartterrains** | 3d? | 2005-03-14 | 2005-03-17 |  | 37d |  |  |  |  |
| 1356 | 18.2.2.1 | **Stage 1** | 3d? | 2005-03-14 | 2005-03-17 |  | 37d |  |  |  |  |
| 1357 | 18.2.2.1.1 | Design | 1d? | 2005-03-14 | 2005-03-15 |  | 37d | 0d |  |  |  |
| 1358 | 18.2.2.1.2 | Implementation | 1d? | 2005-03-15 | 2005-03-16 | 1357 | 37d | 0d |  |  |  |
| 1359 | 18.2.2.1.3 | Tuning | 1d? | 2005-03-16 | 2005-03-17 | 1358 | 37d |  |  |  |  |

| ID | WBS | Task | Duration | Start | Finish | Predecessors | Total slack | Free slack |
| --- | --- | --- | --- | --- | --- | --- | --- | --- |
| 1360 | 18.2.3 | **Monsters/Spawns** | 3d? | 2005-03-14 | 2005-03-17 |  | 37d |  |
| 1361 | 18.2.3.1 | **Stage 1** | 3d? | 2005-03-14 | 2005-03-17 |  | 37d |  |
| 1362 | 18.2.3.1.1 | Design | 1d? | 2005-03-14 | 2005-03-15 |  | 37d | 0d |
| 1363 | 18.2.3.1.2 | Implementation | 1d? | 2005-03-15 | 2005-03-16 | 1362 | 37d | 0d |
| 1364 | 18.2.3.1.3 | Tuning | 1d? | 2005-03-16 | 2005-03-17 | 1363 | 37d |  |
| 1365 | 18.2.4 | **Stalkers/Spawns** | 3d? | 2005-03-14 | 2005-03-17 |  | 37d |  |
| 1366 | 18.2.4.1 | **Stage 1** | 3d? | 2005-03-14 | 2005-03-17 |  | 37d |  |
| 1367 | 18.2.4.1.1 | Design | 1d? | 2005-03-14 | 2005-03-15 |  | 37d | 0d |
| 1368 | 18.2.4.1.2 | Implementation | 1d? | 2005-03-15 | 2005-03-16 | 1367 | 37d | 0d |
| 1369 | 18.2.4.1.3 | Tuning | 1d? | 2005-03-16 | 2005-03-17 | 1368 | 37d |  |
| 1370 | 18.2.5 | **Anomalies/Spawns** | 3d? | 2005-03-14 | 2005-03-17 |  | 37d |  |
| 1371 | 18.2.5.1 | **Stage 1** | 3d? | 2005-03-14 | 2005-03-17 |  | 37d |  |
| 1372 | 18.2.5.1.1 | Design | 1d? | 2005-03-14 | 2005-03-15 |  | 37d | 0d |
| 1373 | 18.2.5.1.2 | Implementation | 1d? | 2005-03-15 | 2005-03-16 | 1372 | 37d | 0d |
| 1374 | 18.2.5.1.3 | Tuning | 1d? | 2005-03-16 | 2005-03-17 | 1373 | 37d |  |
| 1375 | 18.2.6 | **Physicks** | 3d? | 2005-03-14 | 2005-03-17 |  | 37d |  |
| 1376 | 18.2.6.1 | **Stage 1** | 3d? | 2005-03-14 | 2005-03-17 |  | 37d |  |
| 1377 | 18.2.6.1.1 | Design | 1d? | 2005-03-14 | 2005-03-15 |  | 37d | 0d |
| 1378 | 18.2.6.1.2 | Implementation | 1d? | 2005-03-15 | 2005-03-16 | 1377 | 37d | 0d |
| 1379 | 18.2.6.1.3 | Tuning | 1d? | 2005-03-16 | 2005-03-17 | 1378 | 37d |  |
| 1381 | 18.3 | **Scripts** | 5d? | 2005-03-14 | 2005-03-19 |  | 35d |  |
| 1382 | 18.3.1 | **Script 1** | 5d? | 2005-03-14 | 2005-03-19 |  | 35d |  |
| 1383 | 18.3.1.1 | Scenario(text) | 1d? | 2005-03-14 | 2005-03-15 |  | 35d | 0d |
| 1384 | 18.3.1.2 | Постановка задач | 1d? | 2005-03-15 | 2005-03-16 | 1383 | 35d | 0d |
| 1385 | 18.3.1.3 | Implimentation | 1d? | 2005-03-16 | 2005-03-17 | 1384 | 35d | 0d |
| 1386 | 18.3.1.4 | Dilogs/VO/Icons/Objects/Animations | 1d? | 2005-03-17 | 2005-03-18 | 1385 | 35d | 0d |
| 1387 | 18.3.1.5 | Настройка | 1d? | 2005-03-18 | 2005-03-19 | 1386 | 35d |  |

| ID | WBS | Task | Duration | Start | Finish | Predecessors | Total slack | Free slack |
| --- | --- | --- | --- | --- | --- | --- | --- | --- |
| 1388 | 18.3.2 | **Script 2** | 5d? | 2005-03-14 | 2005-03-19 |  | 35d |  |
| 1389 | 18.3.2.1 | Scenario(text) | 1d? | 2005-03-14 | 2005-03-15 |  | 35d | 0d |
| 1390 | 18.3.2.2 | Постановка задач | 1d? | 2005-03-15 | 2005-03-16 | 1389 | 35d | 0d |
| 1391 | 18.3.2.3 | Implimentation | 1d? | 2005-03-16 | 2005-03-17 | 1390 | 35d | 0d |
| 1392 | 18.3.2.4 | Dilogs/VO/Icons/Objects/Animations | 1d? | 2005-03-17 | 2005-03-18 | 1391 | 35d | 0d |
| 1393 | 18.3.2.5 | Настройка | 1d? | 2005-03-18 | 2005-03-19 | 1392 | 35d |  |
| 1394 | 18.3.3 | **Script 3** | 5d? | 2005-03-14 | 2005-03-19 |  | 35d |  |
| 1395 | 18.3.3.1 | Scenario(text) | 1d? | 2005-03-14 | 2005-03-15 |  | 35d | 0d |
| 1396 | 18.3.3.2 | Постановка задач | 1d? | 2005-03-15 | 2005-03-16 | 1395 | 35d | 0d |
| 1397 | 18.3.3.3 | Implimentation | 1d? | 2005-03-16 | 2005-03-17 | 1396 | 35d | 0d |
| 1398 | 18.3.3.4 | Dilogs/VO/Icons/Objects/Animations | 1d? | 2005-03-17 | 2005-03-18 | 1397 | 35d | 0d |
| 1399 | 18.3.3.5 | Настройка | 1d? | 2005-03-18 | 2005-03-19 | 1398 | 35d |  |
| 1400 | 18.3.4 | **Script 4** | 5d? | 2005-03-14 | 2005-03-19 |  | 35d |  |
| 1401 | 18.3.4.1 | Scenario(text) | 1d? | 2005-03-14 | 2005-03-15 |  | 35d | 0d |
| 1402 | 18.3.4.2 | Постановка задач | 1d? | 2005-03-15 | 2005-03-16 | 1401 | 35d | 0d |
| 1403 | 18.3.4.3 | Implimentation | 1d? | 2005-03-16 | 2005-03-17 | 1402 | 35d | 0d |
| 1404 | 18.3.4.4 | Dilogs/VO/Icons/Objects/Animations | 1d? | 2005-03-17 | 2005-03-18 | 1403 | 35d | 0d |
| 1405 | 18.3.4.5 | Настройка | 1d? | 2005-03-18 | 2005-03-19 | 1404 | 35d |  |
| 1406 | 18.3.5 | **Script 5** | 5d? | 2005-03-14 | 2005-03-19 |  | 35d |  |
| 1407 | 18.3.5.1 | Scenario(text) | 1d? | 2005-03-14 | 2005-03-15 |  | 35d | 0d |
| 1408 | 18.3.5.2 | Постановка задач | 1d? | 2005-03-15 | 2005-03-16 | 1407 | 35d | 0d |
| 1409 | 18.3.5.3 | Implimentation | 1d? | 2005-03-16 | 2005-03-17 | 1408 | 35d | 0d |
| 1410 | 18.3.5.4 | Dilogs/VO/Icons/Objects/Animations | 1d? | 2005-03-17 | 2005-03-18 | 1409 | 35d | 0d |
| 1411 | 18.3.5.5 | Настройка | 1d? | 2005-03-18 | 2005-03-19 | 1410 | 35d |  |

| ID | WBS | Task | Duration | Start | Finish | Predecessors | Total slack | Free slack | Deadline | Resources | Work |
| --- | --- | --- | --- | --- | --- | --- | --- | --- | --- | --- | --- |
| 1416 | 19 | **15_Radar** | 11d? | 2005-01-24 | 2005-02-04 |  | 1.88d | 0d | 2005-03-01 | Лестат, Чугай | 88h |
| 1417 | 19.1 | **LevelDesign** | 11d? | 2005-01-24 | 2005-02-04 |  | 1.88d |  | 2005-02-07 |  |  |
| 1418 | 19.1.1 | **Stage 1** | 11d? | 2005-01-24 | 2005-02-04 |  | 1.88d |  |  |  |  |
| 1419 | 19.1.1.1 | List of Changes | 2d | 2005-01-24 | 2005-01-25 |  | 1.88d | 0d |  |  |  |
| 1420 | 19.1.1.2 | Changed Geometry | 1d? | 2005-01-26 | 2005-01-26 | 1419 | 1.88d | 0d |  |  |  |
| 1421 | 19.1.1.3 | Check List 1 | 1d? | 2005-01-27 | 2005-01-27 | 1420 | 1.88d | 0d |  |  |  |
| 1422 | 19.1.1.4 | Check List 2 | 1d? | 2005-01-28 | 2005-01-28 | 1421 | 1.88d | 0d |  |  |  |
| 1423 | 19.1.1.5 | Check List 3 | 1d? | 2005-01-29 | 2005-01-29 | 1422 | 1.88d | 0d |  |  |  |
| 1424 | 19.1.1.6 | Check List 4 | 1d? | 2005-01-31 | 2005-01-31 | 1423 | 1.88d | 0d |  |  |  |
| 1425 | 19.1.1.7 | Render Geometry | 1d? | 2005-02-01 | 2005-02-01 | 1424 | 1.88d | 0d |  |  |  |
| 1426 | 19.1.1.8 | Grass | 1d? | 2005-02-02 | 2005-02-02 | 1425 | 1.88d | 0d |  |  |  |
| 1427 | 19.1.1.9 | AI Maps | 1d? | 2005-02-03 | 2005-02-03 | 1426 | 1.88d | 0d |  |  |  |
| 1428 | 19.1.1.10 | Graphs | 1d? | 2005-02-04 | 2005-02-04 | 1427 | 1.88d |  |  |  |  |
| 1430 | 19.2 | **GameDesign** | 3d? | 2005-01-24 | 2005-01-26 |  | 17.88d |  |  |  |  |
| 1431 | 19.2.1 | **Secrets** | 3d? | 2005-01-24 | 2005-01-26 |  | 17.88d |  |  |  |  |
| 1432 | 19.2.1.1 | **Stage 1** | 3d? | 2005-01-24 | 2005-01-26 |  | 17.88d |  |  |  |  |
| 1433 | 19.2.1.1.1 | Design | 1d? | 2005-01-24 | 2005-01-24 |  | 17.88d | 0d |  |  |  |
| 1434 | 19.2.1.1.2 | Implementation | 1d? | 2005-01-25 | 2005-01-25 | 1433 | 17.88d | 0d |  |  |  |
| 1435 | 19.2.1.1.3 | Tuning | 1d? | 2005-01-26 | 2005-01-26 | 1434 | 17.88d |  |  |  |  |
| 1436 | 19.2.2 | **Smartterrains** | 3d? | 2005-01-24 | 2005-01-26 |  | 17.88d |  |  |  |  |
| 1437 | 19.2.2.1 | **Stage 1** | 3d? | 2005-01-24 | 2005-01-26 |  | 17.88d |  |  |  |  |
| 1438 | 19.2.2.1.1 | Design | 1d? | 2005-01-24 | 2005-01-24 |  | 17.88d | 0d |  |  |  |
| 1439 | 19.2.2.1.2 | Implementation | 1d? | 2005-01-25 | 2005-01-25 | 1438 | 17.88d | 0d |  |  |  |
| 1440 | 19.2.2.1.3 | Tuning | 1d? | 2005-01-26 | 2005-01-26 | 1439 | 17.88d |  |  |  |  |

| ID | WBS | Task | Duration | Start | Finish | Predecessors | Total slack | Free slack |
| --- | --- | --- | --- | --- | --- | --- | --- | --- |
| 1441 | 19.2.3 | **Monsters/Spawns** | 3d? | 2005-01-24 | 2005-01-26 |  | 17.88d |  |
| 1442 | 19.2.3.1 | **Stage 1** | 3d? | 2005-01-24 | 2005-01-26 |  | 17.88d |  |
| 1443 | 19.2.3.1.1 | Design | 1d? | 2005-01-24 | 2005-01-24 |  | 17.88d | 0d |
| 1444 | 19.2.3.1.2 | Implementation | 1d? | 2005-01-25 | 2005-01-25 | 1443 | 17.88d | 0d |
| 1445 | 19.2.3.1.3 | Tuning | 1d? | 2005-01-26 | 2005-01-26 | 1444 | 17.88d |  |
| 1446 | 19.2.4 | **Stalkers/Spawns** | 3d? | 2005-01-24 | 2005-01-26 |  | 17.88d |  |
| 1447 | 19.2.4.1 | **Stage 1** | 3d? | 2005-01-24 | 2005-01-26 |  | 17.88d |  |
| 1448 | 19.2.4.1.1 | Design | 1d? | 2005-01-24 | 2005-01-24 |  | 17.88d | 0d |
| 1449 | 19.2.4.1.2 | Implementation | 1d? | 2005-01-25 | 2005-01-25 | 1448 | 17.88d | 0d |
| 1450 | 19.2.4.1.3 | Tuning | 1d? | 2005-01-26 | 2005-01-26 | 1449 | 17.88d |  |
| 1451 | 19.2.5 | **Anomalies/Spawns** | 3d? | 2005-01-24 | 2005-01-26 |  | 17.88d |  |
| 1452 | 19.2.5.1 | **Stage 1** | 3d? | 2005-01-24 | 2005-01-26 |  | 17.88d |  |
| 1453 | 19.2.5.1.1 | Design | 1d? | 2005-01-24 | 2005-01-24 |  | 17.88d | 0d |
| 1454 | 19.2.5.1.2 | Implementation | 1d? | 2005-01-25 | 2005-01-25 | 1453 | 17.88d | 0d |
| 1455 | 19.2.5.1.3 | Tuning | 1d? | 2005-01-26 | 2005-01-26 | 1454 | 17.88d |  |
| 1456 | 19.2.6 | **Physicks** | 3d? | 2005-01-24 | 2005-01-26 |  | 17.88d |  |
| 1457 | 19.2.6.1 | **Stage 1** | 3d? | 2005-01-24 | 2005-01-26 |  | 17.88d |  |
| 1458 | 19.2.6.1.1 | Design | 1d? | 2005-01-24 | 2005-01-24 |  | 17.88d | 0d |
| 1459 | 19.2.6.1.2 | Implementation | 1d? | 2005-01-25 | 2005-01-25 | 1458 | 17.88d | 0d |
| 1460 | 19.2.6.1.3 | Tuning | 1d? | 2005-01-26 | 2005-01-26 | 1459 | 17.88d |  |
| 1462 | 19.3 | **Scripts** | 5d? | 2005-01-24 | 2005-01-28 |  | 15.88d |  |
| 1463 | 19.3.1 | **Script 1** | 5d? | 2005-01-24 | 2005-01-28 |  | 15.88d |  |
| 1464 | 19.3.1.1 | Scenario(text) | 1d? | 2005-01-24 | 2005-01-24 |  | 15.88d | 0d |
| 1465 | 19.3.1.2 | Постановка задач | 1d? | 2005-01-25 | 2005-01-25 | 1464 | 15.88d | 0d |
| 1466 | 19.3.1.3 | Implimentation | 1d? | 2005-01-26 | 2005-01-26 | 1465 | 15.88d | 0d |
| 1467 | 19.3.1.4 | Dilogs/VO/Icons/Objects/Animations | 1d? | 2005-01-27 | 2005-01-27 | 1466 | 15.88d | 0d |
| 1468 | 19.3.1.5 | Настройка | 1d? | 2005-01-28 | 2005-01-28 | 1467 | 15.88d |  |

| ID | WBS | Task | Duration | Start | Finish | Predecessors | Total slack | Free slack |
| --- | --- | --- | --- | --- | --- | --- | --- | --- |
| 1469 | 19.3.2 | **Script 2** | 5d? | 2005-01-24 | 2005-01-28 |  | 15.88d |  |
| 1470 | 19.3.2.1 | Scenario(text) | 1d? | 2005-01-24 | 2005-01-24 |  | 15.88d | 0d |
| 1471 | 19.3.2.2 | Постановка задач | 1d? | 2005-01-25 | 2005-01-25 | 1470 | 15.88d | 0d |
| 1472 | 19.3.2.3 | Implimentation | 1d? | 2005-01-26 | 2005-01-26 | 1471 | 15.88d | 0d |
| 1473 | 19.3.2.4 | Dilogs/VO/Icons/Objects/Animations | 1d? | 2005-01-27 | 2005-01-27 | 1472 | 15.88d | 0d |
| 1474 | 19.3.2.5 | Настройка | 1d? | 2005-01-28 | 2005-01-28 | 1473 | 15.88d |  |
| 1475 | 19.3.3 | **Script 3** | 5d? | 2005-01-24 | 2005-01-28 |  | 15.88d |  |
| 1476 | 19.3.3.1 | Scenario(text) | 1d? | 2005-01-24 | 2005-01-24 |  | 15.88d | 0d |
| 1477 | 19.3.3.2 | Постановка задач | 1d? | 2005-01-25 | 2005-01-25 | 1476 | 15.88d | 0d |
| 1478 | 19.3.3.3 | Implimentation | 1d? | 2005-01-26 | 2005-01-26 | 1477 | 15.88d | 0d |
| 1479 | 19.3.3.4 | Dilogs/VO/Icons/Objects/Animations | 1d? | 2005-01-27 | 2005-01-27 | 1478 | 15.88d | 0d |
| 1480 | 19.3.3.5 | Настройка | 1d? | 2005-01-28 | 2005-01-28 | 1479 | 15.88d |  |
| 1481 | 19.3.4 | **Script 4** | 5d? | 2005-01-24 | 2005-01-28 |  | 15.88d |  |
| 1482 | 19.3.4.1 | Scenario(text) | 1d? | 2005-01-24 | 2005-01-24 |  | 15.88d | 0d |
| 1483 | 19.3.4.2 | Постановка задач | 1d? | 2005-01-25 | 2005-01-25 | 1482 | 15.88d | 0d |
| 1484 | 19.3.4.3 | Implimentation | 1d? | 2005-01-26 | 2005-01-26 | 1483 | 15.88d | 0d |
| 1485 | 19.3.4.4 | Dilogs/VO/Icons/Objects/Animations | 1d? | 2005-01-27 | 2005-01-27 | 1484 | 15.88d | 0d |
| 1486 | 19.3.4.5 | Настройка | 1d? | 2005-01-28 | 2005-01-28 | 1485 | 15.88d |  |
| 1487 | 19.3.5 | **Script 5** | 5d? | 2005-01-24 | 2005-01-28 |  | 15.88d |  |
| 1488 | 19.3.5.1 | Scenario(text) | 1d? | 2005-01-24 | 2005-01-24 |  | 15.88d | 0d |
| 1489 | 19.3.5.2 | Постановка задач | 1d? | 2005-01-25 | 2005-01-25 | 1488 | 15.88d | 0d |
| 1490 | 19.3.5.3 | Implimentation | 1d? | 2005-01-26 | 2005-01-26 | 1489 | 15.88d | 0d |
| 1491 | 19.3.5.4 | Dilogs/VO/Icons/Objects/Animations | 1d? | 2005-01-27 | 2005-01-27 | 1490 | 15.88d | 0d |
| 1492 | 19.3.5.5 | Настройка | 1d? | 2005-01-28 | 2005-01-28 | 1491 | 15.88d |  |

| ID | WBS | Task | Duration | Start | Finish | Predecessors | Total slack | Free slack | Deadline | Resources | Work |
| --- | --- | --- | --- | --- | --- | --- | --- | --- | --- | --- | --- |
| 1495 | 20 | **12_Yantar_Underground** | 11d? | 2005-02-05 | 2005-02-17 | 1416 | 9.88d | 0d | 2005-03-15 | Лестат, Чугай | 88h |
| 1496 | 20.1 | **LevelDesign** | 11d? | 2005-02-05 | 2005-02-17 |  | 9.88d |  | 2005-03-01 |  |  |
| 1497 | 20.1.1 | **Stage 1** | 11d? | 2005-02-05 | 2005-02-17 |  | 9.88d |  |  |  |  |
| 1498 | 20.1.1.1 | List of Changes | 2d | 2005-02-05 | 2005-02-07 |  | 9.88d | 0d |  |  |  |
| 1499 | 20.1.1.2 | Changed Geometry | 1d? | 2005-02-08 | 2005-02-08 | 1498 | 9.88d | 0d |  |  |  |
| 1500 | 20.1.1.3 | Check List 1 | 1d? | 2005-02-09 | 2005-02-09 | 1499 | 9.88d | 0d |  |  |  |
| 1501 | 20.1.1.4 | Check List 2 | 1d? | 2005-02-10 | 2005-02-10 | 1500 | 9.88d | 0d |  |  |  |
| 1502 | 20.1.1.5 | Check List 3 | 1d? | 2005-02-11 | 2005-02-11 | 1501 | 9.88d | 0d |  |  |  |
| 1503 | 20.1.1.6 | Check List 4 | 1d? | 2005-02-12 | 2005-02-12 | 1502 | 9.88d | 0d |  |  |  |
| 1504 | 20.1.1.7 | Render Geometry | 1d? | 2005-02-14 | 2005-02-14 | 1503 | 9.88d | 0d |  |  |  |
| 1505 | 20.1.1.8 | Grass | 1d? | 2005-02-15 | 2005-02-15 | 1504 | 9.88d | 0d |  |  |  |
| 1506 | 20.1.1.9 | AI Maps | 1d? | 2005-02-16 | 2005-02-16 | 1505 | 9.88d | 0d |  |  |  |
| 1507 | 20.1.1.10 | Graphs | 1d? | 2005-02-17 | 2005-02-17 | 1506 | 9.88d |  |  |  |  |
| 1509 | 20.2 | **GameDesign** | 3d? | 2005-02-05 | 2005-02-08 |  | 18.88d |  |  |  |  |
| 1510 | 20.2.1 | **Secrets** | 3d? | 2005-02-05 | 2005-02-08 |  | 18.88d |  |  |  |  |
| 1511 | 20.2.1.1 | **Stage 1** | 3d? | 2005-02-05 | 2005-02-08 |  | 18.88d |  |  |  |  |
| 1512 | 20.2.1.1.1 | Design | 1d? | 2005-02-05 | 2005-02-05 |  | 18.88d | 0d |  |  |  |
| 1513 | 20.2.1.1.2 | Implementation | 1d? | 2005-02-07 | 2005-02-07 | 1512 | 18.88d | 0d |  |  |  |
| 1514 | 20.2.1.1.3 | Tuning | 1d? | 2005-02-08 | 2005-02-08 | 1513 | 18.88d |  |  |  |  |
| 1515 | 20.2.2 | **Smartterrains** | 3d? | 2005-02-05 | 2005-02-08 |  | 18.88d |  |  |  |  |
| 1516 | 20.2.2.1 | **Stage 1** | 3d? | 2005-02-05 | 2005-02-08 |  | 18.88d |  |  |  |  |
| 1517 | 20.2.2.1.1 | Design | 1d? | 2005-02-05 | 2005-02-05 |  | 18.88d | 0d |  |  |  |
| 1518 | 20.2.2.1.2 | Implementation | 1d? | 2005-02-07 | 2005-02-07 | 1517 | 18.88d | 0d |  |  |  |
| 1519 | 20.2.2.1.3 | Tuning | 1d? | 2005-02-08 | 2005-02-08 | 1518 | 18.88d |  |  |  |  |

| ID | WBS | Task | Duration | Start | Finish | Predecessors | Total slack | Free slack |
| --- | --- | --- | --- | --- | --- | --- | --- | --- |
| 1520 | 20.2.3 | **Monsters/Spawns** | 3d? | 2005-02-05 | 2005-02-08 |  | 18.88d |  |
| 1521 | 20.2.3.1 | **Stage 1** | 3d? | 2005-02-05 | 2005-02-08 |  | 18.88d |  |
| 1522 | 20.2.3.1.1 | Design | 1d? | 2005-02-05 | 2005-02-05 |  | 18.88d | 0d |
| 1523 | 20.2.3.1.2 | Implementation | 1d? | 2005-02-07 | 2005-02-07 | 1522 | 18.88d | 0d |
| 1524 | 20.2.3.1.3 | Tuning | 1d? | 2005-02-08 | 2005-02-08 | 1523 | 18.88d |  |
| 1525 | 20.2.4 | **Stalkers/Spawns** | 3d? | 2005-02-05 | 2005-02-08 |  | 18.88d |  |
| 1526 | 20.2.4.1 | **Stage 1** | 3d? | 2005-02-05 | 2005-02-08 |  | 18.88d |  |
| 1527 | 20.2.4.1.1 | Design | 1d? | 2005-02-05 | 2005-02-05 |  | 18.88d | 0d |
| 1528 | 20.2.4.1.2 | Implementation | 1d? | 2005-02-07 | 2005-02-07 | 1527 | 18.88d | 0d |
| 1529 | 20.2.4.1.3 | Tuning | 1d? | 2005-02-08 | 2005-02-08 | 1528 | 18.88d |  |
| 1530 | 20.2.5 | **Anomalies/Spawns** | 3d? | 2005-02-05 | 2005-02-08 |  | 18.88d |  |
| 1531 | 20.2.5.1 | **Stage 1** | 3d? | 2005-02-05 | 2005-02-08 |  | 18.88d |  |
| 1532 | 20.2.5.1.1 | Design | 1d? | 2005-02-05 | 2005-02-05 |  | 18.88d | 0d |
| 1533 | 20.2.5.1.2 | Implementation | 1d? | 2005-02-07 | 2005-02-07 | 1532 | 18.88d | 0d |
| 1534 | 20.2.5.1.3 | Tuning | 1d? | 2005-02-08 | 2005-02-08 | 1533 | 18.88d |  |
| 1535 | 20.2.6 | **Physicks** | 3d? | 2005-02-05 | 2005-02-08 |  | 18.88d |  |
| 1536 | 20.2.6.1 | **Stage 1** | 3d? | 2005-02-05 | 2005-02-08 |  | 18.88d |  |
| 1537 | 20.2.6.1.1 | Design | 1d? | 2005-02-05 | 2005-02-05 |  | 18.88d | 0d |
| 1538 | 20.2.6.1.2 | Implementation | 1d? | 2005-02-07 | 2005-02-07 | 1537 | 18.88d | 0d |
| 1539 | 20.2.6.1.3 | Tuning | 1d? | 2005-02-08 | 2005-02-08 | 1538 | 18.88d |  |
| 1541 | 20.3 | **Scripts** | 5d? | 2005-02-05 | 2005-02-10 |  | 16.88d |  |
| 1542 | 20.3.1 | **Script 1** | 5d? | 2005-02-05 | 2005-02-10 |  | 16.88d |  |
| 1543 | 20.3.1.1 | Scenario(text) | 1d? | 2005-02-05 | 2005-02-05 |  | 16.88d | 0d |
| 1544 | 20.3.1.2 | Постановка задач | 1d? | 2005-02-07 | 2005-02-07 | 1543 | 16.88d | 0d |
| 1545 | 20.3.1.3 | Implimentation | 1d? | 2005-02-08 | 2005-02-08 | 1544 | 16.88d | 0d |
| 1546 | 20.3.1.4 | Dilogs/VO/Icons/Objects/Animations | 1d? | 2005-02-09 | 2005-02-09 | 1545 | 16.88d | 0d |
| 1547 | 20.3.1.5 | Настройка | 1d? | 2005-02-10 | 2005-02-10 | 1546 | 16.88d |  |

| ID | WBS | Task | Duration | Start | Finish | Predecessors | Total slack | Free slack |
| --- | --- | --- | --- | --- | --- | --- | --- | --- |
| 1548 | 20.3.2 | **Script 2** | 5d? | 2005-02-05 | 2005-02-10 |  | 16.88d |  |
| 1549 | 20.3.2.1 | Scenario(text) | 1d? | 2005-02-05 | 2005-02-05 |  | 16.88d | 0d |
| 1550 | 20.3.2.2 | Постановка задач | 1d? | 2005-02-07 | 2005-02-07 | 1549 | 16.88d | 0d |
| 1551 | 20.3.2.3 | Implimentation | 1d? | 2005-02-08 | 2005-02-08 | 1550 | 16.88d | 0d |
| 1552 | 20.3.2.4 | Dilogs/VO/Icons/Objects/Animations | 1d? | 2005-02-09 | 2005-02-09 | 1551 | 16.88d | 0d |
| 1553 | 20.3.2.5 | Настройка | 1d? | 2005-02-10 | 2005-02-10 | 1552 | 16.88d |  |
| 1554 | 20.3.3 | **Script 3** | 5d? | 2005-02-05 | 2005-02-10 |  | 16.88d |  |
| 1555 | 20.3.3.1 | Scenario(text) | 1d? | 2005-02-05 | 2005-02-05 |  | 16.88d | 0d |
| 1556 | 20.3.3.2 | Постановка задач | 1d? | 2005-02-07 | 2005-02-07 | 1555 | 16.88d | 0d |
| 1557 | 20.3.3.3 | Implimentation | 1d? | 2005-02-08 | 2005-02-08 | 1556 | 16.88d | 0d |
| 1558 | 20.3.3.4 | Dilogs/VO/Icons/Objects/Animations | 1d? | 2005-02-09 | 2005-02-09 | 1557 | 16.88d | 0d |
| 1559 | 20.3.3.5 | Настройка | 1d? | 2005-02-10 | 2005-02-10 | 1558 | 16.88d |  |
| 1560 | 20.3.4 | **Script 4** | 5d? | 2005-02-05 | 2005-02-10 |  | 16.88d |  |
| 1561 | 20.3.4.1 | Scenario(text) | 1d? | 2005-02-05 | 2005-02-05 |  | 16.88d | 0d |
| 1562 | 20.3.4.2 | Постановка задач | 1d? | 2005-02-07 | 2005-02-07 | 1561 | 16.88d | 0d |
| 1563 | 20.3.4.3 | Implimentation | 1d? | 2005-02-08 | 2005-02-08 | 1562 | 16.88d | 0d |
| 1564 | 20.3.4.4 | Dilogs/VO/Icons/Objects/Animations | 1d? | 2005-02-09 | 2005-02-09 | 1563 | 16.88d | 0d |
| 1565 | 20.3.4.5 | Настройка | 1d? | 2005-02-10 | 2005-02-10 | 1564 | 16.88d |  |
| 1566 | 20.3.5 | **Script 5** | 5d? | 2005-02-05 | 2005-02-10 |  | 16.88d |  |
| 1567 | 20.3.5.1 | Scenario(text) | 1d? | 2005-02-05 | 2005-02-05 |  | 16.88d | 0d |
| 1568 | 20.3.5.2 | Постановка задач | 1d? | 2005-02-07 | 2005-02-07 | 1567 | 16.88d | 0d |
| 1569 | 20.3.5.3 | Implimentation | 1d? | 2005-02-08 | 2005-02-08 | 1568 | 16.88d | 0d |
| 1570 | 20.3.5.4 | Dilogs/VO/Icons/Objects/Animations | 1d? | 2005-02-09 | 2005-02-09 | 1569 | 16.88d | 0d |
| 1571 | 20.3.5.5 | Настройка | 1d? | 2005-02-10 | 2005-02-10 | 1570 | 16.88d |  |

| ID | WBS | Task | Duration | Start | Finish | Predecessors | Total slack | Free slack | Deadline | Resources | Work |
| --- | --- | --- | --- | --- | --- | --- | --- | --- | --- | --- | --- |
| 1574 | 21 | **14_Swamp** | 11d? | 2005-02-18 | 2005-03-02 | 1495 | 10.88d |  | 2005-04-15 | Лестат, Чугай | 88h |
| 1575 | 21.1 | **LevelDesign** | 11d? | 2005-02-18 | 2005-03-02 |  | 10.88d |  | 2005-03-15 |  |  |
| 1576 | 21.1.1 | **Stage 1** | 11d? | 2005-02-18 | 2005-03-02 |  | 10.88d |  |  |  |  |
| 1577 | 21.1.1.1 | List of Changes | 2d | 2005-02-18 | 2005-02-19 |  | 10.88d | 0d |  |  |  |
| 1578 | 21.1.1.2 | Changed Geometry | 1d? | 2005-02-21 | 2005-02-21 | 1577 | 10.88d | 0d |  |  |  |
| 1579 | 21.1.1.3 | Check List 1 | 1d? | 2005-02-22 | 2005-02-22 | 1578 | 10.88d | 0d |  |  |  |
| 1580 | 21.1.1.4 | Check List 2 | 1d? | 2005-02-23 | 2005-02-23 | 1579 | 10.88d | 0d |  |  |  |
| 1581 | 21.1.1.5 | Check List 3 | 1d? | 2005-02-24 | 2005-02-24 | 1580 | 10.88d | 0d |  |  |  |
| 1582 | 21.1.1.6 | Check List 4 | 1d? | 2005-02-25 | 2005-02-25 | 1581 | 10.88d | 0d |  |  |  |
| 1583 | 21.1.1.7 | Render Geometry | 1d? | 2005-02-26 | 2005-02-26 | 1582 | 10.88d | 0d |  |  |  |
| 1584 | 21.1.1.8 | Grass | 1d? | 2005-02-28 | 2005-02-28 | 1583 | 10.88d | 0d |  |  |  |
| 1585 | 21.1.1.9 | AI Maps | 1d? | 2005-03-01 | 2005-03-01 | 1584 | 10.88d | 0d |  |  |  |
| 1586 | 21.1.1.10 | Graphs | 1d? | 2005-03-02 | 2005-03-02 | 1585 | 10.88d |  |  |  |  |
| 1588 | 21.2 | **GameDesign** | 3d? | 2005-02-18 | 2005-02-21 |  | 45.88d |  |  |  |  |
| 1589 | 21.2.1 | **Secrets** | 3d? | 2005-02-18 | 2005-02-21 |  | 45.88d |  |  |  |  |
| 1590 | 21.2.1.1 | **Stage 1** | 3d? | 2005-02-18 | 2005-02-21 |  | 45.88d |  |  |  |  |
| 1591 | 21.2.1.1.1 | Design | 1d? | 2005-02-18 | 2005-02-18 |  | 45.88d | 0d |  |  |  |
| 1592 | 21.2.1.1.2 | Implementation | 1d? | 2005-02-19 | 2005-02-19 | 1591 | 45.88d | 0d |  |  |  |
| 1593 | 21.2.1.1.3 | Tuning | 1d? | 2005-02-21 | 2005-02-21 | 1592 | 45.88d |  |  |  |  |
| 1594 | 21.2.2 | **Smartterrains** | 3d? | 2005-02-18 | 2005-02-21 |  | 45.88d |  |  |  |  |
| 1595 | 21.2.2.1 | **Stage 1** | 3d? | 2005-02-18 | 2005-02-21 |  | 45.88d |  |  |  |  |
| 1596 | 21.2.2.1.1 | Design | 1d? | 2005-02-18 | 2005-02-18 |  | 45.88d | 0d |  |  |  |
| 1597 | 21.2.2.1.2 | Implementation | 1d? | 2005-02-19 | 2005-02-19 | 1596 | 45.88d | 0d |  |  |  |
| 1598 | 21.2.2.1.3 | Tuning | 1d? | 2005-02-21 | 2005-02-21 | 1597 | 45.88d |  |  |  |  |

| ID | WBS | Task | Duration | Start | Finish | Predecessors | Total slack | Free slack |
| --- | --- | --- | --- | --- | --- | --- | --- | --- |
| 1599 | 21.2.3 | **Monsters/Spawns** | 3d? | 2005-02-18 | 2005-02-21 |  | 45.88d |  |
| 1600 | 21.2.3.1 | **Stage 1** | 3d? | 2005-02-18 | 2005-02-21 |  | 45.88d |  |
| 1601 | 21.2.3.1.1 | Design | 1d? | 2005-02-18 | 2005-02-18 |  | 45.88d | 0d |
| 1602 | 21.2.3.1.2 | Implementation | 1d? | 2005-02-19 | 2005-02-19 | 1601 | 45.88d | 0d |
| 1603 | 21.2.3.1.3 | Tuning | 1d? | 2005-02-21 | 2005-02-21 | 1602 | 45.88d |  |
| 1604 | 21.2.4 | **Stalkers/Spawns** | 3d? | 2005-02-18 | 2005-02-21 |  | 45.88d |  |
| 1605 | 21.2.4.1 | **Stage 1** | 3d? | 2005-02-18 | 2005-02-21 |  | 45.88d |  |
| 1606 | 21.2.4.1.1 | Design | 1d? | 2005-02-18 | 2005-02-18 |  | 45.88d | 0d |
| 1607 | 21.2.4.1.2 | Implementation | 1d? | 2005-02-19 | 2005-02-19 | 1606 | 45.88d | 0d |
| 1608 | 21.2.4.1.3 | Tuning | 1d? | 2005-02-21 | 2005-02-21 | 1607 | 45.88d |  |
| 1609 | 21.2.5 | **Anomalies/Spawns** | 3d? | 2005-02-18 | 2005-02-21 |  | 45.88d |  |
| 1610 | 21.2.5.1 | **Stage 1** | 3d? | 2005-02-18 | 2005-02-21 |  | 45.88d |  |
| 1611 | 21.2.5.1.1 | Design | 1d? | 2005-02-18 | 2005-02-18 |  | 45.88d | 0d |
| 1612 | 21.2.5.1.2 | Implementation | 1d? | 2005-02-19 | 2005-02-19 | 1611 | 45.88d | 0d |
| 1613 | 21.2.5.1.3 | Tuning | 1d? | 2005-02-21 | 2005-02-21 | 1612 | 45.88d |  |
| 1614 | 21.2.6 | **Physicks** | 3d? | 2005-02-18 | 2005-02-21 |  | 45.88d |  |
| 1615 | 21.2.6.1 | **Stage 1** | 3d? | 2005-02-18 | 2005-02-21 |  | 45.88d |  |
| 1616 | 21.2.6.1.1 | Design | 1d? | 2005-02-18 | 2005-02-18 |  | 45.88d | 0d |
| 1617 | 21.2.6.1.2 | Implementation | 1d? | 2005-02-19 | 2005-02-19 | 1616 | 45.88d | 0d |
| 1618 | 21.2.6.1.3 | Tuning | 1d? | 2005-02-21 | 2005-02-21 | 1617 | 45.88d |  |
| 1620 | 21.3 | **Scripts** | 5d? | 2005-02-18 | 2005-02-23 |  | 43.88d |  |
| 1621 | 21.3.1 | **Script 1** | 5d? | 2005-02-18 | 2005-02-23 |  | 43.88d |  |
| 1622 | 21.3.1.1 | Scenario(text) | 1d? | 2005-02-18 | 2005-02-18 |  | 43.88d | 0d |
| 1623 | 21.3.1.2 | Постановка задач | 1d? | 2005-02-19 | 2005-02-19 | 1622 | 43.88d | 0d |
| 1624 | 21.3.1.3 | Implimentation | 1d? | 2005-02-21 | 2005-02-21 | 1623 | 43.88d | 0d |
| 1625 | 21.3.1.4 | Dilogs/VO/Icons/Objects/Animations | 1d? | 2005-02-22 | 2005-02-22 | 1624 | 43.88d | 0d |
| 1626 | 21.3.1.5 | Настройка | 1d? | 2005-02-23 | 2005-02-23 | 1625 | 43.88d |  |

| ID | WBS | Task | Duration | Start | Finish | Predecessors | Total slack | Free slack |
| --- | --- | --- | --- | --- | --- | --- | --- | --- |
| 1627 | 21.3.2 | **Script 2** | 5d? | 2005-02-18 | 2005-02-23 |  | 43.88d |  |
| 1628 | 21.3.2.1 | Scenario(text) | 1d? | 2005-02-18 | 2005-02-18 |  | 43.88d | 0d |
| 1629 | 21.3.2.2 | Постановка задач | 1d? | 2005-02-19 | 2005-02-19 | 1628 | 43.88d | 0d |
| 1630 | 21.3.2.3 | Implimentation | 1d? | 2005-02-21 | 2005-02-21 | 1629 | 43.88d | 0d |
| 1631 | 21.3.2.4 | Dilogs/VO/Icons/Objects/Animations | 1d? | 2005-02-22 | 2005-02-22 | 1630 | 43.88d | 0d |
| 1632 | 21.3.2.5 | Настройка | 1d? | 2005-02-23 | 2005-02-23 | 1631 | 43.88d |  |
| 1633 | 21.3.3 | **Script 3** | 5d? | 2005-02-18 | 2005-02-23 |  | 43.88d |  |
| 1634 | 21.3.3.1 | Scenario(text) | 1d? | 2005-02-18 | 2005-02-18 |  | 43.88d | 0d |
| 1635 | 21.3.3.2 | Постановка задач | 1d? | 2005-02-19 | 2005-02-19 | 1634 | 43.88d | 0d |
| 1636 | 21.3.3.3 | Implimentation | 1d? | 2005-02-21 | 2005-02-21 | 1635 | 43.88d | 0d |
| 1637 | 21.3.3.4 | Dilogs/VO/Icons/Objects/Animations | 1d? | 2005-02-22 | 2005-02-22 | 1636 | 43.88d | 0d |
| 1638 | 21.3.3.5 | Настройка | 1d? | 2005-02-23 | 2005-02-23 | 1637 | 43.88d |  |
| 1639 | 21.3.4 | **Script 4** | 5d? | 2005-02-18 | 2005-02-23 |  | 43.88d |  |
| 1640 | 21.3.4.1 | Scenario(text) | 1d? | 2005-02-18 | 2005-02-18 |  | 43.88d | 0d |
| 1641 | 21.3.4.2 | Постановка задач | 1d? | 2005-02-19 | 2005-02-19 | 1640 | 43.88d | 0d |
| 1642 | 21.3.4.3 | Implimentation | 1d? | 2005-02-21 | 2005-02-21 | 1641 | 43.88d | 0d |
| 1643 | 21.3.4.4 | Dilogs/VO/Icons/Objects/Animations | 1d? | 2005-02-22 | 2005-02-22 | 1642 | 43.88d | 0d |
| 1644 | 21.3.4.5 | Настройка | 1d? | 2005-02-23 | 2005-02-23 | 1643 | 43.88d |  |
| 1645 | 21.3.5 | **Script 5** | 5d? | 2005-02-18 | 2005-02-23 |  | 43.88d |  |
| 1646 | 21.3.5.1 | Scenario(text) | 1d? | 2005-02-18 | 2005-02-18 |  | 43.88d | 0d |
| 1647 | 21.3.5.2 | Постановка задач | 1d? | 2005-02-19 | 2005-02-19 | 1646 | 43.88d | 0d |
| 1648 | 21.3.5.3 | Implimentation | 1d? | 2005-02-21 | 2005-02-21 | 1647 | 43.88d | 0d |
| 1649 | 21.3.5.4 | Dilogs/VO/Icons/Objects/Animations | 1d? | 2005-02-22 | 2005-02-22 | 1648 | 43.88d | 0d |
| 1650 | 21.3.5.5 | Настройка | 1d? | 2005-02-23 | 2005-02-23 | 1649 | 43.88d |  |

| ID | WBS | Task | Duration | Start | Finish | Predecessors | Total slack | Free slack |
| --- | --- | --- | --- | --- | --- | --- | --- | --- |
| 1665 | 22 | **21_Generators** | 11d? | 2005-01-24 | 2005-02-04 |  | 44d |  |
| 1666 | 22.1 | **LevelDesign** | 11d? | 2005-01-24 | 2005-02-04 |  | 44d |  |
| 1667 | 22.1.1 | **Stage 1** | 11d? | 2005-01-24 | 2005-02-04 |  | 44d |  |
| 1668 | 22.1.1.1 | List of Changes | 2d | 2005-01-24 | 2005-01-25 |  | 44d | 0d |
| 1669 | 22.1.1.2 | Changed Geometry | 1d? | 2005-01-26 | 2005-01-26 | 1668 | 44d | 0d |
| 1670 | 22.1.1.3 | Check List 1 | 1d? | 2005-01-27 | 2005-01-27 | 1669 | 44d | 0d |
| 1671 | 22.1.1.4 | Check List 2 | 1d? | 2005-01-28 | 2005-01-28 | 1670 | 44d | 0d |
| 1672 | 22.1.1.5 | Check List 3 | 1d? | 2005-01-29 | 2005-01-29 | 1671 | 44d | 0d |
| 1673 | 22.1.1.6 | Check List 4 | 1d? | 2005-01-31 | 2005-01-31 | 1672 | 44d | 0d |
| 1674 | 22.1.1.7 | Render Geometry | 1d? | 2005-02-01 | 2005-02-01 | 1673 | 44d | 0d |
| 1675 | 22.1.1.8 | Grass | 1d? | 2005-02-02 | 2005-02-02 | 1674 | 44d | 0d |
| 1676 | 22.1.1.9 | AI Maps | 1d? | 2005-02-03 | 2005-02-03 | 1675 | 44d | 0d |
| 1677 | 22.1.1.10 | Graphs | 1d? | 2005-02-04 | 2005-02-04 | 1676 | 44d |  |
| 1679 | 22.2 | **GameDesign** | 3d? | 2005-01-24 | 2005-01-26 |  | 52d |  |
| 1680 | 22.2.1 | **Secrets** | 3d? | 2005-01-24 | 2005-01-26 |  | 52d |  |
| 1681 | 22.2.1.1 | **Stage 1** | 3d? | 2005-01-24 | 2005-01-26 |  | 52d |  |
| 1682 | 22.2.1.1.1 | Design | 1d? | 2005-01-24 | 2005-01-24 |  | 52d | 0d |
| 1683 | 22.2.1.1.2 | Implementation | 1d? | 2005-01-25 | 2005-01-25 | 1682 | 52d | 0d |
| 1684 | 22.2.1.1.3 | Tuning | 1d? | 2005-01-26 | 2005-01-26 | 1683 | 52d |  |
| 1685 | 22.2.2 | **Smartterrains** | 3d? | 2005-01-24 | 2005-01-26 |  | 52d |  |
| 1686 | 22.2.2.1 | **Stage 1** | 3d? | 2005-01-24 | 2005-01-26 |  | 52d |  |
| 1687 | 22.2.2.1.1 | Design | 1d? | 2005-01-24 | 2005-01-24 |  | 52d | 0d |
| 1688 | 22.2.2.1.2 | Implementation | 1d? | 2005-01-25 | 2005-01-25 | 1687 | 52d | 0d |
| 1689 | 22.2.2.1.3 | Tuning | 1d? | 2005-01-26 | 2005-01-26 | 1688 | 52d |  |

| ID | WBS | Task | Duration | Start | Finish | Predecessors | Total slack | Free slack |
| --- | --- | --- | --- | --- | --- | --- | --- | --- |
| 1690 | 22.2.3 | **Monsters/Spawns** | 3d? | 2005-01-24 | 2005-01-26 |  | 52d |  |
| 1691 | 22.2.3.1 | **Stage 1** | 3d? | 2005-01-24 | 2005-01-26 |  | 52d |  |
| 1692 | 22.2.3.1.1 | Design | 1d? | 2005-01-24 | 2005-01-24 |  | 52d | 0d |
| 1693 | 22.2.3.1.2 | Implementation | 1d? | 2005-01-25 | 2005-01-25 | 1692 | 52d | 0d |
| 1694 | 22.2.3.1.3 | Tuning | 1d? | 2005-01-26 | 2005-01-26 | 1693 | 52d |  |
| 1695 | 22.2.4 | **Stalkers/Spawns** | 3d? | 2005-01-24 | 2005-01-26 |  | 52d |  |
| 1696 | 22.2.4.1 | **Stage 1** | 3d? | 2005-01-24 | 2005-01-26 |  | 52d |  |
| 1697 | 22.2.4.1.1 | Design | 1d? | 2005-01-24 | 2005-01-24 |  | 52d | 0d |
| 1698 | 22.2.4.1.2 | Implementation | 1d? | 2005-01-25 | 2005-01-25 | 1697 | 52d | 0d |
| 1699 | 22.2.4.1.3 | Tuning | 1d? | 2005-01-26 | 2005-01-26 | 1698 | 52d |  |
| 1700 | 22.2.5 | **Anomalies/Spawns** | 3d? | 2005-01-24 | 2005-01-26 |  | 52d |  |
| 1701 | 22.2.5.1 | **Stage 1** | 3d? | 2005-01-24 | 2005-01-26 |  | 52d |  |
| 1702 | 22.2.5.1.1 | Design | 1d? | 2005-01-24 | 2005-01-24 |  | 52d | 0d |
| 1703 | 22.2.5.1.2 | Implementation | 1d? | 2005-01-25 | 2005-01-25 | 1702 | 52d | 0d |
| 1704 | 22.2.5.1.3 | Tuning | 1d? | 2005-01-26 | 2005-01-26 | 1703 | 52d |  |
| 1705 | 22.2.6 | **Physicks** | 3d? | 2005-01-24 | 2005-01-26 |  | 52d |  |
| 1706 | 22.2.6.1 | **Stage 1** | 3d? | 2005-01-24 | 2005-01-26 |  | 52d |  |
| 1707 | 22.2.6.1.1 | Design | 1d? | 2005-01-24 | 2005-01-24 |  | 52d | 0d |
| 1708 | 22.2.6.1.2 | Implementation | 1d? | 2005-01-25 | 2005-01-25 | 1707 | 52d | 0d |
| 1709 | 22.2.6.1.3 | Tuning | 1d? | 2005-01-26 | 2005-01-26 | 1708 | 52d |  |
| 1711 | 22.3 | **Scripts** | 5d? | 2005-01-24 | 2005-01-28 |  | 50d |  |
| 1712 | 22.3.1 | **Script 1** | 5d? | 2005-01-24 | 2005-01-28 |  | 50d |  |
| 1713 | 22.3.1.1 | Scenario(text) | 1d? | 2005-01-24 | 2005-01-24 |  | 50d | 0d |
| 1714 | 22.3.1.2 | Постановка задач | 1d? | 2005-01-25 | 2005-01-25 | 1713 | 50d | 0d |
| 1715 | 22.3.1.3 | Implimentation | 1d? | 2005-01-26 | 2005-01-26 | 1714 | 50d | 0d |
| 1716 | 22.3.1.4 | Dilogs/VO/Icons/Objects/Animations | 1d? | 2005-01-27 | 2005-01-27 | 1715 | 50d | 0d |
| 1717 | 22.3.1.5 | Настройка | 1d? | 2005-01-28 | 2005-01-28 | 1716 | 50d |  |

| ID | WBS | Task | Duration | Start | Finish | Predecessors | Total slack | Free slack |
| --- | --- | --- | --- | --- | --- | --- | --- | --- |
| 1718 | 22.3.2 | **Script 2** | 5d? | 2005-01-24 | 2005-01-28 |  | 50d |  |
| 1719 | 22.3.2.1 | Scenario(text) | 1d? | 2005-01-24 | 2005-01-24 |  | 50d | 0d |
| 1720 | 22.3.2.2 | Постановка задач | 1d? | 2005-01-25 | 2005-01-25 | 1719 | 50d | 0d |
| 1721 | 22.3.2.3 | Implimentation | 1d? | 2005-01-26 | 2005-01-26 | 1720 | 50d | 0d |
| 1722 | 22.3.2.4 | Dilogs/VO/Icons/Objects/Animations | 1d? | 2005-01-27 | 2005-01-27 | 1721 | 50d | 0d |
| 1723 | 22.3.2.5 | Настройка | 1d? | 2005-01-28 | 2005-01-28 | 1722 | 50d |  |
| 1724 | 22.3.3 | **Script 3** | 5d? | 2005-01-24 | 2005-01-28 |  | 50d |  |
| 1725 | 22.3.3.1 | Scenario(text) | 1d? | 2005-01-24 | 2005-01-24 |  | 50d | 0d |
| 1726 | 22.3.3.2 | Постановка задач | 1d? | 2005-01-25 | 2005-01-25 | 1725 | 50d | 0d |
| 1727 | 22.3.3.3 | Implimentation | 1d? | 2005-01-26 | 2005-01-26 | 1726 | 50d | 0d |
| 1728 | 22.3.3.4 | Dilogs/VO/Icons/Objects/Animations | 1d? | 2005-01-27 | 2005-01-27 | 1727 | 50d | 0d |
| 1729 | 22.3.3.5 | Настройка | 1d? | 2005-01-28 | 2005-01-28 | 1728 | 50d |  |
| 1730 | 22.3.4 | **Script 4** | 5d? | 2005-01-24 | 2005-01-28 |  | 50d |  |
| 1731 | 22.3.4.1 | Scenario(text) | 1d? | 2005-01-24 | 2005-01-24 |  | 50d | 0d |
| 1732 | 22.3.4.2 | Постановка задач | 1d? | 2005-01-25 | 2005-01-25 | 1731 | 50d | 0d |
| 1733 | 22.3.4.3 | Implimentation | 1d? | 2005-01-26 | 2005-01-26 | 1732 | 50d | 0d |
| 1734 | 22.3.4.4 | Dilogs/VO/Icons/Objects/Animations | 1d? | 2005-01-27 | 2005-01-27 | 1733 | 50d | 0d |
| 1735 | 22.3.4.5 | Настройка | 1d? | 2005-01-28 | 2005-01-28 | 1734 | 50d |  |
| 1736 | 22.3.5 | **Script 5** | 5d? | 2005-01-24 | 2005-01-28 |  | 50d |  |
| 1737 | 22.3.5.1 | Scenario(text) | 1d? | 2005-01-24 | 2005-01-24 |  | 50d | 0d |
| 1738 | 22.3.5.2 | Постановка задач | 1d? | 2005-01-25 | 2005-01-25 | 1737 | 50d | 0d |
| 1739 | 22.3.5.3 | Implimentation | 1d? | 2005-01-26 | 2005-01-26 | 1738 | 50d | 0d |
| 1740 | 22.3.5.4 | Dilogs/VO/Icons/Objects/Animations | 1d? | 2005-01-27 | 2005-01-27 | 1739 | 50d | 0d |
| 1741 | 22.3.5.5 | Настройка | 1d? | 2005-01-28 | 2005-01-28 | 1740 | 50d |  |
